# HL7_SDK_plan_3_23

How a schedule from MS Project changed from version to version. A marks actual dates.

## Version 1 (saved 2007-12-11)

Note of the change: Initial Checkin

| ID | WBS | Task | Duration | Start | Finish | Predecessors | Complete | Total float | Constraint |
| --- | --- | --- | --- | --- | --- | --- | --- | --- | --- |
| 1 | 1 | **Perform Project Management Activities** | 17d | 2007-01-16 A | 2007-02-07 |  | 31% | 482d |  |
| 2 |  | Draft Scope Document | 5d | 2007-01-16 | 2007-01-22 |  |  | 212d | start no earlier than 2007-01-16 |
| 3 |  | Deliverable: Scope Document | 1d | 2007-01-23 | 2007-01-23 | 2 |  | 212d | start no earlier than 2005-06-14 |
| 4 |  | Draft Initial Project Plan | 5d | 2007-01-24 | 2007-01-30 | 3 |  | 214d |  |
| 5 |  | Deliverable: Project Plan | 1d | 2007-01-31 | 2007-01-31 | 4 |  | 214d |  |
| 6 |  | Review Scope Document | 1d | 2007-01-24 | 2007-01-24 | 3 |  | 212d |  |
| 7 |  | Draft System Requirment Document | 5d | 2007-01-25 | 2007-01-31 | 6 |  | 212d |  |
| 8 |  | Deliverable: System Requirment Document | 1d | 2007-02-01 | 2007-02-01 | 7 |  | 212d |  |
| 9 |  | Revise and submit project plan to Gforge | 1d | 2007-02-02 | 2007-02-02 | 8 |  | 212d |  |
| 10 | 1.9 | **caBIG Annual Meeting** | 17d | 2007-01-16 A | 2007-02-07 A |  | 100% |  |  |
| 11 |  | Poster | 2d | 2007-01-16 A | 2007-01-17 A |  | 100% |  | start no earlier than 2007-01-16 |
| 12 |  | Tech Demo | 2d | 2007-01-18 A | 2007-01-19 A | 11 | 100% |  | start no earlier than 2007-01-16 |
| 13 |  | Hack-a-Thon | 2d | 2007-01-22 A | 2007-01-23 A | 12 | 100% |  | start no earlier than 2007-01-16 |
| 14 |  | caBIG annual meeting | 3d | 2007-02-05 A | 2007-02-07 A | 13 | 100% |  | start no earlier than 2007-01-16 |
| 15 | 2 | **caAdapter V3.2.0.1 tasks** | 59d | 2007-02-08 A | 2007-05-01 A |  | 100% |  |  |
| 16 | 2.1 | **Inception** | 19d | 2007-02-08 A | 2007-03-06 A |  | 100% |  |  |
| 17 |  | Requirement gathering and analysis | 10d | 2007-02-08 A | 2007-02-21 A |  | 100% |  | start no earlier than 2007-02-08 |
| 18 |  | Draft use cases for model mapping service enhancement (Task 4) | 8d | 2007-02-22 A | 2007-03-05 A | 17 | 100% |  | start no earlier than 2007-02-22 |
| 19 |  | Deliverable: Use Cases | 1d | 2007-03-06 A | 2007-03-06 A | 18 | 100% |  | finish no earlier than 2006-07-04 |
| 20 | 2.2 | **Elaboration** | 17d | 2007-03-07 A | 2007-03-29 A |  | 100% |  |  |
| 21 |  | Draft design document for model mapping service enhancement (Task 4) | 5d | 2007-03-07 A | 2007-03-13 A | 16 | 100% |  | start no earlier than 2007-02-27 |
| 22 |  | Deliverable: Design Doc | 1d | 2007-03-14 A | 2007-03-14 A | 21 | 100% |  |  |
| 23 |  | Draft Test Plan and Test Cases | 10d | 2007-03-15 A | 2007-03-28 A | 22 | 100% |  |  |
| 24 |  | Deliverable: System Test Plan | 1d | 2007-03-29 A | 2007-03-29 A | 23 | 100% |  |  |
| 25 | 2.3 | **model mapping service enhancement (Task 4) development** | 16d | 2007-03-15 A | 2007-04-05 A |  | 100% |  |  |
| 26 |  | Retrieval of tag values from .xmi files (task 4(d)) | 10d | 2007-03-15 A | 2007-03-28 A | 22 | 100% |  |  |
| 27 |  | UI enhancement for MMS (task 4(d)) | 3d | 2007-03-29 A | 2007-04-02 A | 26 | 100% |  |  |
| 28 |  | System integration testing (task 4(d)) | 3d | 2007-04-03 A | 2007-04-05 A | 27 | 100% |  |  |
| 29 | 2.4 | **Transition** | 6d | 2007-04-06 A | 2007-04-13 A |  | 100% |  |  |
| 30 |  | QA System testing - Model Mapping Service | 3d | 2007-04-06 A | 2007-04-10 A | 25 | 100% |  |  |
| 31 |  | Staging System testing | 3d | 2007-04-11 A | 2007-04-13 A | 30 | 100% |  |  |
| 32 | 2.5 | **Documentation** | 12d | 2007-04-16 A | 2007-05-01 A |  | 100% |  |  |
| 33 |  | Update Requirements | 1d | 2007-04-16 A | 2007-04-16 A | 31 | 100% |  |  |
| 34 |  | Deliverable: Requirements | 1d | 2007-04-17 A | 2007-04-17 A | 33 | 100% |  | start no earlier than 2005-04-08 |
| 35 |  | Update Users Guide | 2d | 2007-04-18 A | 2007-04-19 A | 34 | 100% |  |  |
| 36 |  | Deliverable: Users Guide | 1d | 2007-04-20 A | 2007-04-20 A | 35 | 100% |  | start no earlier than 2005-04-08 |
| 37 |  | Update Design Document | 1d | 2007-04-23 A | 2007-04-23 A | 36 | 100% |  |  |
| 38 |  | Deliverable: Design Document | 1d | 2007-04-24 A | 2007-04-24 A | 37 | 100% |  | start no earlier than 2005-04-08 |
| 39 |  | Update Installation Guide | 1d | 2007-04-25 A | 2007-04-25 A | 38 | 100% |  |  |
| 40 |  | Deliverable: Installation Guide | 1d | 2007-04-26 A | 2007-04-26 A | 39 | 100% |  | start no earlier than 2005-04-08 |
| 41 |  | Update Readme, Release Note, Website, Help | 1d | 2007-04-27 A | 2007-04-27 A | 40 | 100% |  | start no earlier than 2005-12-19 |
| 42 |  | Prepare final download package | 1d | 2007-04-30 A | 2007-04-30 A |  | 100% |  |  |
| 43 |  | Deliverable: Packaged Iteration | 1d | 2007-05-01 A | 2007-05-01 A | 42 | 100% |  |  |
| 44 | 3 | **caAdapter V3.2.0.2 tasks** | 48d | 2007-05-02 | 2007-07-06 |  |  | 375d |  |
| 45 | 3.1 | **Inception** | 11d | 2007-05-02 | 2007-05-16 |  |  | 375d |  |
| 46 |  | Requirement gathering and analysis | 5d | 2007-05-02 | 2007-05-08 | 15 |  | 138d | start no earlier than 2007-02-08 |
| 47 |  | Draft use cases for model mapping service enhancement (Task 4) | 5d | 2007-05-09 | 2007-05-15 | 46 |  | 138d | start no earlier than 2007-02-22 |
| 48 |  | Deliverable: Use Cases | 1d | 2007-05-16 | 2007-05-16 | 47 |  | 138d | finish no earlier than 2006-07-04 |
| 49 | 3.2 | **Elaboration** | 23d | 2007-05-17 | 2007-06-18 |  |  | 375d |  |
| 50 |  | Draft design document for model mapping service enhancement (Task 4) | 10d | 2007-05-17 | 2007-05-30 | 45 |  | 138d | start no earlier than 2007-02-27 |
| 51 |  | Deliverable: Design Doc | 1d | 2007-05-31 | 2007-05-31 | 50 |  | 138d |  |
| 52 |  | Draft Test Plan and Test Cases | 10d | 2007-06-01 | 2007-06-14 | 51 |  | 153d |  |
| 53 |  | Deliverable: System Test Plan | 1d | 2007-06-15 | 2007-06-15 | 52 |  | 153d |  |
| 54 | 3.2.5 | **model mapping service enhancement (Task 4) development** | 12d | 2007-06-01 | 2007-06-18 |  |  | 375d |  |
| 55 |  | XML meta loader (task 4(f)) | 3d | 2007-06-01 | 2007-06-05 | 51 |  | 138d |  |
| 56 |  | Object to Object mapping (task 4(f)) | 7d | 2007-06-06 | 2007-06-14 | 55 |  | 138d |  |
| 57 |  | System integration testing (task 4(d)) | 2d | 2007-06-15 | 2007-06-18 | 56 |  | 138d |  |
| 58 | 3.3 | **Transition** | 5d | 2007-06-19 | 2007-06-25 |  |  | 375d |  |
| 59 |  | QA System testing - Model Mapping Service | 3d | 2007-06-19 | 2007-06-21 | 54 |  | 138d |  |
| 60 |  | Staging System testing | 2d | 2007-06-22 | 2007-06-25 | 59 |  | 138d |  |
| 61 | 3.4 | **Documentation** | 9d | 2007-06-26 | 2007-07-06 |  |  | 375d |  |
| 62 |  | Update Requirements | 0.5d | 2007-06-26 | 2007-06-26 | 60 |  | 138d |  |
| 63 |  | Deliverable: Requirements | 0.5d | 2007-06-26 | 2007-06-26 | 62 |  | 138d | start no earlier than 2005-04-08 |
| 64 |  | Update Users Guide | 2d | 2007-06-27 | 2007-06-28 | 63 |  | 138d |  |
| 65 |  | Deliverable: Users Guide | 0.5d | 2007-06-29 | 2007-06-29 | 64 |  | 138d | start no earlier than 2005-04-08 |
| 66 |  | Update Design Document | 0.5d | 2007-06-29 | 2007-06-29 | 65 |  | 138d |  |
| 67 |  | Deliverable: Design Document | 0.5d | 2007-07-02 | 2007-07-02 | 66 |  | 138d | start no earlier than 2005-04-08 |
| 68 |  | Update Installation Guide | 0.5d | 2007-07-02 | 2007-07-02 | 67 |  | 138d |  |
| 69 |  | Deliverable: Installation Guide | 0.5d | 2007-07-03 | 2007-07-03 | 68 |  | 138d | start no earlier than 2005-04-08 |
| 70 |  | Update Readme | 0.5d | 2007-07-03 | 2007-07-03 | 69 |  | 138d | start no earlier than 2005-12-19 |

| ID | WBS | Task | Duration | Start | Finish | Predecessors | Complete | Total float | Constraint |
| --- | --- | --- | --- | --- | --- | --- | --- | --- | --- |
| 71 |  | Update Release Note | 0.5d | 2007-07-04 | 2007-07-04 | 70 |  | 138d | start no earlier than 2005-12-19 |
| 72 |  | Update Press Release | 0.5d | 2007-07-04 | 2007-07-04 | 71 |  | 138d | start no earlier than 2005-12-19 |
| 73 |  | Update the Website content | 0.5d | 2007-07-05 | 2007-07-05 | 72 |  | 138d |  |
| 74 |  | Update Mapping Tool Help System Text | 0.5d | 2007-07-05 | 2007-07-05 | 73 |  | 138d |  |
| 75 |  | Prepare final download package | 0.5d | 2007-07-06 | 2007-07-06 | 74 |  | 138d |  |
| 76 |  | Deliverable: Packaged Iteration | 0.5d | 2007-07-06 | 2007-07-06 | 75 |  | 138d |  |
| 77 | 4 | **caAdapter V4.0 tasks** | 209d? | 2007-02-08 A | 2007-11-27 |  | 98% | 273d |  |
| 78 | 4.1 | **Iteration 1 - caAdapter mapping tool set (w/o MMS)** | 209d? | 2007-02-08 A | 2007-11-27 |  | 98% | 273d |  |
| 79 | 4.1.1 | **caAdapter code base enhancement (Task 8)** | 8d | 2007-02-08 A | 2007-02-19 A |  | 100% |  |  |
| 80 |  | caAdapter code base enhancement analysis | 1d | 2007-02-08 A | 2007-02-08 A |  | 100% |  | start no earlier than 2007-02-08 |
| 81 |  | caAdapter code base enhancement design | 1d | 2007-02-09 A | 2007-02-09 A | 80 | 100% |  | start no earlier than 2007-01-16 |
| 82 |  | caAdapter code base enhancement review | 1d | 2007-02-12 A | 2007-02-12 A | 81 | 100% |  | start no earlier than 2007-01-16 |
| 83 | 4.1.1.4 | **caAdapter code base enhancement implementation** | 5d | 2007-02-13 A | 2007-02-19 A |  | 100% |  |  |
| 84 |  | caAdapter code base enhancement UI implementation | 2d | 2007-02-13 A | 2007-02-14 A | 82 | 100% |  | start no earlier than 2007-01-16 |
| 85 |  | caAdapter code base enhancement - service layer implementation | 3d | 2007-02-15 A | 2007-02-19 A | 84 | 100% |  | start no earlier than 2007-01-16 |
| 86 | 4.1.2 | **Inception** | 31d | 2007-02-20 A | 2007-04-03 A |  | 100% |  |  |
| 87 |  | Requirement gathering and analysis | 15d | 2007-02-20 A | 2007-03-12 A | 85 | 100% |  | start no earlier than 2007-02-08 |
| 88 |  | Draft use cases for csv/database to SDTM transformation service enhancement (Task 1) | 15d | 2007-03-13 A | 2007-04-02 A | 87 | 100% |  | start no earlier than 2007-02-22 |
| 89 |  | Draft use cases for csv to HL7 v3 transformation service enhancement (Task 2) | 15d | 2007-03-13 A | 2007-04-02 A | 87 | 100% |  | start no earlier than 2007-02-22 |
| 90 |  | Draft use cases for HL7 v2 to HL7 v3 transformation service enhancement (Task 3) | 15d | 2007-03-13 A | 2007-04-02 A | 87 | 100% |  | start no earlier than 2007-02-22 |
| 91 |  | Draft use cases for vocabulary mapping service (Task 6) | 15d | 2007-03-13 A | 2007-04-02 A | 87 | 100% |  | start no earlier than 2007-02-22 |
| 92 |  | Draft use cases caAdapter Web Services (Task 7) | 15d | 2007-03-13 A | 2007-04-02 A | 87 | 100% |  | start no earlier than 2007-02-22 |
| 93 |  | Draft use cases forHL7 v3 to csv transformation service enhancement (Task 9) | 15d | 2007-03-13 A | 2007-04-02 A | 87 | 100% |  | start no earlier than 2007-02-22 |
| 94 |  | Deliverable: Use Cases | 1d | 2007-04-03 A | 2007-04-03 A | 93 | 100% |  | finish no earlier than 2006-07-04 |
| 95 | 4.1.3 | **Elaboration** | 27d | 2007-04-04 A | 2007-05-10 A |  | 100% |  |  |
| 96 |  | Initial design document for csv/database to SDTM transformation service enhancement (Task 1) | 15d | 2007-04-04 A | 2007-04-24 A | 94 | 100% |  | start no earlier than 2007-02-27 |
| 97 |  | Initial design document for csv to HL7 v3 transformation service enhancement (Task 2) | 15d | 2007-04-04 A | 2007-04-24 A | 94 | 100% |  | start no earlier than 2007-02-27 |
| 98 |  | Initial design document for HL7 v2 to HL7 v3 transformation service enhancement (Task 3) | 15d | 2007-04-04 A | 2007-04-24 A | 94 | 100% |  | start no earlier than 2007-02-27 |
| 99 |  | Initial design document for vocabulary mapping service (Task 6) | 15d | 2007-04-04 A | 2007-04-24 A | 94 | 100% |  | start no earlier than 2007-02-27 |
| 100 |  | Initial design document caAdapter Web Services (Task 7) | 15d | 2007-04-04 A | 2007-04-24 A | 94 | 100% |  | start no earlier than 2007-03-19 |
| 101 |  | Initial design document forHL7 v3 to csv transformation service enhancement (Task 9) | 15d | 2007-04-04 A | 2007-04-24 A | 94 | 100% |  | start no earlier than 2007-03-19 |
| 102 |  | Deliverable: Initial Design Doc | 1d | 2007-04-25 A | 2007-04-25 A | 101 | 100% |  |  |
| 103 |  | Design Review | 5d | 2007-04-26 A | 2007-05-02 A | 102 | 100% |  |  |
| 104 |  | Design enhancement | 5d | 2007-05-03 A | 2007-05-09 A | 103 | 100% |  |  |
| 105 |  | Deliverable: Design Doc | 1d | 2007-05-10 A | 2007-05-10 A | 104 | 100% |  |  |
| 106 | 4.1.4 | **QA Draft Test Plan and Test Cases** | 32d | 2007-05-11 A | 2007-06-25 |  | 90% | 384d |  |
| 107 |  | Draft Test Plan and Test Cases | 15d | 2007-05-11 A | 2007-05-31 | 105 | 90% | 113.3d |  |
| 108 |  | Deliverable: Initial System Test Plan | 1d | 2007-06-01 A | 2007-06-01 | 107 | 90% | 112.4d |  |
| 109 |  | Test Plan and Test Cases Enhancement | 15d | 2007-06-04 A | 2007-06-22 | 108 | 90% | 98.9d |  |
| 110 |  | Deliverable: System Test Plan | 1d | 2007-06-25 A | 2007-06-25 | 109 | 90% | 98d |  |
| 111 | 4.1.5 | **Construction** | 47.4d? | 2007-05-11 A | 2007-07-17 A |  | 100% |  |  |
| 112 | 4.1.5.1 | **csv/database to SDTM transformation service enhancement (Task 1) development** | 40d | 2007-05-11 A | 2007-07-05 A |  | 100% |  |  |
| 113 |  | Database/CTOM object model to SDTM mapping (task 1(a)) | 10d | 2007-05-11 A | 2007-05-24 A | 105 | 100% |  |  |
| 114 |  | Query Builder (task 1(a)) | 10d | 2007-05-25 A | 2007-06-07 A | 113 | 100% |  |  |
| 115 |  | SDTM API (task 1( c )) | 10d | 2007-06-08 A | 2007-06-21 A | 114 | 100% |  |  |
| 116 |  | SDTM web services (task 1(d)) | 10d | 2007-06-22 A | 2007-07-05 A | 115 | 100% |  |  |
| 117 | 4.1.5.2 | **csv to HL7 v3 transformation service enhancement (Task 2) development** | 40d | 2007-05-11 A | 2007-07-05 A |  | 100% |  |  |
| 118 |  | HL7 v3 Datatype parser (task 2(a)) | 10d | 2007-05-11 A | 2007-05-24 A | 105 | 100% |  |  |
| 119 |  | HL7 v3 Mif parser (task 2(a)) | 10d | 2007-05-25 A | 2007-06-07 A | 118 | 100% |  |  |
| 120 |  | csv to HL7 v3 transformation service enhancement (task 2(a)) | 10d | 2007-06-08 A | 2007-06-21 A | 119 | 100% |  |  |
| 121 |  | csv to HL7 v3 UI enhancement | 10d | 2007-06-22 A | 2007-07-05 A | 120 | 100% |  |  |
| 122 | 4.1.5.3 | **HL7 v2 to HL7 v3 transformation service enhancement (Task 3) development** | 30d | 2007-05-11 A | 2007-06-21 A |  | 100% |  |  |
| 123 |  | HL7 v2 H2S Meta data parser | 10d | 2007-05-11 A | 2007-05-24 A | 105 | 100% |  | start no earlier than 2007-02-27 |
| 124 |  | HL7 v2 H2S to HL7 v3 transformer | 10d | 2007-05-25 A | 2007-06-07 A | 123 | 100% |  | start no earlier than 2007-02-27 |
| 125 |  | HL7 v2 H2S Mapping Interface | 10d | 2007-06-08 A | 2007-06-21 A | 124 | 100% |  | start no earlier than 2007-02-27 |
| 126 |  | vocabulary mapping service (Task 6) development | 10d | 2007-06-22 A | 2007-07-05 A | 125 | 100% |  | start no earlier than 2007-02-27 |
| 127 | 4.1.5.5 | **HL7 v3 to csv transformation service enhancement (Task 9) development** | 40d | 2007-05-11 A | 2007-07-05 A |  | 100% |  |  |
| 128 |  | HL7 v3 message parser | 13d | 2007-05-11 A | 2007-05-29 A | 105 | 100% |  |  |
| 129 |  | HL7 v3 message to csv transformer | 13d | 2007-05-30 A | 2007-06-15 A | 128 | 100% |  |  |
| 130 |  | HL7 v3 to csv tranformation report | 14d | 2007-06-18 A | 2007-07-05 A | 129 | 100% |  |  |
| 131 |  | caAdapter product packaging and intial installation testing | 2.4d | 2007-07-06 A | 2007-07-10 A | 112 | 100% |  |  |
| 132 |  | caAdapter Internal integration Testing | 5d | 2007-07-10 A | 2007-07-17 A | 131 | 100% |  |  |
| 133 |  | Cross-Product Scope Complete | 1d? | 2007-06-01 A | 2007-06-01 A |  | 100% |  | start no earlier than 2007-06-01 |
| 134 |  | Cross-Product Scope Design Reviews Complete/Approved | 1d? | 2007-06-25 A | 2007-06-25 A |  | 100% |  | start no earlier than 2007-06-25 |
| 135 |  | Cross-Product Scope Freeze | 1d? | 2007-07-16 A | 2007-07-16 A |  | 100% |  | start no earlier than 2007-07-16 |
| 136 | 2.1.5 | **Transition** | 89d? | 2007-07-09 A | 2007-11-08 |  | 99% | 286d |  |
| 137 | 2.1.5.1 | **Deploy To QA Server - Integration Testing, Test, and Resolve Defects** | 21d | 2007-07-09 A | 2007-08-06 A |  | 100% |  |  |
| 138 |  | Deploy to QA server for integration testing | 1d | 2007-07-17 A | 2007-07-18 A | 111 | 100% |  |  |
| 139 |  | Execute csv/database to SDTM transformation service enhancement (Task 1) test cases | 7d | 2007-07-18 A | 2007-07-27 A | 138 | 100% |  | start no earlier than 2007-02-27 |
| 140 |  | Execute csv to HL7 v3 transformation service enhancement (Task 2) test cases | 7d | 2007-07-18 A | 2007-07-27 A | 138 | 100% |  | start no earlier than 2007-02-27 |

| ID | WBS | Task | Duration | Start | Finish | Predecessors | Complete | Total float | Constraint |
| --- | --- | --- | --- | --- | --- | --- | --- | --- | --- |
| 141 |  | Execute HL7 v2 to HL7 v3 transformation service enhancement (Task 3) test cases | 7d | 2007-07-18 A | 2007-07-27 A | 138 | 100% |  | start no earlier than 2007-02-27 |
| 142 |  | Execute vocabulary mapping service (Task 6) test cases | 7d | 2007-07-18 A | 2007-07-27 A | 138 | 100% |  |  |
| 143 |  | Execute caAdapter Web Services (Task 7) test cases | 7d | 2007-07-18 A | 2007-07-27 A | 138 | 100% |  | start no earlier than 2007-02-27 |
| 144 |  | Execute HL7 v3 to csv transformation service enhancement (Task 9) test cases | 7d | 2007-07-18 A | 2007-07-27 A | 138 | 100% |  | start no earlier than 2007-02-27 |
| 145 | 4.1.6.1.8 | **model mapping service enhancement (Task 4) development** | 15d | 2007-07-09 A | 2007-07-27 A |  | 100% |  |  |
| 146 |  | Intellegent mapping (task 4 -c) | 5d | 2007-07-09 A | 2007-07-13 A | 44 | 100% |  |  |
| 147 |  | Java Web Start | 6d | 2007-07-16 A | 2007-07-23 A | 146 | 100% |  |  |
| 148 |  | Execute model mapping service enhancement (Task 4) test cases | 4d | 2007-07-24 A | 2007-07-27 A | 147 | 100% |  | start no earlier than 2007-02-27 |
| 149 |  | Execute all test cases | 6d | 2007-07-30 A | 2007-08-06 A | 145 | 100% |  |  |
| 150 | 2.1.5.1 | **QA Testing- System testing, Test, and Resolve Defects** | 68d? | 2007-08-07 A | 2007-11-08 |  | 99% | 286d |  |
| 151 |  | Deploy to QA server for System testing | 1d | 2007-08-07 A | 2007-08-07 A | 137 | 100% |  |  |
| 152 |  | Execute csv/database to SDTM transformation service enhancement (Task 1) test cases | 15d | 2007-08-08 A | 2007-08-28 A | 151 | 100% |  | start no earlier than 2007-02-27 |
| 153 |  | Execute csv to HL7 v3 transformation service enhancement (Task 2) test cases | 15d | 2007-08-08 A | 2007-08-28 A | 151 | 100% |  | start no earlier than 2007-02-27 |
| 154 |  | Execute model mapping service enhancement (Task 4) test cases | 15d | 2007-08-08 A | 2007-08-28 A | 151 | 100% |  |  |
| 155 |  | Execute HL7 v2 to HL7 v3 transformation service enhancement (Task 3) test cases | 15d | 2007-08-08 A | 2007-08-28 A | 151 | 100% |  | start no earlier than 2007-02-27 |
| 156 |  | Execute vocabulary mapping service (Task 6) test cases | 15d | 2007-08-08 A | 2007-08-28 A | 151 | 100% |  | start no earlier than 2007-02-27 |
| 157 |  | Execute caAdapter Web Services (Task 7) test cases | 15d | 2007-08-08 A | 2007-08-28 A | 151 | 100% |  | start no earlier than 2007-02-27 |
| 158 |  | Execute HL7 v3 to csv transformation service enhancement (Task 9) test cases | 15d | 2007-08-08 A | 2007-08-28 A | 151 | 100% |  | start no earlier than 2007-02-27 |
| 159 | 4.1.6.2.9 | **Fix Bugs** | 47d? | 2007-08-29 A | 2007-11-01 A | 158 | 100% |  |  |
| 160 |  | Phase I (Misc Bugs) | 30d? | 2007-08-29 A | 2007-10-09 A |  | 100% |  |  |
| 161 |  | Phase II (HL7 specific, UI, GForge, Memory) | 18d? | 2007-10-09 A | 2007-11-01 A |  | 100% |  | start no earlier than 2007-10-09 |
| 162 |  | Review and update Website | 6d? | 2007-10-25 A | 2007-11-01 A |  | 100% |  | start no earlier than 2007-10-25 |
| 163 |  | Regression testing for bug fixes | 3d | 2007-11-05 A | 2007-11-07 | 160, 161, 162 | 67% | 13d | finish no earlier than 2007-11-07 |
| 164 |  | Deliverable: QA Test Results | 1d | 2007-11-08 | 2007-11-08 | 163 |  | 13d | start no earlier than 2005-04-08 |
| 165 | 4.1.7 | **Documentation** | 18d | 2007-09-03 A | 2007-09-26 |  | 82% | 317d |  |
| 166 |  | Update Requirements | 1d | 2007-09-17 A | 2007-09-17 | 169 | 90% | 51d |  |
| 167 |  | Deliverable: Requirements | 1d | 2007-09-17 A | 2007-09-17 | 169 | 90% | 51d | start no earlier than 2005-04-08 |
| 168 |  | Update Users Guide | 10d | 2007-09-03 A | 2007-09-14 |  | 90% | 52d | finish no earlier than 2007-09-14 |
| 169 |  | Deliverable: Users Guide | 1d | 2007-09-14 A | 2007-09-14 |  | 90% | 50.4d | start no earlier than 2007-09-14 |
| 170 |  | Update Design Document | 1d | 2007-09-17 A | 2007-09-17 | 169 | 90% | 51d |  |
| 171 |  | Deliverable: Design Document | 1d | 2007-09-17 A | 2007-09-17 | 169 | 90% | 51d | start no earlier than 2005-04-08 |
| 172 |  | Update Installation Guide | 2d | 2007-09-17 A | 2007-09-18 | 169 | 90% | 50d |  |
| 173 |  | Deliverable: Installation Guide | 1d | 2007-09-17 A | 2007-09-17 | 169 | 90% | 50d | start no earlier than 2005-04-08 |
| 174 |  | Update Readme | 1d | 2007-09-18 | 2007-09-18 | 173 |  | 50d | start no earlier than 2005-12-19 |
| 175 |  | Update Release Note | 1d | 2007-09-18 | 2007-09-18 | 173 |  | 50d | start no earlier than 2005-12-19 |
| 176 |  | Update Press Release | 1d | 2007-09-18 A | 2007-09-18 | 173 | 90% | 49.7d | start no earlier than 2005-12-19 |
| 177 |  | Update the Website content | 3d | 2007-09-19 A | 2007-09-21 | 176 | 90% | 47d |  |
| 178 |  | First Draft Revision and Help system generation | 5d | 2007-09-17 A | 2007-09-21 | 169 | 80% | 46.4d |  |
| 179 |  | Dev Team Revision - 2nd Round | 2d | 2007-09-24 A | 2007-09-25 | 178 | 80% | 44.8d |  |
| 180 |  | Final Draft Ready | 1d | 2007-09-26 A | 2007-09-26 | 179 | 80% | 44d |  |
| 181 |  | Deploy to Staging | 1d | 2007-11-09 A | 2007-11-09 A | 165, 163 | 100% |  | start no earlier than 2007-11-09 |
| 182 |  | Deploy to Production | 1d | 2007-11-14 A | 2007-11-14 A | 181 | 100% |  | finish no earlier than 2007-11-14 |
| 183 |  | Deliverable: Production System | 1d | 2007-11-27 | 2007-11-27 | 181 |  | 36d | start no earlier than 2007-11-27 |
| 185 | 5 | **TDMS Module Development** | 83d? | 2007-11-28 | 2008-03-21 |  |  | 190d |  |
| 186 | 5.1 | **1st Iteration** | 36d? | 2007-11-28 | 2008-01-16 |  |  | 237d |  |
| 187 |  | Internal project kickoff | 1d? | 2007-11-28 | 2007-11-28 |  |  | 272d | start no earlier than 2007-11-28 |
| 188 |  | Development Week 1 | 5d | 2007-11-28 | 2007-12-04 |  |  | 262d | start no earlier than 2007-11-28 |
| 189 |  | Deliverable - Internal: Ability to load a CSV and an XMI (DB) structures in the mapping tool | 0.5d? | 2007-12-05 | 2007-12-05 | 188 |  | 262d |  |
| 190 |  | Development Week 2 | 5d | 2007-12-05 | 2007-12-12 | 189 |  | 262d |  |
| 191 |  | Deliverable - Prototype Completed | 0.5d? | 2007-12-12 | 2007-12-12 | 190 |  | 262d |  |
| 192 |  | Review with caTREN Team | 1d? | 2007-12-14 | 2007-12-14 |  |  | 255d | start no earlier than 2007-12-14 |
| 193 |  | Update prototype | 5d | 2007-12-17 | 2007-12-21 | 192 |  | 255d |  |
| 194 |  | Deliverable - 1st Iteration of module (v 4.0 - TDMS 0.1) delivered to QA | 0.5d? | 2008-01-03 | 2008-01-03 |  |  | 246.5d | start no earlier than 2008-01-03 |
| 195 |  | Support QA Test | 4d | 2008-01-03 | 2008-01-08 |  |  | 238d | start no earlier than 2008-01-03 |
| 196 |  | Support Staging and Production Deployments | 5d | 2008-01-10 | 2008-01-16 | 195 |  | 237d | start no earlier than 2008-01-10 |
| 197 |  | Deliverable - 1st Iteration of module (v4.0 - TDMS 0.1) is in production | 1d | 2008-01-16 | 2008-01-16 | 196FF |  | 237d | start no earlier than 2008-01-16 |
| 198 | 5.2 | **2nd Iteration** | 55d? | 2008-01-07 | 2008-03-21 |  |  | 190d |  |
| 199 | 5.2.1 | **Inception** | 15d? | 2008-01-07 | 2008-01-25 |  |  | 230d |  |
| 200 |  | Develop Use Cases Document | 5d | 2008-01-07 | 2008-01-11 |  |  | 230d | start no earlier than 2008-01-07 |
| 201 |  | Develop Desing Document | 6d | 2008-01-14 | 2008-01-21 | 200 |  | 230d | start no earlier than 2008-01-14 |
| 202 |  | Design Review | 3d | 2008-01-22 | 2008-01-24 | 201 |  | 230d | start no earlier than 2008-01-22 |
| 203 |  | Deliverable - Use Case Document | 1d? | 2008-01-25 | 2008-01-25 | 202 |  | 230d | start no earlier than 2008-01-25 |
| 204 |  | Deliverable - Desing Document | 1d | 2008-01-25 | 2008-01-25 | 203FF |  | 230d | start no earlier than 2008-01-25 |
| 205 | 5.2.2 | **QA Test Plan and Test Cases** | 15d | 2008-01-28 | 2008-02-15 |  |  | 215d |  |
| 206 |  | Draft Test Plan /Test Cases | 5d | 2008-01-28 | 2008-02-01 |  |  | 225d | start no earlier than 2008-01-28 |
| 207 |  | Deliverable: Draft Test Plan | 1d | 2008-02-01 | 2008-02-01 | 206FF |  | 225d | start no earlier than 2008-01-25 |
| 208 |  | Enhance Test Plan and Test Cases | 10d | 2008-02-01 | 2008-02-14 |  |  | 215d | start no earlier than 2008-02-01 |
| 209 |  | Deliverable - Final Test Plan | 1d | 2008-02-15 | 2008-02-15 | 208 |  | 215d |  |
| 210 | 5.2.3 | **Construction** | 25d | 2008-01-28 | 2008-02-29 |  |  | 205d |  |
| 211 |  | 1st Constuction Phase | 5d | 2008-01-28 | 2008-02-01 |  |  | 205d | start no earlier than 2008-01-28 |

| ID | WBS | Task | Duration | Start | Finish | Predecessors | Total float | Constraint |
| --- | --- | --- | --- | --- | --- | --- | --- | --- |
| 212 |  | Deliverable - Internal Checkpoint 1 | 1d | 2008-02-01 | 2008-02-01 | 211FF | 205d | start no earlier than 2008-02-01 |
| 213 |  | 2nd Construction Phase | 10d | 2008-02-04 | 2008-02-15 | 212 | 205d | start no earlier than 2008-02-04 |
| 214 |  | Deliverable - Internal Checkpoint 2 | 1d | 2008-02-15 | 2008-02-15 | 213FF | 205d | start no earlier than 2008-02-15 |
| 215 |  | 3rd Construction Phase | 6d | 2008-02-18 | 2008-02-25 | 214 | 205d | start no earlier than 2008-02-18 |
| 216 |  | Internal Testing | 3d | 2008-02-26 | 2008-02-28 | 215 | 205d | start no earlier than 2008-02-26 |
| 217 |  | Deliverable - 2nd Iteration Comleted | 1d | 2008-02-29 | 2008-02-29 | 216 | 205d | start no earlier than 2008-02-29 |
| 218 | 2.1.5 | **Transition** | 15d | 2008-03-03 | 2008-03-21 |  | 190d |  |
| 219 | 2.1.5.1 | **Deploy To QA Server- System testing** | 5d | 2008-03-03 | 2008-03-07 |  | 190d |  |
| 220 |  | Deploy to QA server for System testing | 2d | 2008-03-03 | 2008-03-04 |  | 190d | start no earlier than 2008-03-03 |
| 221 |  | Execute all test cases | 2d | 2008-03-05 | 2008-03-06 | 220 | 190d | start no earlier than 2008-03-05 |
| 222 |  | Deliverable: QA Test Results | 1d | 2008-03-07 | 2008-03-07 | 221 | 190d | start no earlier than 2008-03-07 |
| 223 | 2.1.5.2 | **Deploy to Staging Server** | 5d | 2008-03-10 | 2008-03-14 |  | 190d |  |
| 224 |  | Deploy to Staging server | 2d | 2008-03-10 | 2008-03-11 | 222 | 190d | start no earlier than 2008-03-10 |
| 225 |  | Execute all test cases | 3d | 2008-03-12 | 2008-03-14 | 224 | 190d |  |
| 226 | 2.1.7 | **Support User Acceptance Test** | 5d | 2008-03-17 | 2008-03-21 |  | 190d |  |
| 227 |  | UAT Testing | 4d | 2008-03-17 | 2008-03-20 | 225 | 190d | start no earlier than 2008-03-17 |
| 228 |  | Deliverable: UAT Test Results | 1d | 2008-03-21 | 2008-03-21 | 227 | 190d | start no earlier than 2008-03-20 |
| 229 | 5.2.5 | **Documentation** | 10d? | 2008-03-10 | 2008-03-21 |  | 190d |  |
| 230 |  | Update the Use Case Document | 3d | 2008-03-10 | 2008-03-12 |  | 197d | start no earlier than 2008-03-10 |
| 231 |  | Update Design Document | 3d | 2008-03-13 | 2008-03-17 |  | 194d | start no earlier than 2008-03-13 |
| 232 |  | Develop the Users Guid Section for the TDMS Module | 3d | 2008-03-18 | 2008-03-20 |  | 191d | start no earlier than 2008-03-18 |
| 233 |  | Deliverable - Use Case, Design, and Users Guide Documents | 1d? | 2008-03-21 | 2008-03-21 |  | 190d | start no earlier than 2008-03-21 |
| 234 |  | Deliverable - 2nd Iteration TDMS Production Module | 1d? | 2008-03-21 | 2008-03-21 | 228FF | 190d | finish no earlier than 2008-03-21 |
| 236 | 6 | **MMS Enhancements** | 103d? | 2007-11-28 | 2008-04-18 |  | 170d |  |
| 237 |  | Tasks TBD | 103d? | 2007-11-28 | 2008-04-18 |  | 170d | start no earlier than 2007-11-28 |
| 239 | 7 | **GME Development** | 143d? | 2007-11-28 | 2008-06-13 |  | 130d |  |
| 240 |  | 1st Iteration | 78d? | 2007-11-28 | 2008-03-14 |  | 195d | finish no earlier than 2008-03-14 |
| 241 |  | 2nd Iteration | 66d? | 2008-03-14 | 2008-06-13 |  | 130d | start no earlier than 2008-03-14 |
| 243 | 8 | **UCUM SDK Development** | 195d? | 2008-03-17 | 2008-12-12 |  | 0d |  |
| 244 |  | 1st Iteration | 65d? | 2008-03-17 | 2008-06-13 |  | 130d | start no earlier than 2008-03-17 |
| 245 |  | 2nd Iteration | 55d? | 2008-06-02 | 2008-08-15 |  | 85d | start no earlier than 2008-06-02 |
| 246 |  | 3rd Iteration | 95d? | 2008-08-04 | 2008-12-12 |  | 0d | start no earlier than 2008-08-04 |
| 248 | 9 | **RDS Enhancements** | 90d? | 2008-04-14 | 2008-08-15 |  | 85d |  |
| 249 |  | Tasks TBD | 90d? | 2008-04-14 | 2008-08-15 |  | 85d | start no earlier than 2008-04-14 |
| 251 | 10 | **HL7 v3 Map. / Transform. Enhancements** | 110d? | 2008-06-16 | 2008-11-14 |  | 20d |  |
| 252 |  | Tasks TBD | 110d? | 2008-06-16 | 2008-11-14 |  | 20d | start no earlier than 2008-06-15 |
| 254 | 11 | **HL7 v3 eDCI Message Implementation** | 155d? | 2008-05-12 | 2008-12-12 |  | 0d |  |
| 255 |  | Tasks TBD | 155d? | 2008-05-12 | 2008-12-12 |  | 0d | start no earlier than 2008-05-12 |

## Version 2 (saved 2008-01-22)

Note of the change: *** empty log message ***

Last finish stays 2008-12-12.

Added:

| ID | Task | Duration | Start | Finish | Predecessors | Constraint | Resources |
| --- | --- | --- | --- | --- | --- | --- | --- |
| 237 | **1st Iteration** | 39d? | 2008-01-15 | 2008-03-07 |  |  |  |
| 238 | Internal - resumption of activities - kickoff | 1d? | 2008-01-15 | 2008-01-15 |  | finish no earlier than 2008-01-15 | Team |
| 242 | Research xsd parsers - reuse vs build | 4d? | 2008-01-15 | 2008-01-18 |  | start no earlier than 2008-01-15 | EW |
| 243 | Finalize decision on xsd parser | 1d? | 2008-01-25 | 2008-01-25 | 242 | start no earlier than 2008-01-25 | Team |
| 244 | Development Week 1 | 5d? | 2008-01-28 | 2008-02-01 | 243 |  | EW; NS |
| 246 | Development Weeks 2 & 3 | 10d | 2008-02-04 | 2008-02-15 | 245 | finish no earlier than 2008-02-15 | EW; NS |
| 247 | Deliverable - Meet w/GME team. Show ability to map from XSD to XMI elements | 1d? | 2008-02-15 | 2008-02-15 | 246FF | start no earlier than 2008-02-15 |  |
| 248 | Development and Testing Weeks 4 & 5 | 10d | 2008-02-18 | 2008-02-29 | 247 |  | EW; NS |
| 250 | Deliverable - System Delivered to Q/A | 1d | 2008-02-29 | 2008-02-29 | 248FF, 249 | start no earlier than 2008-02-29 |  |
| 251 | Support QA Test | 5d | 2008-03-03 | 2008-03-07 | 250 | finish no earlier than 2008-03-07 | EW; NS |
| 253 | **2nd Iteration** | 70d? | 2008-03-10 | 2008-06-13 |  |  |  |
| 254 | Tasks are TBD | 70d? | 2008-03-10 | 2008-06-13 |  | start no earlier than 2008-03-10 |  |
| 256 | **caAdapter - MMS Module Enhancements** | 103d? | 2007-11-28 | 2008-04-18 |  |  |  |
| 259 | **caAdapter - UCUM SDK Development** | 195d? | 2008-03-17 | 2008-12-12 |  |  |  |
| 264 | **caAdapter - RDS Module Enhancements** | 90d? | 2008-04-14 | 2008-08-15 |  |  |  |
| 267 | **caAdapter - HL7 v3 Map. / Transform. Enhancements** | 110d? | 2008-06-16 | 2008-11-14 |  |  |  |
| 270 | **caAdapter - HL7 v3 eDCI Message Implementation** | 155d? | 2008-05-12 | 2008-12-12 |  |  |  |

Removed: 254 HL7 v3 eDCI Message Implementation

Changed:

| ID | Task | Start | Finish | Duration | Total float | Predecessors | Other |
| --- | --- | --- | --- | --- | --- | --- | --- |
| 7 | Draft System Requirement Document |  |  |  | 212d → 355d |  | was named Draft System Requirment Document |
| 8 | Deliverable: System Requirement Document |  |  |  | 212d → 355d |  | was named Deliverable: System Requirment Document |
| 118 | HL7 v3 Data type parser (task 2(a)) |  |  |  |  |  | was named HL7 v3 Datatype parser (task 2(a)) |
| 119 | HL7 v3 MIF parser (task 2(a)) |  |  |  |  |  | was named HL7 v3 Mif parser (task 2(a)) |
| 130 | HL7 v3 to csv transformation report |  |  |  |  |  | was named HL7 v3 to csv tranformation report |
| 131 | caAdapter product packaging and initial installation testing |  |  |  |  |  | was named caAdapter product packaging and intial installation testing |
| 146 | Intelligent mapping (task 4 -c) |  |  |  |  |  | was named Intellegent mapping (task 4 -c) |
| 185 | **caAdapter - TDMS Module Tasks** | 2007-11-28 → 2007-01-16 (-316d) |  | 83d? → 309d? |  |  | was named TDMS Module Development |
| 192 | Review with caTREND Team |  |  |  |  |  | was named Review with caTREN Team |
| 198 | **2nd Iteration** | 2008-01-07 → 2007-01-16 (-356d) |  | 55d? → 309d? |  |  |  |
| 201 | Develop Design Document |  |  |  |  |  | was named Develop Desing Document |
| 204 | Deliverable - Design Document |  |  |  |  |  | was named Deliverable - Desing Document |
| 205 | **QA Test Plan and Test Cases** | 2008-01-28 → 2007-01-16 (-377d) | 2008-02-15 → 2008-02-01 (-14d) | 15d → 274d | 215d → 225d |  |  |
| 208 | Enhance Test Plan and Test Cases | 2008-02-01 → 2007-01-16 (-381d) | 2008-02-14 → 2007-01-29 (-381d) |  | 215d → 488d |  | constraint start no earlier than 2008-02-01 → none |
| 209 | Deliverable - Final Test Plan | 2008-02-15 → 2007-01-30 (-381d) | 2008-02-15 → 2007-01-30 (-381d) |  | 215d → 488d |  |  |
| 211 | 1st Construction Phase |  |  |  |  |  | was named 1st Constuction Phase |
| 217 | Deliverable - 2nd Iteration Completed |  |  |  |  |  | was named Deliverable - 2nd Iteration Comleted |
| 232 | Develop the Users Guide Section for the TDMS Module |  |  |  |  |  | was named Develop the Users Guid Section for the TDMS Module |
| 236 | **caAdapter - GME Module Tasks** | 2007-11-28 → 2008-01-15 (+48d) | 2008-04-18 → 2008-06-13 (+56d) | 103d? → 109d? | 170d → 130d |  | was named MMS Enhancements |
| 239 | Finalize Use Case document | 2007-11-28 → 2008-01-15 (+48d) | 2008-06-13 → 2008-01-15 (-150d) | 143d? → 1d? | 130d → 48d |  | was named GME Development; constraint none → start no earlier than 2008-01-15; resources none → CY |
| 240 | Develop design Document | 2008-03-17 → 2008-01-23 (-54d) | 2008-06-13 → 2008-01-28 (-137d) | 65d? → 4d? | 130d → 38d | none → 239 | was named 1st Iteration; constraint start no earlier than 2008-03-17 → start no earlier than 2008-01-23; resources none → EW |
| 241 | Deliverable - Design Document | 2008-06-02 → 2008-01-28 (-126d) | 2008-08-15 → 2008-01-28 (-200d) | 55d? → 1d? | 85d → 99d | none → 240FF | was named 2nd Iteration; constraint start no earlier than 2008-06-02 → start no earlier than 2008-01-28 |
| 245 | Deliverable - Internal: Ability to load an xsd and an xmi files in the mapping tool | 2008-03-17 → 2008-02-01 (-45d) | 2008-12-12 → 2008-02-01 (-315d) | 195d? → 1d? | 0d → 35d | none → 244FF | was named UCUM SDK Development; constraint none → start no earlier than 2008-02-01 |
| 249 | Develop Users Guide | 2008-04-14 → 2008-02-18 (-56d) | 2008-08-15 → 2008-02-22 (-175d) | 90d? → 5d | 85d → 19d |  | was named RDS Enhancements; constraint none → start no earlier than 2008-02-18; resources none → CY |
| 252 | Deliverable - System ready for Integration Testing with GME team | 2008-06-16 → 2008-03-07 (-101d) | 2008-11-14 → 2008-03-07 (-252d) | 110d? → 1d? | 20d → 70d | none → 251FF | was named HL7 v3 Map. / Transform. Enhancements; constraint none → start no earlier than 2008-03-07 |
| 260 | 1st Iteration | 2007-11-28 → 2008-03-17 (+110d) | 2008-03-14 → 2008-06-13 (+91d) | 78d? → 65d? | 195d → 130d |  | constraint finish no earlier than 2008-03-14 → start no earlier than 2008-03-17 |
| 261 | 2nd Iteration | 2008-03-14 → 2008-06-02 (+80d) | 2008-06-13 → 2008-08-15 (+63d) | 66d? → 55d? | 130d → 85d |  | constraint start no earlier than 2008-03-14 → start no earlier than 2008-06-02 |

## Version 3 (saved 2008-01-23)

Note of the change: *** empty log message ***

Last finish stays 2008-12-12. Complete tasks 94 → 106.

Changed:

| ID | Task | Start | Finish | Complete | Total float | Other |
| --- | --- | --- | --- | --- | --- | --- |
| 184 | **caAdapter - TDMS Module Tasks** | 2007-01-16 A |  | 0% → 25% |  |  |
| 185 | **1st Iteration** | 2007-11-28 A | 2008-01-16 A | 0% → 100% | 237d → none |  |
| 186 | Internal project kickoff | 2007-11-28 A | 2007-11-28 A | 0% → 100% | 272d → none |  |
| 187 | Development Week 1 | 2007-11-28 A | 2007-12-04 A | 0% → 100% | 262d → none |  |
| 188 | Deliverable - Internal: Ability to load a CSV and an XMI (DB) structures in the mapping tool | 2007-12-05 A | 2007-12-05 A | 0% → 100% | 262d → none |  |
| 189 | Development Week 2 | 2007-12-05 A | 2007-12-12 A | 0% → 100% | 262d → none |  |
| 190 | Deliverable - Prototype Completed | 2007-12-12 A | 2007-12-12 A | 0% → 100% | 262d → none |  |
| 191 | Review with caTREND Team | 2007-12-14 A | 2007-12-14 A | 0% → 100% | 255d → none |  |
| 192 | Update prototype | 2007-12-17 A | 2007-12-21 A | 0% → 100% | 255d → none |  |
| 193 | Deliverable - 1st Iteration of module (v 4.0 - TDMS 0.1) delivered to QA | 2008-01-03 A | 2008-01-03 A | 0% → 100% | 246.5d → none |  |
| 194 | Support QA Test | 2008-01-03 A | 2008-01-08 A | 0% → 100% | 238d → none |  |
| 195 | Support Staging and Production Deployments | 2008-01-10 A | 2008-01-16 A | 0% → 100% | 237d → none |  |
| 196 | Deliverable - 1st Iteration of module (v4.0 - TDMS 0.1) is in production | 2008-01-16 A | 2008-01-16 A | 0% → 100% | 237d → none |  |
| 235 | **caAdapter - GME Module Tasks** | 2008-01-15 A |  | 0% → 1% |  |  |
| 236 | **1st Iteration** | 2008-01-15 A |  | 0% → 2% |  |  |
| 237 | Internal - resumption of activities - kickoff | 2008-01-15 A | 2008-01-15 A | 0% → 100% | 48d → none |  |
| 252 | **2nd Iteration (TBD)** |  |  |  |  | was named 2nd Iteration |

## Version 4 (saved 2008-01-30)

Note of the change: *** empty log message ***

Last finish stays 2008-12-12. Complete tasks 106 → 107.

Added:

| ID | Task | Duration | Start | Finish | Predecessors | Constraint | Resources |
| --- | --- | --- | --- | --- | --- | --- | --- |
| 253 | Define Use Cases | 5d? | 2008-03-10 | 2008-03-14 |  | start no earlier than 2008-03-10 | CY |
| 254 | Deliverable - Internal: Use Case Document for 2nd Iteration | 1d? | 2008-03-14 | 2008-03-14 | 253FF | start no earlier than 2008-03-14 |  |
| 255 | Develop Design Document | 5d? | 2008-03-17 | 2008-03-21 | 254 |  | EW |
| 256 | Deliverable - Design Document | 1d? | 2008-03-21 | 2008-03-21 | 255FF |  |  |
| 257 | Decision Point - Determine what to include in 4.1 release | 1d? | 2008-03-17 | 2008-03-17 |  | start no earlier than 2008-03-17 |  |
| 258 | Review Iteration 1 - ramp up period (New Resource) | 10d? | 2008-03-10 | 2008-03-21 |  | finish no earlier than 2008-03-21 | TBD(1) |
| 259 | Development Weeks 1 & 2 | 10d? | 2008-03-24 | 2008-04-04 | 258 |  | EW; TBD(1) |
| 260 | Deliverable - Demo Progress to-date | 1d? | 2008-04-04 | 2008-04-04 | 259FF | start no earlier than 2008-02-01 |  |
| 261 | Development Weeks 3 & 4 | 10d | 2008-04-07 | 2008-04-18 | 260 | finish no earlier than 2008-02-15 | EW; TBD(1) |
| 262 | Deliverable - Meet w/GME team. Show ability to map from XSD to XMI elements | 1d? | 2008-04-18 | 2008-04-18 | 261FF | start no earlier than 2008-02-15 |  |
| 263 | Development and Testing Weeks 5 and 6 | 10d | 2008-04-21 | 2008-05-02 | 262, 289 |  | EW; TBD(1)&2 |
| 264 | Develop Users Guide | 5d | 2008-04-21 | 2008-04-25 | 261 | start no earlier than 2008-02-18 | CY |
| 265 | Deliverable - System Delivered to Q/A | 1d | 2008-05-02 | 2008-05-02 | 263FF, 264 | start no earlier than 2008-02-29 |  |
| 266 | Support QA Test | 5d | 2008-05-05 | 2008-05-09 | 265 | finish no earlier than 2008-03-07 | EW; TBD(1)&2 |
| 267 | Deliverable - System ready for Integration Testing with GME team | 1d? | 2008-05-09 | 2008-05-09 | 266FF | start no earlier than 2008-03-07 |  |
| 269 | **caAdapter - Version 4.1 Packaging** | 25d? | 2008-03-17 | 2008-04-18 |  |  |  |
| 270 | Update documentation | 10d | 2008-03-17 | 2008-03-28 | 257SS | start no earlier than 2008-03-17 | CY; EW |
| 271 | Update web pages | 5d | 2008-03-31 | 2008-04-04 | 270 | start no earlier than 2008-03-31 | CY |
| 272 | Build first 4.1 package - no documentation | 5d | 2008-03-17 | 2008-03-21 | 257SS | start no earlier than 2008-03-17 | EW |
| 273 | Deliverable - First v 4.1 pakage | 1d? | 2008-03-21 | 2008-03-21 | 272FF | start no earlier than 2008-03-21 |  |
| 274 | Test 1st package - internal | 5d | 2008-03-24 | 2008-03-28 | 273 |  | Team |
| 275 | Build and test second 4.1 package - with documentation | 5d | 2008-03-31 | 2008-04-04 | 274 |  | EW |
| 276 | Deliverable - Second v4.1 pakage ready for QA | 1d? | 2008-04-04 | 2008-04-04 | 271FF, 275FF | start no earlier than 2008-04-04 |  |
| 277 | Support QA / Stage and Testing | 10d | 2008-04-07 | 2008-04-18 | 276 | start no earlier than 2008-04-07 | Team |
| 278 | Deliverable - v 4.1 release | 1d? | 2008-04-18 | 2008-04-18 | 277FF | start no earlier than 2008-04-18 |  |
| 289 | Review RDS module - ramp up period | 9d? | 2008-04-01 | 2008-04-11 |  | start no earlier than 2008-04-01 | TBD(2) |

Removed: 253 Tasks are TBD

Changed:

| ID | Task | Start | Finish | Duration | Complete | Total float | Other |
| --- | --- | --- | --- | --- | --- | --- | --- |
| 235 | **caAdapter - GME Module Tasks** |  | 2008-06-13 → 2008-05-09 (-35d) | 109d? → 84d? | 1% → 6% | 130d → 155d |  |
| 236 | **1st Iteration** |  |  |  | 2% → 15% |  |  |
| 239 | Develop design Document | 2008-01-23 A |  |  | 0% → 60% |  |  |
| 241 | Research xsd parsers - reuse vs build | 2008-01-15 A | 2008-01-18 A |  | 0% → 100% | 204d → none |  |
| 252 | **2nd Iteration** |  | 2008-06-13 → 2008-05-09 (-35d) | 70d? → 45d? |  | 130d → 155d | was named 2nd Iteration (TBD) |
| 288 | **caAdapter - RDS Module Enhancements** | 2008-04-14 → 2008-04-01 (-13d) |  | 90d? → 99d? |  |  |  |
| 290 | Other Tasks still under development |  |  |  |  |  | was named Tasks TBD |

## Version 5 (saved 2008-01-31)

Note of the change: *** empty log message ***

Last finish stays 2008-12-12.

Added:

| ID | Task | Duration | Start | Finish | Constraint | Resources |
| --- | --- | --- | --- | --- | --- | --- |
| 282 | Review MMS module - ramp up period | 9d? | 2008-04-01 | 2008-04-11 | start no earlier than 2008-04-01 | TBD(2) |

Removed: 289 Review RDS module - ramp up period

Changed:

| ID | Task | Start | Duration | Predecessors | Other |
| --- | --- | --- | --- | --- | --- |
| 263 | Development and Testing Weeks 5 and 6 |  |  | 262, Review RDS module - ramp up period → 262 |  |
| 281 | Flesh Out the Requrements for Enhancements |  |  |  | was named Tasks TBD |
| 290 | **caAdapter - RDS Module Enhancements** | 2008-04-01 → 2008-04-14 (+13d) | 99d? → 90d? |  |  |

## Version 6 (saved 2008-02-05)

Note of the change: *** empty log message ***

Last finish stays 2008-12-12. Complete tasks 107 → 108.

Added:

| ID | Task | Duration | Start | Finish | Predecessors | Constraint | Resources |
| --- | --- | --- | --- | --- | --- | --- | --- |
| 280 | Deliverable - Use Case Document for Enhancements | 1d? | 2008-03-07 | 2008-03-07 | 279FF | start no earlier than 2008-03-07 |  |
| 282 | Develop Desing Document | 5d | 2008-04-14 | 2008-04-18 | 280, 281 | start no earlier than 2008-04-14 | EW; TBD(2) |
| 283 | Deliverable - Design Document | 1d? | 2008-04-18 | 2008-04-18 | 282FF | start no earlier than 2008-04-18 |  |
| 284 | Development Weeks 1 & 2 | 10d? | 2008-05-05 | 2008-05-16 | 283 | start no earlier than 2008-05-04 | TBD(1); TBD(2) |
| 285 | Deliverable - Demo Progress to date | 1d? | 2008-05-16 | 2008-05-16 | 284FF | start no earlier than 2008-05-02 |  |
| 286 | Development Weeks 3 | 5d? | 2008-05-19 | 2008-05-23 | 285 | finish no earlier than 2008-05-09 | TBD(1); TBD(2) |
| 287 | Testing (Internal) | 5d? | 2008-05-26 | 2008-05-30 | 286 | start no earlier than 2008-05-12 | Team |
| 288 | Develop Documentation | 8d | 2008-05-19 | 2008-05-30 | 284 | start no earlier than 2008-05-05 | CY; EW |
| 289 | Deliverable - Module and Docs ready for Q/A | 1d? | 2008-05-30 | 2008-05-30 | 288FF, 287FF | start no earlier than 2008-05-09 |  |
| 290 | Support QA and Stage Testing | 10d? | 2008-06-02 | 2008-06-13 | 289 | start no earlier than 2008-05-19 | TBD(1); TBD(2) |
| 291 | Deliverable - MMS Enhancements in Production | 1d? | 2008-06-13 | 2008-06-13 | 290FF | start no earlier than 2008-05-30 |  |
| 294 | **1st Iteration** | 85d | 2008-05-05 | 2008-08-29 |  |  |  |
| 295 | **Inception** | 21d | 2008-05-05 | 2008-06-02 |  |  |  |
| 296 | Requirement gathering and analysis | 5d | 2008-05-05 | 2008-05-09 |  | start no earlier than 2008-05-05 |  |
| 297 | Draft use cases for UCUM Constructor | 5d | 2008-05-12 | 2008-05-16 | 296 |  |  |
| 298 | Draft use cases for UCUM Validator | 5d | 2008-05-12 | 2008-05-16 | 296 |  |  |
| 299 | Draft use cases for UCUM Terminology Brower | 5d | 2008-05-12 | 2008-05-16 | 296 |  |  |
| 300 | Draft use cases for Unit of Measure Mapping and Conversion Tool | 5d | 2008-05-14 | 2008-05-20 | 296 | start no earlier than 2008-05-14 |  |
| 301 | Draft use cases for UCUM Conversion tool | 5d | 2008-05-14 | 2008-05-20 | 296 | start no earlier than 2008-05-14 |  |
| 302 | Draft use cases for UCUM Java APIs and Web Services | 5d | 2008-05-14 | 2008-05-20 | 296 | start no earlier than 2008-05-14 |  |
| 303 | Draft design document for UCUM Constructor | 5d | 2008-05-21 | 2008-05-27 | 302 | start no earlier than 2008-05-19 |  |
| 304 | Draft design document for UCUM Validator | 5d | 2008-05-21 | 2008-05-27 | 301 | start no earlier than 2008-05-19 |  |
| 305 | Draft design document for UCUM Terminology Brower | 5d | 2008-05-21 | 2008-05-27 |  | start no earlier than 2008-05-21 |  |
| 306 | Draft design document for Unit of Measure Mapping and Conversion Tool | 5d | 2008-05-27 | 2008-06-02 |  | start no earlier than 2008-05-27 |  |
| 307 | Draft design document for Conversion tool | 5d | 2008-05-27 | 2008-06-02 |  | start no earlier than 2008-05-27 |  |
| 308 | Draft design document Java APIs and Web Services | 5d | 2008-05-27 | 2008-06-02 |  | start no earlier than 2008-05-27 |  |
| 309 | Deliverable: Use Cases | 1d | 2008-05-23 | 2008-05-23 |  | start no earlier than 2008-05-23 |  |
| 310 | Deliverable - Initial Design Doc | 1d | 2008-05-30 | 2008-05-30 |  | start no earlier than 2008-05-30 |  |
| 311 | **Elaboration** | 19d | 2008-05-26 | 2008-06-19 |  |  |  |
| 312 | Finalize use cases for UCUM Constructor | 10d | 2008-05-26 | 2008-06-06 | 309 |  |  |
| 313 | Finalize use cases for UCUM Validator | 10d | 2008-05-26 | 2008-06-06 | 309 |  |  |
| 314 | Finalize use cases for UCUM Terminology Brower | 10d | 2008-05-26 | 2008-06-06 | 309 |  |  |
| 315 | Finalize use cases for Unit of Measure Mapping and Conversion Tool | 10d | 2008-05-26 | 2008-06-06 | 309 |  |  |
| 316 | Finalize use cases for UCUM Conversion tool | 10d | 2008-05-26 | 2008-06-06 | 309 |  |  |
| 317 | Finalize use cases for UCUM Java APIs and Web Services | 10d | 2008-05-26 | 2008-06-06 | 309 |  |  |
| 318 | Enhance design document for UCUM Constructor | 10d | 2008-05-26 | 2008-06-06 | 309 |  |  |
| 319 | Enhance design document for UCUM Validator | 10d | 2008-05-26 | 2008-06-06 | 309 |  |  |
| 320 | Enhance design document for UCUM Terminology Brower | 10d | 2008-05-26 | 2008-06-06 | 309 |  |  |
| 321 | Enhance design document for Unit of Measure Mapping and Conversion Tool | 10d | 2008-05-26 | 2008-06-06 | 309 |  |  |
| 322 | Enhance design document for Conversion tool | 10d | 2008-05-26 | 2008-06-06 | 309 |  |  |
| 323 | Enhance design document Java APIs and Web Services | 10d | 2008-05-26 | 2008-06-06 | 309 |  |  |
| 324 | Deliverable: Final Use Cases | 1d | 2008-06-09 | 2008-06-09 | 312 |  |  |
| 325 | Deliverable: Enhanced Design Doc | 1d | 2008-06-09 | 2008-06-09 | 312 |  |  |
| 326 | Design Review | 5d | 2008-06-10 | 2008-06-16 | 325 |  |  |
| 327 | Finalize Design Document | 2d | 2008-06-17 | 2008-06-18 | 326 |  |  |
| 328 | Deliverable: Final Design Doc | 1d | 2008-06-19 | 2008-06-19 | 327 |  |  |
| 329 | **QA Draft Test Plan and Test Cases** | 24d | 2008-06-03 | 2008-07-04 |  |  |  |
| 330 | Draft Test Plan and Test Cases | 10d | 2008-06-03 | 2008-06-16 | 295 |  |  |
| 331 | Deliverable: Initial System Test Plan | 1d | 2008-06-17 | 2008-06-17 | 330 |  |  |
| 332 | Test Plan and Test Cases Enhancement | 10d | 2008-06-20 | 2008-07-03 | 328 |  |  |
| 333 | Deliverable: System Test Plan | 1d | 2008-07-04 | 2008-07-04 | 332 |  |  |
| 334 | **Construction** | 25d | 2008-06-10 | 2008-07-14 |  |  |  |
| 335 | UCUM Constructor Implementation | 15d | 2008-06-10 | 2008-06-30 | 325 |  |  |
| 336 | UCUM Validator Implementation | 15d | 2008-06-10 | 2008-06-30 | 325 |  |  |
| 337 | UCUM Terminology Brower Implementation | 15d | 2008-06-10 | 2008-06-30 | 325 |  |  |
| 338 | Unit of Measure Mapping and Conversion Tool Implementation | 15d | 2008-06-10 | 2008-06-30 | 325 |  |  |
| 339 | UCUM Conversion tool Implementation | 15d | 2008-06-10 | 2008-06-30 | 325 |  |  |
| 340 | UCUM Java APIs and Web Services Implementation | 15d | 2008-06-10 | 2008-06-30 | 325 |  |  |
| 341 | UCUM SDK Internal integration Testing | 10d | 2008-07-01 | 2008-07-14 | 335 |  |  |
| 342 | **Transition** | 25d | 2008-07-15 | 2008-08-18 |  |  |  |
| 343 | **Deploy To QA Server - Integration Testing** | 8d | 2008-07-15 | 2008-07-24 |  |  |  |
| 344 | Deploy to QA server for integration testing | 1d | 2008-07-15 | 2008-07-15 | 334 |  |  |
| 345 | Execute all test cases | 7d | 2008-07-16 | 2008-07-24 | 344 |  |  |
| 346 | **Deploy To QA Server- System testing** | 8d | 2008-07-25 | 2008-08-05 |  |  |  |
| 347 | Deploy to QA server for System testing | 1d | 2008-07-25 | 2008-07-25 | 343 |  |  |
| 348 | Execute all test cases | 6d | 2008-07-28 | 2008-08-04 | 347 |  |  |
| 349 | Deliverable: QA Test Results | 1d | 2008-08-05 | 2008-08-05 | 348 |  |  |
| 350 | **Deploy to Staging Server** | 8d | 2008-08-06 | 2008-08-15 |  |  |  |
| 351 | Deploy to Staging server | 1d | 2008-08-06 | 2008-08-06 | 346 |  |  |
| 352 | Execute all test cases | 7d | 2008-08-07 | 2008-08-15 | 351 |  |  |
| 353 | **Support User Acceptance Test** | 7d | 2008-08-07 | 2008-08-15 |  |  |  |
| 354 | UAT Testing | 7d | 2008-08-07 | 2008-08-15 | 351 |  |  |
| 355 | Deliverable: UAT Test Results | 1d | 2008-08-18 | 2008-08-18 | 354 |  |  |
| 356 | **Documentation** | 17d | 2008-08-06 | 2008-08-28 |  |  |  |
| 357 | Update Requirements | 10d | 2008-08-06 | 2008-08-19 | 346 |  |  |
| 358 | Deliverable: Requirements | 1d | 2008-08-20 | 2008-08-20 | 357 | start no earlier than 2005-04-08 |  |
| 359 | Update Users Guide | 10d | 2008-08-06 | 2008-08-19 | 346 |  |  |
| 360 | Deliverable: Users Guide | 1d | 2008-08-20 | 2008-08-20 | 359 | start no earlier than 2005-04-08 |  |
| 361 | Update Design Document | 10d | 2008-08-06 | 2008-08-19 | 346 |  |  |
| 362 | Deliverable: Design Document | 1d | 2008-08-20 | 2008-08-20 | 361 | start no earlier than 2005-04-08 |  |
| 363 | Update Installation Guide | 10d | 2008-08-06 | 2008-08-19 | 346 |  |  |
| 364 | Deliverable: Installation Guide | 1d | 2008-08-20 | 2008-08-20 | 363 | start no earlier than 2005-04-08 |  |
| 365 | Update Readme | 1d | 2008-08-21 | 2008-08-21 | 360 | start no earlier than 2005-12-19 |  |
| 366 | Update Release Note | 1d | 2008-08-21 | 2008-08-21 | 364 | start no earlier than 2005-12-19 |  |
| 367 | Update Press Release | 1d | 2008-08-22 | 2008-08-22 | 366 | start no earlier than 2005-12-19 |  |
| 368 | Update the Website content | 1d | 2008-08-25 | 2008-08-25 | 367 |  |  |
| 369 | Update Mapping Tool Help System Text | 1d | 2008-08-26 | 2008-08-26 | 368 |  |  |
| 370 | Prepare final download package | 1d | 2008-08-27 | 2008-08-27 | 358, 360, 362, 364, 369 |  |  |
| 371 | Deliverable: Packaged Iteration | 1d | 2008-08-28 | 2008-08-28 | 370 |  |  |
| 372 | Deliverable: Production System | 1d | 2008-08-29 | 2008-08-29 | 371 |  |  |

Removed: 207 Enhance Test Plan and Test Cases; 208 Deliverable - Final Test Plan; 286 1st Iteration

Changed:

| ID | Task | Start | Finish | Duration | Complete | Total float | Other |
| --- | --- | --- | --- | --- | --- | --- | --- |
| 184 | **caAdapter - TDMS Module Tasks** | 2007-01-16 A → 2007-11-28 A (+316d) |  | 309d? → 83d? | 25% → 28% |  |  |
| 197 | **2nd Iteration** | 2007-01-16 → 2008-01-07 (+356d) |  | 309d? → 55d? |  |  |  |
| 204 | **QA Test Plan and Test Cases** | 2007-01-16 → 2008-01-28 (+377d) |  | 274d → 5d |  |  |  |
| 233 | **caAdapter - GME Module Tasks** |  |  |  | 6% → 12% |  |  |
| 234 | **1st Iteration** |  |  |  | 15% → 27% |  |  |
| 237 | Develop design Document |  |  |  | 60% → 95% |  |  |
| 241 | Development Week 1 | 2008-01-28 A | 2008-02-01 A |  | 0% → 100% | 200d → none |  |
| 263 | Support QA Test |  |  |  |  |  | resources EW; TBD(1)&2 → EW; TBD(1) |
| 275 | Support QA & Stage Testing |  | 2008-04-18 → 2008-04-11 (-7d) | 10d → 5d |  | 170d → 175d | was named Support QA / Stage and Testing; resources Team → EW; CY |
| 278 | **caAdapter - MMS Module Enhancements** | 2007-11-28 A | 2008-04-18 → 2008-06-13 (+56d) | 103d? → 143d? | 0% → 9% | 170d → 130d |  |
| 279 | Develop Use Case Document for the Enhancements | 2007-11-28 A | 2008-04-18 → 2008-03-07 (-42d) | 103d? → 11d? | 0% → 55% | 170d → 165d | was named Flesh Out the Requrements for Enhancements; resources none → CY |
| 293 | **caAdapter - UCUM SDK Development** | 2008-03-17 → 2008-05-05 (+49d) |  | 195d? → 160d? |  |  |  |

## Version 7 (saved 2008-02-12)

Note of the change: *** empty log message ***

Last finish stays 2008-12-12.

Changed:

| ID | Task | Start | Complete | Other |
| --- | --- | --- | --- | --- |
| 233 | **caAdapter - GME Module Tasks** |  | 12% → 16% |  |
| 234 | **1st Iteration** |  | 27% → 37% |  |
| 243 | Development Weeks 2 & 3 | 2008-02-04 A | 0% → 50% |  |
| 266 | **caAdapter - Version 4.x Packaging** |  |  | was named caAdapter - Version 4.1 Packaging |
| 267 | Decision Point - Determine what to include in 4.x release |  |  | was named Decision Point - Determine what to include in 4.1 release |
| 270 | Build first 4.x package - no documentation |  |  | was named Build first 4.1 package - no documentation |
| 271 | Deliverable - First v 4.x pakage |  |  | was named Deliverable - First v 4.1 pakage |
| 273 | Build and test second 4.x package - with documentation |  |  | was named Build and test second 4.1 package - with documentation |
| 274 | Deliverable - Second v4.x pakage ready for QA |  |  | was named Deliverable - Second v4.1 pakage ready for QA |
| 276 | Deliverable - v 4.x release |  |  | was named Deliverable - v 4.1 release |

## Version 8 (saved 2008-02-19)

Note of the change: *** empty log message ***

Last finish stays 2008-12-12. Complete tasks 108 → 109.

Added:

| ID | Task | Duration | Start | Finish | Predecessors | Constraint |
| --- | --- | --- | --- | --- | --- | --- |
| 247 | Test with the GME team to include all GME steps | 5d? | 2008-03-03 | 2008-03-07 | 245 | start no earlier than 2008-03-03 |

Changed:

| ID | Task | Start | Finish | Duration | Complete | Total float | Predecessors | Other |
| --- | --- | --- | --- | --- | --- | --- | --- | --- |
| 233 | **caAdapter - GME Module Tasks** |  |  |  | 16% → 20% |  |  |  |
| 234 | **1st Iteration** |  | 2008-03-07 → 2008-03-14 (+7d) | 39d? → 44d? | 37% → 43% | 200d → 195d |  |  |
| 243 | Development Weeks 2 & 3 |  | 2008-02-15 A |  | 50% → 100% | 200d → none |  |  |
| 248 | Deliverable - System Delivered to Q/A | 2008-02-29 → 2008-03-07 (+7d) | 2008-02-29 → 2008-03-07 (+7d) |  |  | 200d → 195d | 245FF, 246 → 247FF, 246 | constraint start no earlier than 2008-02-29 → start no earlier than 2008-03-07 |
| 249 | Support QA Test | 2008-03-03 → 2008-03-10 (+7d) | 2008-03-07 → 2008-03-14 (+7d) |  |  | 200d → 195d |  |  |
| 250 | Deliverable - Deliver to GME Team | 2008-03-07 → 2008-03-14 (+7d) | 2008-03-07 → 2008-03-14 (+7d) |  |  | 200d → 195d |  | was named Deliverable - System ready for Integration Testing with GME team |

## Version 9 (saved 2008-02-26)

Note of the change: *** empty log message ***

Last finish stays 2008-12-12.

Changed:

| ID | Task | Start | Finish | Complete | Total float |
| --- | --- | --- | --- | --- | --- |
| 233 | **caAdapter - GME Module Tasks** |  |  | 20% → 24% |  |
| 234 | **1st Iteration** |  |  | 43% → 53% |  |
| 245 | Development and Testing Weeks 4 & 5 | 2008-02-18 A |  | 0% → 60% | 200d → 195d |
| 246 | Develop Users Guide |  | 2008-02-22 → 2008-02-29 (+7d) |  | 204d → 199d |

## Version 10 (saved 2008-03-04)

Note of the change: *** empty log message ***

Last finish stays 2008-12-12.

Changed:

| ID | Task | Start | Finish | Duration | Complete | Total float | Other |
| --- | --- | --- | --- | --- | --- | --- | --- |
| 233 | **caAdapter - GME Module Tasks** |  |  |  | 24% → 28% |  |  |
| 234 | **1st Iteration** |  | 2008-03-14 → 2008-03-17 (+3d) | 44d? → 45d? | 53% → 60% | 195d → 194d |  |
| 245 | Development and Testing Weeks 4 & 5 |  | 2008-02-29 → 2008-03-06 (+6d) | 10d → 14d | 60% → 71% |  | constraint none → finish no earlier than 2008-03-06 |
| 246 | Develop Users Guide |  | 2008-02-29 → 2008-03-07 (+7d) |  |  | 199d → 194d |  |
| 247 | Test with the GME team to include all GME steps | 2008-03-03 → 2008-03-10 (+7d) | 2008-03-07 → 2008-03-10 (+3d) | 5d? → 1d |  | 195d → 194d | constraint start no earlier than 2008-03-03 → start no earlier than 2008-03-08 |
| 248 | Deliverable - System Delivered to Q/A | 2008-03-07 → 2008-03-10 (+3d) | 2008-03-07 → 2008-03-10 (+3d) |  |  | 195d → 194d |  |
| 249 | Support QA Test | 2008-03-10 → 2008-03-11 (+1d) | 2008-03-14 → 2008-03-17 (+3d) |  |  | 195d → 194d |  |
| 250 | Deliverable - Deliver to GME Team | 2008-03-14 → 2008-03-17 (+3d) | 2008-03-14 → 2008-03-17 (+3d) |  |  | 195d → 194d |  |
