# HL7_SDK_plan_3_23

How a schedule from MS Project changed from version to version. A marks actual dates.

## Version 1 (saved 2007-04-05)

Note of the change: caAdapter 3.3 - 4.0 project plan

| ID | WBS | Task | Duration | Start | Finish | Predecessors | Complete | Total float | Constraint |
| --- | --- | --- | --- | --- | --- | --- | --- | --- | --- |
| 1 | 1 | **Perform Project Management Activities** | 23d | 2007-01-16 | 2007-02-15 |  |  | 1d |  |
| 2 |  | Draft Scope Document | 10d | 2007-01-16 | 2007-01-29 |  |  | 1d | start no earlier than 2007-01-16 |
| 3 |  | Deliverable: Scope Document | 1d | 2007-01-30 | 2007-01-30 | 2 |  | 123d | start no earlier than 2005-06-14 |
| 4 |  | Draft Initial Project Plan | 5d | 2007-01-31 | 2007-02-06 | 3 |  | 123d |  |
| 5 |  | Deliverable: Project Plan | 1d | 2007-02-07 | 2007-02-07 | 4 |  | 123d |  |
| 6 |  | Review Scope Document | 1d | 2007-01-30 | 2007-01-30 | 2 |  | 117d |  |
| 7 |  | Draft System Requirment Document | 10d | 2007-01-31 | 2007-02-13 | 6 |  | 117d |  |
| 8 |  | Deliverable: System Requirment Document | 1d | 2007-02-14 | 2007-02-14 | 7 |  | 117d |  |
| 9 |  | Revise and submit project plan to Gforge | 1d | 2007-02-15 | 2007-02-15 | 8 |  | 117d |  |
| 10 | 2 | **caBIG Annual Meeting** | 17d | 2007-01-16 A | 2007-02-07 A |  | 100% |  |  |
| 11 |  | Poster | 2d | 2007-01-16 A | 2007-01-17 A |  | 100% |  | start no earlier than 2007-01-16 |
| 12 |  | Tech Demo | 2d | 2007-01-18 A | 2007-01-19 A | 11 | 100% |  | start no earlier than 2007-01-16 |
| 13 |  | Hack-a-Thon | 2d | 2007-01-22 A | 2007-01-23 A | 12 | 100% |  | start no earlier than 2007-01-16 |
| 14 |  | caBIG annual meeting | 3d | 2007-02-05 A | 2007-02-07 A | 13 | 100% |  | start no earlier than 2007-01-16 |
| 15 | 3 | **caAdapter Training (please refer to the training project plan)** | 71d? | 2007-01-22 | 2007-04-30 |  |  | 65d |  |
| 16 |  | Model Mapping Service | 8d? | 2007-01-22 | 2007-01-31 |  |  | 85d | finish no earlier than 2007-01-31 |
| 17 |  | caAdapter cvs to HL7 V3 transformation service training II | 20d? | 2007-02-01 | 2007-02-28 | 16 |  | 85d | finish no earlier than 2007-02-28 |
| 18 |  | caAdapter HL7 v2 to HL7 v3 transformation service training | 22d? | 2007-03-01 | 2007-03-30 | 17 |  | 85d | finish no earlier than 2007-03-30 |
| 19 |  | caAdapter cvs toSDTM transformation service training | 1d? | 2007-04-30 | 2007-04-30 | 18 |  | 65d | finish no earlier than 2007-04-30 |
| 20 | 4 | **caAdapter V3.3 tasks** | 53d | 2007-02-08 A | 2007-04-23 |  | 54% | 29d |  |
| 21 | 4.1 | **Inception** | 19d | 2007-02-08 A | 2007-03-06 A |  | 100% |  |  |
| 22 |  | Requirement gathering and analysis | 10d | 2007-02-08 A | 2007-02-21 A |  | 100% |  | start no earlier than 2007-02-08 |
| 23 |  | Draft use cases for model mapping service enhancement (Task 4) | 8d | 2007-02-22 A | 2007-03-05 A | 22 | 100% |  | start no earlier than 2007-02-22 |
| 24 |  | Deliverable: Use Cases | 1d | 2007-03-06 A | 2007-03-06 A | 23 | 100% |  | finish no earlier than 2006-07-04 |
| 25 | 4.2 | **Elaboration** | 17d | 2007-03-07 A | 2007-03-29 |  | 15% | 46d |  |
| 26 |  | Draft design document for model mapping service enhancement (Task 4) | 5d | 2007-03-07 A | 2007-03-13 | 21 | 50% | 44.2d | start no earlier than 2007-02-27 |
| 27 |  | Deliverable: Design Doc | 1d | 2007-03-14 | 2007-03-14 | 26 |  | 44.2d |  |
| 28 |  | Draft Test Plan and Test Cases | 10d | 2007-03-15 | 2007-03-28 | 27 |  | 46d |  |
| 29 |  | Deliverable: System Test Plan | 1d | 2007-03-29 | 2007-03-29 | 28 |  | 46d |  |
| 30 | 4.3 | **model mapping service enhancement (Task 4) development** | 16d | 2007-03-15 A | 2007-04-05 |  | 95% | 29d |  |
| 31 |  | Retrieval of tag values from .xmi files (task 4(d)) | 10d | 2007-03-15 A | 2007-03-28 | 27 | 95% | 34.7d |  |
| 32 |  | UI enhancement for MMS (task 4(d)) | 3d | 2007-03-29 A | 2007-04-02 | 31 | 95% | 31.85d |  |
| 33 |  | System integration testing (task 4(d)) | 3d | 2007-04-03 A | 2007-04-05 | 32 | 95% | 29d |  |
| 34 | 4.4 | **Transition** | 6d | 2007-04-06 | 2007-04-13 |  |  | 29d |  |
| 35 |  | QA System testing - Model Mapping Service | 3d | 2007-04-06 | 2007-04-10 | 30 |  | 29d |  |
| 36 |  | Staging System testing | 3d | 2007-04-11 | 2007-04-13 | 35 |  | 29d |  |
| 37 | 4.5 | **Documentation** | 6d | 2007-04-16 | 2007-04-23 |  |  | 29d |  |
| 38 |  | Update Requirements | 0.3d | 2007-04-16 | 2007-04-16 | 36 |  | 29d |  |
| 39 |  | Deliverable: Requirements | 0.2d | 2007-04-16 | 2007-04-16 | 38 |  | 29d | start no earlier than 2005-04-08 |
| 40 |  | Update Users Guide | 1d | 2007-04-16 | 2007-04-17 | 39 |  | 29d |  |
| 41 |  | Deliverable: Users Guide | 0.5d | 2007-04-17 | 2007-04-17 | 40 |  | 29d | start no earlier than 2005-04-08 |
| 42 |  | Update Design Document | 0.3d | 2007-04-18 | 2007-04-18 | 41 |  | 29d |  |
| 43 |  | Deliverable: Design Document | 0.2d | 2007-04-18 | 2007-04-18 | 42 |  | 29d | start no earlier than 2005-04-08 |
| 44 |  | Update Installation Guide | 0.3d | 2007-04-18 | 2007-04-18 | 43 |  | 29d |  |
| 45 |  | Deliverable: Installation Guide | 0.2d | 2007-04-18 | 2007-04-18 | 44 |  | 29d | start no earlier than 2005-04-08 |
| 46 |  | Update Readme | 1d | 2007-04-19 | 2007-04-19 | 45 |  | 31d | start no earlier than 2005-12-19 |
| 47 |  | Update Release Note | 1d | 2007-04-19 | 2007-04-19 | 45 |  | 31d | start no earlier than 2005-12-19 |
| 48 |  | Update Press Release | 1d | 2007-04-19 | 2007-04-19 | 45 |  | 31d | start no earlier than 2005-12-19 |
| 49 |  | Update the Website content | 1d | 2007-04-19 | 2007-04-19 | 45 |  | 31d |  |
| 50 |  | Update Mapping Tool Help System Text | 1d | 2007-04-19 | 2007-04-19 | 45 |  | 29d |  |
| 51 |  | Prepare final download package | 1d | 2007-04-20 | 2007-04-20 | 50 |  | 29d |  |
| 52 |  | Deliverable: Packaged Iteration | 1d | 2007-04-23 | 2007-04-23 | 51 |  | 29d |  |
| 53 | 5 | **caAdapter V3.4 tasks** | 41d | 2007-04-24 | 2007-06-19 |  |  | 29d |  |
| 54 | 5.1 | **Inception** | 7d | 2007-04-24 | 2007-05-02 |  |  | 29d |  |
| 55 |  | Requirement gathering and analysis | 3d | 2007-04-24 | 2007-04-26 | 20 |  | 29d | start no earlier than 2007-02-08 |
| 56 |  | Draft use cases for model mapping service enhancement (Task 4) | 3d | 2007-04-27 | 2007-05-01 | 55 |  | 29d | start no earlier than 2007-02-22 |
| 57 |  | Deliverable: Use Cases | 1d | 2007-05-02 | 2007-05-02 | 56 |  | 29d | finish no earlier than 2006-07-04 |
| 58 | 5.2 | **Elaboration** | 17d | 2007-05-03 | 2007-05-25 |  |  | 29d |  |
| 59 |  | Draft design document for model mapping service enhancement (Task 4) | 5d | 2007-05-03 | 2007-05-09 | 54 |  | 29d | start no earlier than 2007-02-27 |
| 60 |  | Deliverable: Design Doc | 1d | 2007-05-10 | 2007-05-10 | 59 |  | 29d |  |
| 61 |  | Draft Test Plan and Test Cases | 10d | 2007-05-11 | 2007-05-24 | 60 |  | 46d |  |
| 62 |  | Deliverable: System Test Plan | 1d | 2007-05-25 | 2007-05-25 | 61 |  | 46d |  |
| 63 | 5.3 | **model mapping service enhancement (Task 4) development** | 15d | 2007-05-11 | 2007-05-31 |  |  | 29d |  |
| 64 |  | XML meta loader (task 4(f)) | 3d | 2007-05-11 | 2007-05-15 | 60 |  | 29d |  |
| 65 |  | Object to Object mapping (task 4(f)) | 10d | 2007-05-16 | 2007-05-29 | 64 |  | 29d |  |
| 66 |  | System integration testing (task 4(d)) | 2d | 2007-05-30 | 2007-05-31 | 65 |  | 29d |  |
| 67 | 5.4 | **Transition** | 5d | 2007-06-01 | 2007-06-07 |  |  | 29d |  |
| 68 |  | QA System testing - Model Mapping Service | 3d | 2007-06-01 | 2007-06-05 | 63 |  | 29d |  |
| 69 |  | Staging System testing | 2d | 2007-06-06 | 2007-06-07 | 68 |  | 29d |  |
| 70 | 5.5 | **Documentation** | 8d | 2007-06-08 | 2007-06-19 |  |  | 29d |  |

| ID | WBS | Task | Duration | Start | Finish | Predecessors | Complete | Total float | Constraint |
| --- | --- | --- | --- | --- | --- | --- | --- | --- | --- |
| 71 |  | Update Requirements | 0.3d | 2007-06-08 | 2007-06-08 | 69 |  | 29d |  |
| 72 |  | Deliverable: Requirements | 0.2d | 2007-06-08 | 2007-06-08 | 71 |  | 29d | start no earlier than 2005-04-08 |
| 73 |  | Update Users Guide | 3d | 2007-06-08 | 2007-06-13 | 72 |  | 29d |  |
| 74 |  | Deliverable: Users Guide | 0.5d | 2007-06-13 | 2007-06-13 | 73 |  | 29d | start no earlier than 2005-04-08 |
| 75 |  | Update Design Document | 0.3d | 2007-06-14 | 2007-06-14 | 74 |  | 29d |  |
| 76 |  | Deliverable: Design Document | 0.2d | 2007-06-14 | 2007-06-14 | 75 |  | 29d | start no earlier than 2005-04-08 |
| 77 |  | Update Installation Guide | 0.3d | 2007-06-14 | 2007-06-14 | 76 |  | 29d |  |
| 78 |  | Deliverable: Installation Guide | 0.2d | 2007-06-14 | 2007-06-14 | 77 |  | 29d | start no earlier than 2005-04-08 |
| 79 |  | Update Readme | 1d | 2007-06-15 | 2007-06-15 | 78 |  | 31d | start no earlier than 2005-12-19 |
| 80 |  | Update Release Note | 1d | 2007-06-15 | 2007-06-15 | 78 |  | 31d | start no earlier than 2005-12-19 |
| 81 |  | Update Press Release | 1d | 2007-06-15 | 2007-06-15 | 78 |  | 31d | start no earlier than 2005-12-19 |
| 82 |  | Update the Website content | 1d | 2007-06-15 | 2007-06-15 | 78 |  | 31d |  |
| 83 |  | Update Mapping Tool Help System Text | 1d | 2007-06-15 | 2007-06-15 | 78 |  | 29d |  |
| 84 |  | Prepare final download package | 1d | 2007-06-18 | 2007-06-18 | 83 |  | 29d |  |
| 85 |  | Deliverable: Packaged Iteration | 1d | 2007-06-19 | 2007-06-19 | 84 |  | 29d |  |
| 86 | 6 | **caAdapter V4.0 tasks** | 140d | 2007-01-16 A | 2007-07-30 |  | 17% | 0d |  |
| 87 | 6.1 | **Iteration 1 - caAdapter mapping tool set** | 140d | 2007-01-16 A | 2007-07-30 |  | 17% | 0d |  |
| 88 | 6.1.1 | **caAdapter code base enhancement (Task 8)** | 25d | 2007-01-16 A | 2007-02-19 |  | 99% | 115d |  |
| 89 |  | caAdapter code base enhancement analysis | 5d | 2007-01-16 A | 2007-01-22 A |  | 100% |  | start no earlier than 2007-01-16 |
| 90 |  | caAdapter code base enhancement design | 5d | 2007-01-23 A | 2007-01-29 A | 89 | 100% |  | start no earlier than 2007-01-16 |
| 91 |  | caAdapter code base enhancement review | 5d | 2007-01-30 A | 2007-02-05 A | 90 | 100% |  | start no earlier than 2007-01-16 |
| 92 | 6.1.1.4 | **caAdapter code base enhancement implementation** | 10d | 2007-02-06 A | 2007-02-19 |  | 98% | 115d |  |
| 93 |  | caAdapter code base enhancement UI implementation | 5d | 2007-02-06 A | 2007-02-12 A | 91 | 100% |  | start no earlier than 2007-01-16 |
| 94 |  | caAdapter code base enhancement - service layer implementation | 5d | 2007-02-13 A | 2007-02-19 | 93 | 95% | 115d | start no earlier than 2007-01-16 |
| 95 | 6.1.2 | **Inception** | 19d | 2007-02-08 A | 2007-03-06 |  | 57% | 104d |  |
| 96 |  | Requirement gathering and analysis | 10d | 2007-02-08 | 2007-02-21 | 14 |  | 0d | start no earlier than 2007-02-08 |
| 97 |  | Draft use cases for csv/database to SDTM transformation service enhancement (Task 1) | 8d | 2007-02-22 A | 2007-03-05 A | 96 | 100% |  | start no earlier than 2007-02-22 |
| 98 |  | Draft use cases for csv to HL7 v3 transformation service enhancement (Task 2) | 8d | 2007-02-22 A | 2007-03-05 A | 96 | 100% |  | start no earlier than 2007-02-22 |
| 99 |  | Draft use cases for HL7 v2 to HL7 v3 transformation service enhancement (Task 3) | 8d | 2007-02-22 A | 2007-03-05 | 96 | 80% | 105d | start no earlier than 2007-02-22 |
| 100 |  | Draft use cases for model mapping service enhancement (Task 4) | 8d | 2007-02-22 A | 2007-03-05 A | 96 | 100% |  | start no earlier than 2007-02-22 |
| 101 |  | Draft use cases for vocabulary mapping service (Task 6) | 8d | 2007-02-22 A | 2007-03-05 A | 96 | 100% |  | start no earlier than 2007-02-22 |
| 102 |  | Draft use cases caAdapter Web Services (Task 7) | 8d | 2007-02-22 | 2007-03-05 | 96 |  | 105d | start no earlier than 2007-02-22 |
| 103 |  | Draft use cases forHL7 v3 to csv transformation service enhancement (Task 9) | 8d | 2007-02-22 | 2007-03-05 | 96 |  | 0d | start no earlier than 2007-02-22 |
| 104 |  | Deliverable: Use Cases | 1d | 2007-03-06 | 2007-03-06 | 103 |  | 0d | finish no earlier than 2006-07-04 |
| 105 | 6.1.3 | **Elaboration** | 13d | 2007-03-07 A | 2007-03-23 | 104 | 44% | 0d |  |
| 106 |  | Draft design document for csv/database to SDTM transformation service enhancement (Task 1) | 13d | 2007-03-07 A | 2007-03-23 A |  | 100% |  | start no earlier than 2007-02-27 |
| 107 |  | Draft design document for csv to HL7 v3 transformation service enhancement (Task 2) | 13d | 2007-03-07 A | 2007-03-23 A |  | 100% |  | start no earlier than 2007-02-27 |
| 108 |  | Draft design document for HL7 v2 to HL7 v3 transformation service enhancement (Task 3) | 13d | 2007-03-07 A | 2007-03-23 |  | 50% | 0d | start no earlier than 2007-02-27 |
| 109 |  | Draft design document for model mapping service enhancement (Task 4) | 13d | 2007-03-07 A | 2007-03-23 |  | 50% | 0d | start no earlier than 2007-02-27 |
| 110 |  | Draft design document for vocabulary mapping service (Task 6) | 13d | 2007-03-07 A | 2007-03-23 |  | 50% | 0d | start no earlier than 2007-02-27 |
| 111 |  | Draft design document caAdapter Web Services (Task 7) | 13d | 2007-03-07 | 2007-03-23 |  |  | 0d | start no earlier than 2007-02-27 |
| 112 |  | Draft design document forHL7 v3 to csv transformation service enhancement (Task 9) | 13d | 2007-03-07 | 2007-03-23 |  |  | 0d | start no earlier than 2007-02-27 |
| 113 |  | Deliverable: Design Doc | 1d | 2007-03-07 | 2007-03-07 |  |  | 12d |  |
| 114 |  | Draft Test Plan and Test Cases | 10d | 2007-03-07 | 2007-03-20 | 104 |  | 2d |  |
| 115 |  | Deliverable: System Test Plan | 1d | 2007-03-21 | 2007-03-21 | 114 |  | 2d |  |
| 116 | 6.1.4 | **Construction** | 50d | 2007-03-26 A | 2007-06-01 | 105 | 17% | 0d |  |
| 117 | 6.1.4.1 | **csv/database to SDTM transformation service enhancement (Task 1) development** | 50d | 2007-03-26 A | 2007-06-01 |  | 20% | 0d |  |
| 118 |  | Database/CTOM object model to SDTM mapping (task 1(a)) | 20d | 2007-03-26 A | 2007-04-20 |  | 50% | 0d |  |
| 119 |  | SDTM API (task 1( c )) | 15d | 2007-04-23 | 2007-05-11 | 118 |  | 0d |  |
| 120 |  | SDTM web services (task 1(d)) | 15d | 2007-05-14 | 2007-06-01 | 119 |  | 0d |  |
| 121 | 6.1.4.2 | **csv to HL7 v3 transformation service enhancement (Task 2) development** | 50d | 2007-03-26 A | 2007-06-01 |  | 40% | 0d |  |
| 122 |  | HL7 v3 Datatype parser (task 2(a)) | 10d | 2007-03-26 A | 2007-04-06 A |  | 100% |  |  |
| 123 |  | HL7 v3 Mif parser (task 2(a)) | 10d | 2007-04-09 A | 2007-04-20 A | 122 | 100% |  |  |
| 124 |  | csv to HL7 v3 transformation service enhancement (task 2(a)) | 20d | 2007-04-23 | 2007-05-18 | 123 |  | 0d |  |
| 125 |  | csv to HL7 v3 UI enhancement | 10d | 2007-05-21 | 2007-06-01 | 124 |  | 0d |  |
| 126 |  | HL7 v2 to HL7 v3 transformation service enhancement (Task 3) development | 50d | 2007-03-26 | 2007-06-01 |  |  | 0d | start no earlier than 2007-02-27 |
| 127 | 6.1.4.4 | **model mapping service enhancement (Task 4) development** | 20d | 2007-03-26 A | 2007-04-20 |  | 50% | 30d |  |
| 128 |  | Direct database retrieval (task 4 -c) | 10d | 2007-03-26 A | 2007-04-06 A |  | 100% |  |  |
| 129 |  | Enhanced integration with caCORE SDK (task 4(e)) | 10d | 2007-04-09 | 2007-04-20 | 128 |  | 30d |  |
| 130 |  | vocabulary mapping service (Task 6) development | 20d | 2007-03-26 A | 2007-04-20 |  | 20% | 30d | start no earlier than 2007-02-27 |
| 131 |  | caAdapter Web Services (Task 7) development | 20d | 2007-03-26 | 2007-04-20 |  |  | 30d | start no earlier than 2007-02-27 |
| 132 | 6.1.4.7 | **HL7 v3 to csv transformation service enhancement (Task 9) development** | 40d | 2007-03-26 | 2007-05-18 |  |  | 0d |  |
| 133 |  | HL7 v3 message parser | 10d | 2007-03-26 | 2007-04-06 |  |  | 0d |  |
| 134 |  | HL7 v3 message to csv transformer | 20d | 2007-04-09 | 2007-05-04 | 133 |  | 0d |  |
| 135 |  | HL7 v3 to csv tranformation report | 10d | 2007-05-07 | 2007-05-18 | 134 |  | 0d |  |
| 136 |  | caAdapter product packaging | 10d | 2007-05-21 | 2007-06-01 | 135 |  | 0d |  |
| 137 | 2.1.5 | **Transition** | 39d | 2007-06-04 | 2007-07-26 | 116 |  | 0d |  |
| 138 | 2.1.5.1 | **Deploy To QA Server - Integration Testing, Test, and Resolve Defects** | 11d | 2007-06-04 | 2007-06-18 | 116 |  | 0d |  |
| 139 |  | Deploy to QA server for integration testing | 1d | 2007-06-04 | 2007-06-04 | 116 |  | 0d |  |
| 140 |  | Execute csv/database to SDTM transformation service enhancement (Task 1) test cases | 5d | 2007-06-05 | 2007-06-11 | 139 |  | 5d | start no earlier than 2007-02-27 |

| ID | WBS | Task | Duration | Start | Finish | Predecessors | Total float | Constraint |
| --- | --- | --- | --- | --- | --- | --- | --- | --- |
| 141 |  | Execute csv to HL7 v3 transformation service enhancement (Task 2) test cases | 5d | 2007-06-05 | 2007-06-11 | 139 | 5d | start no earlier than 2007-02-27 |
| 142 |  | Execute HL7 v2 to HL7 v3 transformation service enhancement (Task 3) test cases | 5d | 2007-06-05 | 2007-06-11 | 139 | 5d | start no earlier than 2007-02-27 |
| 143 |  | Execute model mapping service enhancement (Task 4) test cases | 5d | 2007-06-05 | 2007-06-11 | 139 | 5d | start no earlier than 2007-02-27 |
| 144 |  | Execute vocabulary mapping service (Task 6) test cases | 5d | 2007-06-05 | 2007-06-11 | 139 | 5d | start no earlier than 2007-02-27 |
| 145 |  | Execute caAdapter Web Services (Task 7) test cases | 5d | 2007-06-05 | 2007-06-11 | 139 | 5d | start no earlier than 2007-02-27 |
| 146 |  | Execute HL7 v3 to csv transformation service enhancement (Task 9) test cases | 5d | 2007-06-05 | 2007-06-11 | 139 | 0d | start no earlier than 2007-02-27 |
| 147 |  | Execute all test cases | 5d | 2007-06-12 | 2007-06-18 | 146 | 0d |  |
| 148 | 2.1.5.1 | **Deploy To QA Server- System testing, Test, and Resolve Defects** | 11d | 2007-06-19 | 2007-07-03 |  | 0d |  |
| 149 |  | Deploy to QA server for System testing | 1d | 2007-06-19 | 2007-06-19 | 138 | 0d |  |
| 150 |  | Execute csv/database to SDTM transformation service enhancement (Task 1) test cases | 5d | 2007-06-20 | 2007-06-26 | 149 | 5d | start no earlier than 2007-02-27 |
| 151 |  | Execute csv to HL7 v3 transformation service enhancement (Task 2) test cases | 5d | 2007-06-20 | 2007-06-26 | 149 | 5d | start no earlier than 2007-02-27 |
| 152 |  | Execute HL7 v2 to HL7 v3 transformation service enhancement (Task 3) test cases | 5d | 2007-06-20 | 2007-06-26 | 149 | 5d | start no earlier than 2007-02-27 |
| 153 |  | Execute model mapping service enhancement (Task 4) test cases | 5d | 2007-06-20 | 2007-06-26 | 149 | 5d | start no earlier than 2007-02-27 |
| 154 |  | Execute vocabulary mapping service (Task 6) test cases | 5d | 2007-06-20 | 2007-06-26 | 149 | 5d | start no earlier than 2007-02-27 |
| 155 |  | Execute caAdapter Web Services (Task 7) test cases | 5d | 2007-06-20 | 2007-06-26 | 149 | 5d | start no earlier than 2007-02-27 |
| 156 |  | Execute HL7 v3 to csv transformation service enhancement (Task 9) test cases | 5d | 2007-06-20 | 2007-06-26 | 149 | 0d | start no earlier than 2007-02-27 |
| 157 |  | Execute all test cases | 5d | 2007-06-27 | 2007-07-03 | 156 | 0d |  |
| 158 | 2.1.5.2 | **Deploy to Staging Server, Test, and Resolve Defects** | 11d | 2007-07-04 | 2007-07-18 |  | 1d |  |
| 159 |  | Deploy to Staging server | 1d | 2007-07-04 | 2007-07-04 | 148 | 1d |  |
| 160 |  | Execute csv/database to SDTM transformation service enhancement (Task 1) test cases | 5d | 2007-07-05 | 2007-07-11 | 159 | 7d | start no earlier than 2007-02-27 |
| 161 |  | Execute csv to HL7 v3 transformation service enhancement (Task 2) test cases | 5d | 2007-07-05 | 2007-07-11 | 159 | 7d | start no earlier than 2007-02-27 |
| 162 |  | Execute HL7 v2 to HL7 v3 transformation service enhancement (Task 3) test cases | 5d | 2007-07-05 | 2007-07-11 | 159 | 7d | start no earlier than 2007-02-27 |
| 163 |  | Execute model mapping service enhancement (Task 4) test cases | 5d | 2007-07-05 | 2007-07-11 | 159 | 7d | start no earlier than 2007-02-27 |
| 164 |  | Execute vocabulary mapping service (Task 6) test cases | 5d | 2007-07-05 | 2007-07-11 | 159 | 7d | start no earlier than 2007-02-27 |
| 165 |  | Execute caAdapter Web Services (Task 7) test cases | 5d | 2007-07-05 | 2007-07-11 | 159 | 7d | start no earlier than 2007-02-27 |
| 166 |  | Execute HL7 v3 to csv transformation service enhancement (Task 9) test cases | 5d | 2007-07-05 | 2007-07-11 | 159 | 2d | start no earlier than 2007-02-27 |
| 167 |  | Execute all test cases | 5d | 2007-07-12 | 2007-07-18 | 166 | 2d |  |
| 168 |  | Perform Reggression, Performance Testing, and Resolve Defects | 5d | 2007-07-19 | 2007-07-25 | 158 | 2d |  |
| 169 |  | Deliverable: Test Results | 1d | 2007-07-26 | 2007-07-26 | 168 | 2d | start no earlier than 2005-04-08 |
| 170 | 6.1.6 | **Documentation** | 17d | 2007-07-04 | 2007-07-26 |  | 0d |  |
| 171 |  | Update Requirements | 10d | 2007-07-04 | 2007-07-17 | 148 | 4d |  |
| 172 |  | Deliverable: Requirements | 1d | 2007-07-18 | 2007-07-18 | 171 | 4d | start no earlier than 2005-04-08 |
| 173 |  | Update Users Guide | 10d | 2007-07-04 | 2007-07-17 | 148 | 4d |  |
| 174 |  | Deliverable: Users Guide | 1d | 2007-07-18 | 2007-07-18 | 173 | 4d | start no earlier than 2005-04-08 |
| 175 |  | Update Design Document | 10d | 2007-07-04 | 2007-07-17 | 148 | 4d |  |
| 176 |  | Deliverable: Design Document | 1d | 2007-07-18 | 2007-07-18 | 175 | 4d | start no earlier than 2005-04-08 |
| 177 |  | Update Installation Guide | 10d | 2007-07-04 | 2007-07-17 | 148 | 0d |  |
| 178 |  | Deliverable: Installation Guide | 1d | 2007-07-18 | 2007-07-18 | 177 | 0d | start no earlier than 2005-04-08 |
| 179 |  | Update Readme | 1d | 2007-07-19 | 2007-07-19 | 174 | 7d | start no earlier than 2005-12-19 |
| 180 |  | Update Release Note | 1d | 2007-07-19 | 2007-07-19 | 178 | 0d | start no earlier than 2005-12-19 |
| 181 |  | Update Press Release | 1d | 2007-07-20 | 2007-07-20 | 180 | 0d | start no earlier than 2005-12-19 |
| 182 |  | Update the Website content | 1d | 2007-07-23 | 2007-07-23 | 181 | 0d |  |
| 183 |  | Update Mapping Tool Help System Text | 1d | 2007-07-24 | 2007-07-24 | 182 | 0d |  |
| 184 |  | Prepare final download package | 1d | 2007-07-25 | 2007-07-25 | 172, 174, 176, 178, 183 | 0d |  |
| 185 |  | Deliverable: Packaged Iteration | 1d | 2007-07-26 | 2007-07-26 | 184 | 0d |  |
| 186 | 2.1.7 | **Support User Acceptance Test** | 15d | 2007-07-05 | 2007-07-25 |  | 1d |  |
| 187 |  | UAT Testing | 15d | 2007-07-05 | 2007-07-25 | 159 | 1d |  |
| 188 |  | Project Manager Activities | 129d | 2007-01-30 | 2007-07-27 | 2 | 1d | finish no earlier than 2006-12-21 |
| 189 |  | Product support | 129d | 2007-01-30 | 2007-07-27 | 2 | 1d | finish no earlier than 2006-12-21 |
| 190 |  | Deploy to Production | 1d | 2007-07-27 | 2007-07-27 | 186, 158, 185 | 0d |  |
| 191 |  | Deliverable: Production System | 1d | 2007-07-30 | 2007-07-30 | 190 | 0d | start no earlier than 2005-04-08 |

## Version 2 (saved 2007-05-01)

Note of the change: updated timeline

Last finish 2007-07-30 → 2007-09-24 (+56d). Complete tasks 20 → 32.

Added:

| ID | Task | Duration | Start | Finish | Predecessors | Constraint | Resources |
| --- | --- | --- | --- | --- | --- | --- | --- |
| 44 | **caAdapter V3.2.0.2 tasks** | 48d | 2007-05-02 | 2007-07-06 |  |  |  |
| 102 | Deliverable: Initial Design Doc | 1d | 2007-04-25 A | 2007-04-25 | 101 |  | Harsha; Ki-Sung; Ye; Eugene |
| 103 | Design Review | 5d | 2007-04-26 | 2007-05-02 | 102 |  | Harsha; Ki-Sung; Ye; Eugene; QA |
| 104 | Design enhancement | 5d | 2007-05-03 | 2007-05-09 | 103 |  | Harsha; Ki-Sung; Wendy; Ye; Eugene |
| 106 | **QA Draft Test Plan and Test Cases** | 32d | 2007-05-11 | 2007-06-25 |  |  | QA |
| 108 | Deliverable: Initial System Test Plan | 1d | 2007-06-01 | 2007-06-01 | 107 |  | QA |
| 109 | Test Plan and Test Cases Enhancement | 15d | 2007-06-04 | 2007-06-22 | 108 |  | QA |
| 114 | Query Builder (task 1(a)) | 10d | 2007-05-25 | 2007-06-07 | 113 |  | Harsha |
| 122 | **HL7 v2 to HL7 v3 transformation service enhancement (Task 3) development** | 30d | 2007-05-11 | 2007-06-21 |  |  |  |
| 123 | HL7 v2 H2S Meta data parser | 10d | 2007-05-11 | 2007-05-24 | 105 | start no earlier than 2007-02-27 | Ki-Sung |
| 124 | HL7 v2 H2S to HL7 v3 transformer | 10d | 2007-05-25 | 2007-06-07 | 123 | start no earlier than 2007-02-27 | Ki-Sung |
| 131 | caAdapter product packaging and intial installation testing | 2.4d | 2007-07-06 | 2007-07-10 | 112 |  | Eugene; Ki-Sung; Wendy; Ye; Harsha |
| 133 | Cross-Product Scope Complete | 1d? | 2007-06-01 | 2007-06-01 |  | start no earlier than 2007-06-01 |  |
| 134 | Cross-Product Scope Design Reviews Complete/Approved | 1d? | 2007-06-25 | 2007-06-25 |  | start no earlier than 2007-06-25 |  |
| 135 | Cross-Product Scope Freeze | 1d? | 2007-07-16 | 2007-07-16 |  | start no earlier than 2007-07-16 |  |
| 146 | Intellegent mapping (task 4 -c) | 5d | 2007-07-09 | 2007-07-13 | 44 |  | Nick |
| 147 | Java Web Start | 6d | 2007-07-16 | 2007-07-23 | 146 |  | Nick |
| 160 | Deliverable: QA Test Results | 1d | 2007-08-27 | 2007-08-27 | 159 | start no earlier than 2005-04-08 | Harsha; Ki-Sung; Wendy; Ye; Eugene; QA |
| 161 | Dependent Products Dev Regression Test Complete | 1d? | 2007-08-17 | 2007-08-17 |  | start no earlier than 2007-08-17 |  |
| 162 | Dependent Products QA Regression Complete | 1d? | 2007-08-24 | 2007-08-24 |  | start no earlier than 2007-08-24 |  |

Removed: 15 caAdapter Training (please refer to the training project plan); 16 Model Mapping Service; 17 caAdapter cvs to HL7 V3 transformation service training II; 18 caAdapter HL7 v2 to HL7 v3 transformation service training; 19 caAdapter cvs toSDTM transformation service training; 47 Update Release Note; 48 Update Press Release; 49 Update the Website content; 50 Update Mapping Tool Help System Text; 53 caAdapter V3.4 tasks; 100 Draft use cases for model mapping service enhancement (Task 4); 109 Draft design document for model mapping service enhancement (Task 4); 128 Direct database retrieval (task 4 -c); 129 Enhanced integration with caCORE SDK (task 4(e)); 131 caAdapter Web Services (Task 7) development; 168 Perform Reggression, Performance Testing, and Resolve Defects; 188 Project Manager Activities; 189 Product support

Changed:

| ID | Task | Start | Finish | Duration | Complete | Total float | Predecessors | Other |
| --- | --- | --- | --- | --- | --- | --- | --- | --- |
| 1 | **Perform Project Management Activities** | 2007-01-16 A | 2007-02-15 → 2007-02-07 (-8d) | 23d → 17d | 0% → 31% | 1d → 163d |  |  |
| 2 | Draft Scope Document |  | 2007-01-29 → 2007-01-22 (-7d) | 10d → 5d |  | 1d → 166d |  | resources Ye → Ye; Harsha; Ki-Sung; Wendy; Eugene; Nick |
| 3 | Deliverable: Scope Document | 2007-01-30 → 2007-01-23 (-7d) | 2007-01-30 → 2007-01-23 (-7d) |  |  | 123d → 166d |  | resources Ye → Ye; Harsha; Ki-Sung; Wendy; Eugene; Nick |
| 4 | Draft Initial Project Plan | 2007-01-31 → 2007-01-24 (-7d) | 2007-02-06 → 2007-01-30 (-7d) |  |  | 123d → 168d |  |  |
| 5 | Deliverable: Project Plan | 2007-02-07 → 2007-01-31 (-7d) | 2007-02-07 → 2007-01-31 (-7d) |  |  | 123d → 168d |  | resources Ye [80%] → Ye |
| 6 | Review Scope Document | 2007-01-30 → 2007-01-24 (-6d) | 2007-01-30 → 2007-01-24 (-6d) |  |  | 117d → 166d | 2 → 3 | resources Ye [80%] → Ye; Harsha; Ki-Sung; Wendy; Eugene; Nick |
| 7 | Draft System Requirment Document | 2007-01-31 → 2007-01-25 (-6d) | 2007-02-13 → 2007-01-31 (-13d) | 10d → 5d |  | 117d → 166d |  | resources Ye [80%] → Ye; Harsha; Ki-Sung; Wendy; Eugene; Nick |
| 8 | Deliverable: System Requirment Document | 2007-02-14 → 2007-02-01 (-13d) | 2007-02-14 → 2007-02-01 (-13d) |  |  | 117d → 166d |  | resources Ye [80%] → Ye; Harsha; Ki-Sung; Wendy; Eugene; Nick |
| 9 | Revise and submit project plan to Gforge | 2007-02-15 → 2007-02-02 (-13d) | 2007-02-15 → 2007-02-02 (-13d) |  |  | 117d → 166d |  | resources Ye [80%] → Ye; Harsha; Ki-Sung; Wendy; Eugene; Nick |
| 11 | Poster |  |  |  |  |  |  | resources none → Ye; Wendy |
| 12 | Tech Demo |  |  |  |  |  |  | resources none → Ye; Wendy |
| 13 | Hack-a-Thon |  |  |  |  |  |  | resources none → Ye; Wendy |
| 14 | caBIG annual meeting |  |  |  |  |  |  | resources none → Ye; Harsha; Ki-Sung; Wendy; Eugene; Nick |
| 15 | **caAdapter V3.2.0.1 tasks** |  | 2007-04-23 → 2007-05-01 A (+8d) | 53d → 59d | 54% → 100% | 29d → none |  | was named caAdapter V3.3 tasks; resources Nick; Eugene → none |
| 17 | Requirement gathering and analysis |  |  |  |  |  |  | resources none → Nick |
| 19 | Deliverable: Use Cases |  |  |  |  |  |  | resources none → Nick |
| 20 | **Elaboration** |  | 2007-03-29 A |  | 15% → 100% | 46d → none |  |  |
| 21 | Draft design document for model mapping service enhancement (Task 4) |  | 2007-03-13 A |  | 50% → 100% | 44.2d → none |  |  |
| 22 | Deliverable: Design Doc | 2007-03-14 A | 2007-03-14 A |  | 0% → 100% | 44.2d → none |  | resources none → Nick |
| 23 | Draft Test Plan and Test Cases | 2007-03-15 A | 2007-03-28 A |  | 0% → 100% | 46d → none |  |  |
| 24 | Deliverable: System Test Plan | 2007-03-29 A | 2007-03-29 A |  | 0% → 100% | 46d → none |  |  |
| 25 | **model mapping service enhancement (Task 4) development** |  | 2007-04-05 A |  | 95% → 100% | 29d → none |  | resources Nick → none |
| 26 | Retrieval of tag values from .xmi files (task 4(d)) |  | 2007-03-28 A |  | 95% → 100% | 34.7d → none |  | resources none → Nick |
| 27 | UI enhancement for MMS (task 4(d)) |  | 2007-04-02 A |  | 95% → 100% | 31.85d → none |  | resources none → Nick |
| 28 | System integration testing (task 4(d)) |  | 2007-04-05 A |  | 95% → 100% | 29d → none |  | resources none → Nick |
| 29 | **Transition** | 2007-04-06 A | 2007-04-13 A |  | 0% → 100% | 29d → none |  |  |
| 30 | QA System testing - Model Mapping Service | 2007-04-06 A | 2007-04-10 A |  | 0% → 100% | 29d → none |  | resources none → Nick |
| 31 | Staging System testing | 2007-04-11 A | 2007-04-13 A |  | 0% → 100% | 29d → none |  | resources none → Nick |
| 32 | **Documentation** | 2007-04-16 A | 2007-04-23 → 2007-05-01 A (+8d) | 6d → 12d | 0% → 100% | 29d → none |  |  |
| 33 | Update Requirements | 2007-04-16 A | 2007-04-16 A | 0.3d → 1d | 0% → 100% | 29d → none |  | resources none → Nick; Wendy |
| 34 | Deliverable: Requirements | 2007-04-16 → 2007-04-17 A (+1d) | 2007-04-16 → 2007-04-17 A (+1d) | 0.2d → 1d | 0% → 100% | 29d → none |  | resources none → Nick; Wendy |
| 35 | Update Users Guide | 2007-04-16 → 2007-04-18 A (+2d) | 2007-04-17 → 2007-04-19 A (+2d) | 1d → 2d | 0% → 100% | 29d → none |  | resources none → Nick; Wendy |
| 36 | Deliverable: Users Guide | 2007-04-17 → 2007-04-20 A (+3d) | 2007-04-17 → 2007-04-20 A (+3d) | 0.5d → 1d | 0% → 100% | 29d → none |  | resources none → Nick; Wendy |
| 37 | Update Design Document | 2007-04-18 → 2007-04-23 A (+5d) | 2007-04-18 → 2007-04-23 A (+5d) | 0.3d → 1d | 0% → 100% | 29d → none |  | resources none → Nick; Wendy |
| 38 | Deliverable: Design Document | 2007-04-18 → 2007-04-24 A (+6d) | 2007-04-18 → 2007-04-24 A (+6d) | 0.2d → 1d | 0% → 100% | 29d → none |  | resources none → Nick; Wendy |
| 39 | Update Installation Guide | 2007-04-18 → 2007-04-25 A (+7d) | 2007-04-18 → 2007-04-25 A (+7d) | 0.3d → 1d | 0% → 100% | 29d → none |  | resources none → Nick; Wendy |
| 40 | Deliverable: Installation Guide | 2007-04-18 → 2007-04-26 A (+8d) | 2007-04-18 → 2007-04-26 A (+8d) | 0.2d → 1d | 0% → 100% | 29d → none |  | resources none → Nick; Wendy |
| 41 | Update Readme, Release Note, Website, Help | 2007-04-19 → 2007-04-27 A (+8d) | 2007-04-19 → 2007-04-27 A (+8d) |  | 0% → 100% | 31d → none |  | was named Update Readme; resources none → Nick; Wendy |
| 42 | Prepare final download package | 2007-04-20 → 2007-04-30 A (+10d) | 2007-04-20 → 2007-04-30 A (+10d) |  | 0% → 100% | 29d → none | Update Mapping Tool Help System Text → none | resources none → Nick; Wendy |
| 43 | Deliverable: Packaged Iteration | 2007-04-23 → 2007-05-01 A (+8d) | 2007-04-23 → 2007-05-01 A (+8d) |  | 0% → 100% | 29d → none |  | resources none → Nick; Wendy |
| 45 | **Inception** | 2007-04-24 → 2007-05-02 (+8d) | 2007-05-02 → 2007-05-16 (+14d) | 7d → 11d |  | 29d → 0d |  |  |
| 46 | Requirement gathering and analysis | 2007-04-24 → 2007-05-02 (+8d) | 2007-04-26 → 2007-05-08 (+12d) | 3d → 5d |  | 29d → 0d |  | resources none → Nick |
| 47 | Draft use cases for model mapping service enhancement (Task 4) | 2007-04-27 → 2007-05-09 (+12d) | 2007-05-01 → 2007-05-15 (+14d) | 3d → 5d |  | 29d → 0d |  |  |
| 48 | Deliverable: Use Cases | 2007-05-02 → 2007-05-16 (+14d) | 2007-05-02 → 2007-05-16 (+14d) |  |  | 29d → 0d |  | resources none → Nick |
| 49 | **Elaboration** | 2007-05-03 → 2007-05-17 (+14d) | 2007-05-25 → 2007-06-18 (+24d) | 17d → 23d |  | 29d → 0d |  |  |
| 50 | Draft design document for model mapping service enhancement (Task 4) | 2007-05-03 → 2007-05-17 (+14d) | 2007-05-09 → 2007-05-30 (+21d) | 5d → 10d |  | 29d → 0d |  |  |
| 51 | Deliverable: Design Doc | 2007-05-10 → 2007-05-31 (+21d) | 2007-05-10 → 2007-05-31 (+21d) |  |  | 29d → 0d |  | resources none → Nick |
| 52 | Draft Test Plan and Test Cases | 2007-05-11 → 2007-06-01 (+21d) | 2007-05-24 → 2007-06-14 (+21d) |  |  | 46d → 15d |  |  |
| 53 | Deliverable: System Test Plan | 2007-05-25 → 2007-06-15 (+21d) | 2007-05-25 → 2007-06-15 (+21d) |  |  | 46d → 15d |  |  |
| 54 | **model mapping service enhancement (Task 4) development** | 2007-05-11 → 2007-06-01 (+21d) | 2007-05-31 → 2007-06-18 (+18d) | 15d → 12d |  | 29d → 0d |  | resources Nick → none; baseline start 2006-06-19 → none; baseline finish 2006-06-30 → none |
| 55 | XML meta loader (task 4(f)) | 2007-05-11 → 2007-06-01 (+21d) | 2007-05-15 → 2007-06-05 (+21d) |  |  | 29d → 0d |  | resources none → Nick |
| 56 | Object to Object mapping (task 4(f)) | 2007-05-16 → 2007-06-06 (+21d) | 2007-05-29 → 2007-06-14 (+16d) | 10d → 7d |  | 29d → 0d |  | resources none → Nick |
| 57 | System integration testing (task 4(d)) | 2007-05-30 → 2007-06-15 (+16d) | 2007-05-31 → 2007-06-18 (+18d) |  |  | 29d → 0d |  | resources none → Nick |
| 58 | **Transition** | 2007-06-01 → 2007-06-19 (+18d) | 2007-06-07 → 2007-06-25 (+18d) |  |  | 29d → 0d |  |  |
| 59 | QA System testing - Model Mapping Service | 2007-06-01 → 2007-06-19 (+18d) | 2007-06-05 → 2007-06-21 (+16d) |  |  | 29d → 0d |  | resources none → Nick; QA |
| 60 | Staging System testing | 2007-06-06 → 2007-06-22 (+16d) | 2007-06-07 → 2007-06-25 (+18d) |  |  | 29d → 0d |  | resources none → Nick; QA |
| 61 | **Documentation** | 2007-06-08 → 2007-06-26 (+18d) | 2007-06-19 → 2007-07-06 (+17d) | 8d → 9d |  | 29d → 0d |  |  |
| 62 | Update Requirements | 2007-06-08 → 2007-06-26 (+18d) | 2007-06-08 → 2007-06-26 (+18d) | 0.3d → 0.5d |  | 29d → 0d |  | resources none → Nick; Wendy |
| 63 | Deliverable: Requirements | 2007-06-08 → 2007-06-26 (+18d) | 2007-06-08 → 2007-06-26 (+18d) | 0.2d → 0.5d |  | 29d → 0d |  | resources none → Nick; Wendy |
| 64 | Update Users Guide | 2007-06-08 → 2007-06-27 (+19d) | 2007-06-13 → 2007-06-28 (+15d) | 3d → 2d |  | 29d → 0d |  | resources none → Nick; Wendy |
| 65 | Deliverable: Users Guide | 2007-06-13 → 2007-06-29 (+16d) | 2007-06-13 → 2007-06-29 (+16d) |  |  | 29d → 0d |  | resources none → Nick; Wendy |
| 66 | Update Design Document | 2007-06-14 → 2007-06-29 (+15d) | 2007-06-14 → 2007-06-29 (+15d) | 0.3d → 0.5d |  | 29d → 0d |  | resources none → Nick; Wendy |
| 67 | Deliverable: Design Document | 2007-06-14 → 2007-07-02 (+18d) | 2007-06-14 → 2007-07-02 (+18d) | 0.2d → 0.5d |  | 29d → 0d |  | resources none → Nick; Wendy |
| 68 | Update Installation Guide | 2007-06-14 → 2007-07-02 (+18d) | 2007-06-14 → 2007-07-02 (+18d) | 0.3d → 0.5d |  | 29d → 0d |  | resources none → Nick; Wendy |
| 69 | Deliverable: Installation Guide | 2007-06-14 → 2007-07-03 (+19d) | 2007-06-14 → 2007-07-03 (+19d) | 0.2d → 0.5d |  | 29d → 0d |  | resources none → Nick; Wendy |
| 70 | Update Readme | 2007-06-15 → 2007-07-03 (+18d) | 2007-06-15 → 2007-07-03 (+18d) | 1d → 0.5d |  | 31d → 0d |  | resources none → Nick; Wendy |
| 71 | Update Release Note | 2007-06-15 → 2007-07-04 (+19d) | 2007-06-15 → 2007-07-04 (+19d) | 1d → 0.5d |  | 31d → 0d | 69 → 70 | resources none → Nick; Wendy |
| 72 | Update Press Release | 2007-06-15 → 2007-07-04 (+19d) | 2007-06-15 → 2007-07-04 (+19d) | 1d → 0.5d |  | 31d → 0d | 69 → 71 | resources none → Nick; Wendy |
| 73 | Update the Website content | 2007-06-15 → 2007-07-05 (+20d) | 2007-06-15 → 2007-07-05 (+20d) | 1d → 0.5d |  | 31d → 0d | 69 → 72 | resources none → Nick; Wendy |
| 74 | Update Mapping Tool Help System Text | 2007-06-15 → 2007-07-05 (+20d) | 2007-06-15 → 2007-07-05 (+20d) | 1d → 0.5d |  | 29d → 0d | 69 → 73 | resources none → Nick; Wendy |

| ID | Task | Start | Finish | Duration | Complete | Total float | Predecessors | Other |
| --- | --- | --- | --- | --- | --- | --- | --- | --- |
| 75 | Prepare final download package | 2007-06-18 → 2007-07-06 (+18d) | 2007-06-18 → 2007-07-06 (+18d) | 1d → 0.5d |  | 29d → 0d |  | resources none → Nick; Wendy |
| 76 | Deliverable: Packaged Iteration | 2007-06-19 → 2007-07-06 (+17d) | 2007-06-19 → 2007-07-06 (+17d) | 1d → 0.5d |  | 29d → 0d |  | resources none → Nick; Wendy |
| 77 | **caAdapter V4.0 tasks** | 2007-01-16 A → 2007-02-08 A (+23d) | 2007-07-30 → 2007-09-24 (+56d) | 140d → 163d? | 17% → 27% |  |  |  |
| 78 | **Iteration 1 - caAdapter mapping tool set (w/o MMS)** | 2007-01-16 A → 2007-02-08 A (+23d) | 2007-07-30 → 2007-09-24 (+56d) | 140d → 163d? | 17% → 27% |  |  | was named Iteration 1 - caAdapter mapping tool set |
| 79 | **caAdapter code base enhancement (Task 8)** | 2007-01-16 A → 2007-02-08 A (+23d) | 2007-02-19 A | 25d → 8d | 99% → 100% | 115d → none |  |  |
| 80 | caAdapter code base enhancement analysis | 2007-01-16 A → 2007-02-08 A (+23d) | 2007-01-22 A → 2007-02-08 A (+17d) | 5d → 1d |  |  |  | constraint start no earlier than 2007-01-16 → start no earlier than 2007-02-08 |
| 81 | caAdapter code base enhancement design | 2007-01-23 A → 2007-02-09 A (+17d) | 2007-01-29 A → 2007-02-09 A (+11d) | 5d → 1d |  |  |  |  |
| 82 | caAdapter code base enhancement review | 2007-01-30 A → 2007-02-12 A (+13d) | 2007-02-05 A → 2007-02-12 A (+7d) | 5d → 1d |  |  |  |  |
| 83 | **caAdapter code base enhancement implementation** | 2007-02-06 A → 2007-02-13 A (+7d) | 2007-02-19 A | 10d → 5d | 98% → 100% | 115d → none |  |  |
| 84 | caAdapter code base enhancement UI implementation | 2007-02-06 A → 2007-02-13 A (+7d) | 2007-02-12 A → 2007-02-14 A (+2d) | 5d → 2d |  |  |  |  |
| 85 | caAdapter code base enhancement - service layer implementation | 2007-02-13 A → 2007-02-15 A (+2d) | 2007-02-19 A | 5d → 3d | 95% → 100% | 115d → none |  |  |
| 86 | **Inception** | 2007-02-08 A → 2007-02-20 A (+12d) | 2007-03-06 → 2007-04-03 (+28d) | 19d → 31d | 57% → 94% | 104d → 124d |  |  |
| 87 | Requirement gathering and analysis | 2007-02-08 → 2007-02-20 A (+12d) | 2007-02-21 → 2007-03-12 (+19d) | 10d → 15d | 0% → 95% | 0d → 14.25d | 14 → 85 | resources none → Harsha; Ki Sung; Wendy; Ye; Eugene |
| 88 | Draft use cases for csv/database to SDTM transformation service enhancement (Task 1) | 2007-02-22 A → 2007-03-13 A (+19d) | 2007-03-05 A → 2007-04-02 (+28d) | 8d → 15d | 100% → 95% | none → 125d |  | resources Harsha → Harsha [50%] |
| 89 | Draft use cases for csv to HL7 v3 transformation service enhancement (Task 2) | 2007-02-22 A → 2007-03-13 A (+19d) | 2007-03-05 A → 2007-04-02 (+28d) | 8d → 15d | 100% → 95% | none → 0d |  | resources Ye → Ye [50%]; Wendy [50%] |
| 90 | Draft use cases for HL7 v2 to HL7 v3 transformation service enhancement (Task 3) | 2007-02-22 A → 2007-03-13 A (+19d) | 2007-03-05 → 2007-04-02 (+28d) | 8d → 15d | 80% → 95% | 105d → 125d |  | resources Ki-Sung; Ye → Ki-Sung [50%] |
| 91 | Draft use cases for vocabulary mapping service (Task 6) | 2007-02-22 A → 2007-03-13 A (+19d) | 2007-03-05 A → 2007-04-02 (+28d) | 8d → 15d | 100% → 95% | none → 125d |  | resources Ki-Sung → Ki-Sung [50%] |
| 92 | Draft use cases caAdapter Web Services (Task 7) | 2007-02-22 → 2007-03-13 A (+19d) | 2007-03-05 → 2007-04-02 (+28d) | 8d → 15d | 0% → 95% | 105d → 125d |  | resources Ye; Harsha → Ye [50%]; Harsha [50%] |
| 93 | Draft use cases forHL7 v3 to csv transformation service enhancement (Task 9) | 2007-02-22 → 2007-03-13 A (+19d) | 2007-03-05 → 2007-04-02 (+28d) | 8d → 15d | 0% → 95% | 0d → 19.4d |  |  |
| 94 | Deliverable: Use Cases | 2007-03-06 → 2007-04-03 (+28d) | 2007-03-06 → 2007-04-03 (+28d) |  |  | 0d → 19.4d |  | resources none → Harsha; Ki-Sung; Wendy; Ye; Eugene |
| 95 | **Elaboration** | 2007-03-07 A → 2007-04-04 A (+28d) | 2007-03-23 → 2007-05-10 (+48d) | 13d → 27d | 44% → 71% | 0d → 97d | 94 → none |  |
| 96 | Initial design document for csv/database to SDTM transformation service enhancement (Task 1) | 2007-03-07 A → 2007-04-04 A (+28d) | 2007-03-23 A → 2007-04-24 (+32d) | 13d → 15d | 100% → 80% | none → 109d | none → 94 | was named Draft design document for csv/database to SDTM transformation service enhancement (Task 1); resources Harsha → Harsha [50%] |
| 97 | Initial design document for csv to HL7 v3 transformation service enhancement (Task 2) | 2007-03-07 A → 2007-04-04 A (+28d) | 2007-03-23 A → 2007-04-24 (+32d) | 13d → 15d | 100% → 80% | none → 109d | none → 94 | was named Draft design document for csv to HL7 v3 transformation service enhancement (Task 2); resources Ye → Ye [50%] |
| 98 | Initial design document for HL7 v2 to HL7 v3 transformation service enhancement (Task 3) | 2007-03-07 A → 2007-04-04 A (+28d) | 2007-03-23 → 2007-04-24 (+32d) | 13d → 15d | 50% → 80% | 0d → 109d | none → 94 | was named Draft design document for HL7 v2 to HL7 v3 transformation service enhancement (Task 3); resources Ki-Sung; Ye → Ki-Sung [50%]; Ye [10%] |
| 99 | Initial design document for vocabulary mapping service (Task 6) | 2007-03-07 A → 2007-04-04 A (+28d) | 2007-03-23 → 2007-04-24 (+32d) | 13d → 15d | 50% → 80% | 0d → 109d | none → 94 | was named Draft design document for vocabulary mapping service (Task 6); resources Ki-Sung → Ki-Sung [50%] |
| 100 | Initial design document caAdapter Web Services (Task 7) | 2007-03-07 → 2007-04-04 A (+28d) | 2007-03-23 → 2007-04-24 (+32d) | 13d → 15d | 0% → 80% | 0d → 109d | none → 94 | was named Draft design document caAdapter Web Services (Task 7); constraint start no earlier than 2007-02-27 → start no earlier than 2007-03-19; resources Ye; Harsha → Ye [40%]; Harsha [50%] |
| 101 | Initial design document forHL7 v3 to csv transformation service enhancement (Task 9) | 2007-03-07 → 2007-04-04 A (+28d) | 2007-03-23 → 2007-04-24 (+32d) | 13d → 15d | 0% → 80% | 0d → 7.4d | none → 94 | was named Draft design document forHL7 v3 to csv transformation service enhancement (Task 9); constraint start no earlier than 2007-02-27 → start no earlier than 2007-03-19 |
| 105 | Deliverable: Design Doc | 2007-03-07 → 2007-05-10 (+64d) | 2007-03-07 → 2007-05-10 (+64d) |  |  | 12d → 6.6d | none → 104 | resources none → Harsha; Ki-Sung; Wendy; Ye; Eugene |
| 107 | Draft Test Plan and Test Cases | 2007-03-07 → 2007-05-11 (+65d) | 2007-03-20 → 2007-05-31 (+72d) | 10d → 15d |  | 2d → 65d | 94 → 105 |  |
| 110 | Deliverable: System Test Plan | 2007-03-21 → 2007-06-25 (+96d) | 2007-03-21 → 2007-06-25 (+96d) |  |  | 2d → 65d | 107 → 109 |  |
| 111 | **Construction** | 2007-03-26 A → 2007-05-11 (+46d) | 2007-06-01 → 2007-07-17 (+46d) | 50d → 47.4d? | 17% → 0% | 0d → 6.6d | 95 → none |  |
| 112 | **csv/database to SDTM transformation service enhancement (Task 1) development** | 2007-03-26 A → 2007-05-11 (+46d) | 2007-06-01 → 2007-07-05 (+34d) | 50d → 40d | 20% → 0% | 0d → 6.6d |  | resources Harsha → none |
| 113 | Database/CTOM object model to SDTM mapping (task 1(a)) | 2007-03-26 A → 2007-05-11 (+46d) | 2007-04-20 → 2007-05-24 (+34d) | 20d → 10d | 50% → 0% | 0d → 6.6d | none → 105 | resources none → Harsha |
| 115 | SDTM API (task 1( c )) | 2007-04-23 → 2007-06-08 (+46d) | 2007-05-11 → 2007-06-21 (+41d) | 15d → 10d |  | 0d → 6.6d | 113 → 114 | resources none → Harsha |
| 116 | SDTM web services (task 1(d)) | 2007-05-14 → 2007-06-22 (+39d) | 2007-06-01 → 2007-07-05 (+34d) | 15d → 10d |  | 0d → 6.6d |  | resources none → Harsha |
| 117 | **csv to HL7 v3 transformation service enhancement (Task 2) development** | 2007-03-26 A → 2007-05-11 (+46d) | 2007-06-01 → 2007-07-05 (+34d) | 50d → 40d | 40% → 0% | 0d → 14d |  | resources Ye → none; baseline start 2006-06-19 → none; baseline finish 2006-06-30 → none |
| 118 | HL7 v3 Datatype parser (task 2(a)) | 2007-03-26 A → 2007-05-11 (+46d) | 2007-04-06 A → 2007-05-24 (+48d) |  | 100% → 0% | none → 14d | none → 105 | resources none → Ye |
| 119 | HL7 v3 Mif parser (task 2(a)) | 2007-04-09 A → 2007-05-25 (+46d) | 2007-04-20 A → 2007-06-07 (+48d) |  | 100% → 0% | none → 14d |  | resources none → Ye |
| 120 | csv to HL7 v3 transformation service enhancement (task 2(a)) | 2007-04-23 → 2007-06-08 (+46d) | 2007-05-18 → 2007-06-21 (+34d) | 20d → 10d |  | 0d → 14d |  | resources none → Ye |
| 121 | csv to HL7 v3 UI enhancement | 2007-05-21 → 2007-06-22 (+32d) | 2007-06-01 → 2007-07-05 (+34d) |  |  | 0d → 14d |  | resources none → Ye |
| 125 | HL7 v2 H2S Mapping Interface | 2007-03-26 → 2007-06-08 (+74d) | 2007-06-01 → 2007-06-21 (+20d) | 50d → 10d |  | 0d → 14d | none → 124 | was named HL7 v2 to HL7 v3 transformation service enhancement (Task 3) development; resources Ki-Sung; Ye → Ki-Sung |
| 126 | vocabulary mapping service (Task 6) development | 2007-03-26 A → 2007-06-22 (+88d) | 2007-04-20 → 2007-07-05 (+76d) | 20d → 10d | 20% → 0% | 30d → 14d | none → 125 |  |
| 127 | **HL7 v3 to csv transformation service enhancement (Task 9) development** | 2007-03-26 → 2007-05-11 (+46d) | 2007-05-18 → 2007-07-05 (+48d) |  |  | 0d → 14d |  | resources Eugene → none |
| 128 | HL7 v3 message parser | 2007-03-26 → 2007-05-11 (+46d) | 2007-04-06 → 2007-05-29 (+53d) | 10d → 13d |  | 0d → 14d | none → 105 | resources none → Eugene |
| 129 | HL7 v3 message to csv transformer | 2007-04-09 → 2007-05-30 (+51d) | 2007-05-04 → 2007-06-15 (+42d) | 20d → 13d |  | 0d → 14d |  | resources none → Eugene |
| 130 | HL7 v3 to csv tranformation report | 2007-05-07 → 2007-06-18 (+42d) | 2007-05-18 → 2007-07-05 (+48d) | 10d → 14d |  | 0d → 14d |  | resources none → Eugene |
| 132 | caAdapter Internal integration Testing | 2007-05-21 → 2007-07-10 (+50d) | 2007-06-01 → 2007-07-17 (+46d) | 10d → 5d |  | 0d → 6.6d | 130 → 131 | was named caAdapter product packaging; resources Eugene → Eugene; Ki-Sung; Wendy; Ye; Harsha |
| 136 | **Transition** | 2007-06-04 → 2007-07-09 (+35d) | 2007-07-26 → 2007-09-18 (+54d) | 39d → 52d? |  |  | 111 → none |  |
| 137 | **Deploy To QA Server - Integration Testing, Test, and Resolve Defects** | 2007-06-04 → 2007-07-09 (+35d) | 2007-06-18 → 2007-08-06 (+49d) | 11d → 21d |  |  | 111 → none |  |
| 138 | Deploy to QA server for integration testing | 2007-06-04 → 2007-07-17 (+43d) | 2007-06-04 → 2007-07-18 (+44d) |  |  | 0d → 6.6d |  | resources none → Harsha; Ki-Sung; Wendy; Ye; Eugene |
| 139 | Execute csv/database to SDTM transformation service enhancement (Task 1) test cases | 2007-06-05 → 2007-07-18 (+43d) | 2007-06-11 → 2007-07-27 (+46d) | 5d → 7d |  | 5d → 6.6d |  |  |
| 140 | Execute csv to HL7 v3 transformation service enhancement (Task 2) test cases | 2007-06-05 → 2007-07-18 (+43d) | 2007-06-11 → 2007-07-27 (+46d) | 5d → 7d |  | 5d → 6.6d |  | resources Ye → Wendy |
| 141 | Execute HL7 v2 to HL7 v3 transformation service enhancement (Task 3) test cases | 2007-06-05 → 2007-07-18 (+43d) | 2007-06-11 → 2007-07-27 (+46d) | 5d → 7d |  | 5d → 6.6d |  | resources Ki-Sung; Ye → Ki-Sung [50%] |
| 142 | Execute vocabulary mapping service (Task 6) test cases | 2007-06-05 → 2007-07-18 (+43d) | 2007-06-11 → 2007-07-27 (+46d) | 5d → 7d |  | 5d → 6.6d |  | constraint start no earlier than 2007-02-27 → none; resources Ki-Sung → Ki-Sung [50%]; baseline start 2006-06-19 → none; baseline finish 2006-06-30 → none |
| 143 | Execute caAdapter Web Services (Task 7) test cases | 2007-06-05 → 2007-07-18 (+43d) | 2007-06-11 → 2007-07-27 (+46d) | 5d → 7d |  | 5d → 6.6d |  | resources Ye; Harsha → Ye |
| 144 | Execute HL7 v3 to csv transformation service enhancement (Task 9) test cases | 2007-06-05 → 2007-07-18 (+43d) | 2007-06-11 → 2007-07-27 (+46d) | 5d → 7d |  | 0d → 6.6d |  |  |
| 145 | **model mapping service enhancement (Task 4) development** | 2007-03-26 A → 2007-07-09 (+105d) | 2007-04-20 → 2007-07-27 (+98d) | 20d → 15d | 50% → 0% | 30d → 0d |  | resources Nick → none |
| 148 | Execute model mapping service enhancement (Task 4) test cases | 2007-06-05 → 2007-07-24 (+49d) | 2007-06-11 → 2007-07-27 (+46d) | 5d → 4d |  | 5d → 0d | 138 → 147 |  |
| 149 | Execute all test cases | 2007-06-12 → 2007-07-30 (+48d) | 2007-06-18 → 2007-08-06 (+49d) | 5d → 6d |  |  | 144 → 145 | resources none → Harsha; Ki-Sung; Wendy; Ye; Eugene; QA |
| 150 | **Deploy To QA Server- System testing, Test, and Resolve Defects** | 2007-06-19 → 2007-08-07 (+49d) | 2007-07-03 → 2007-08-27 (+55d) | 11d → 15d? |  |  |  |  |
| 151 | Deploy to QA server for System testing | 2007-06-19 → 2007-08-07 (+49d) | 2007-06-19 → 2007-08-07 (+49d) |  |  |  |  |  |
| 152 | Execute csv/database to SDTM transformation service enhancement (Task 1) test cases | 2007-06-20 → 2007-08-08 (+49d) | 2007-06-26 → 2007-08-16 (+51d) | 5d → 7d |  | 5d → 7d |  |  |
| 153 | Execute csv to HL7 v3 transformation service enhancement (Task 2) test cases | 2007-06-20 → 2007-08-08 (+49d) | 2007-06-26 → 2007-08-16 (+51d) | 5d → 7d |  | 5d → 7d |  | resources Ye → Wendy |
| 154 | Execute model mapping service enhancement (Task 4) test cases | 2007-06-20 → 2007-08-08 (+49d) | 2007-06-26 → 2007-08-16 (+51d) | 5d → 7d |  | 5d → 7d |  | constraint start no earlier than 2007-02-27 → none; baseline start 2006-06-19 → none; baseline finish 2006-06-30 → none |
| 155 | Execute HL7 v2 to HL7 v3 transformation service enhancement (Task 3) test cases | 2007-06-20 → 2007-08-08 (+49d) | 2007-06-26 → 2007-08-16 (+51d) | 5d → 7d |  | 5d → 7d |  | resources Ki-Sung; Ye → Ki-Sung [50%] |
| 156 | Execute vocabulary mapping service (Task 6) test cases | 2007-06-20 → 2007-08-08 (+49d) | 2007-06-26 → 2007-08-16 (+51d) | 5d → 7d |  | 5d → 7d |  | resources Ki-Sung → Ki-Sung [50%] |
| 157 | Execute caAdapter Web Services (Task 7) test cases | 2007-06-20 → 2007-08-08 (+49d) | 2007-06-26 → 2007-08-16 (+51d) | 5d → 7d |  | 5d → 7d |  | resources Ye; Harsha → Ye |
| 158 | Execute HL7 v3 to csv transformation service enhancement (Task 9) test cases | 2007-06-20 → 2007-08-08 (+49d) | 2007-06-26 → 2007-08-16 (+51d) | 5d → 7d |  |  |  |  |
| 159 | Execute all test cases | 2007-06-27 → 2007-08-17 (+51d) | 2007-07-03 → 2007-08-24 (+52d) | 5d → 6d |  |  |  | resources none → Harsha; Ki-Sung; Wendy; Ye; Eugene |
| 163 | **Deploy to Staging Server, Test, and Resolve Defects** | 2007-07-04 → 2007-08-28 (+55d) | 2007-07-18 → 2007-09-17 (+61d) | 11d → 15d |  | 1d → 2d |  |  |

| ID | Task | Start | Finish | Duration | Total float | Predecessors | Other |
| --- | --- | --- | --- | --- | --- | --- | --- |
| 164 | Deploy to Staging server | 2007-07-04 → 2007-08-28 (+55d) | 2007-07-04 → 2007-08-28 (+55d) |  | 1d → 2d |  | resources none → QA |
| 165 | Execute csv/database to SDTM transformation service enhancement (Task 1) test cases | 2007-07-05 → 2007-08-29 (+55d) | 2007-07-11 → 2007-09-06 (+57d) | 5d → 7d | 7d → 9d |  | resources Harsha → QA |
| 166 | Execute csv to HL7 v3 transformation service enhancement (Task 2) test cases | 2007-07-05 → 2007-08-29 (+55d) | 2007-07-11 → 2007-09-06 (+57d) | 5d → 7d | 7d → 9d |  | resources Ye → QA |
| 167 | Execute model mapping service enhancement (Task 4) test cases | 2007-07-05 → 2007-08-29 (+55d) | 2007-07-11 → 2007-09-06 (+57d) | 5d → 7d | 7d → 9d |  | resources Nick → QA |
| 168 | Execute HL7 v2 to HL7 v3 transformation service enhancement (Task 3) test cases | 2007-07-05 → 2007-08-29 (+55d) | 2007-07-11 → 2007-09-06 (+57d) | 5d → 7d | 7d → 9d |  | resources Ki-Sung; Ye → QA |
| 169 | Execute vocabulary mapping service (Task 6) test cases | 2007-07-05 → 2007-08-29 (+55d) | 2007-07-11 → 2007-09-06 (+57d) | 5d → 7d | 7d → 9d |  | resources Ki-Sung → QA |
| 170 | Execute caAdapter Web Services (Task 7) test cases | 2007-07-05 → 2007-08-29 (+55d) | 2007-07-11 → 2007-09-06 (+57d) | 5d → 7d | 7d → 9d |  | resources Ye; Harsha → QA |
| 171 | Execute HL7 v3 to csv transformation service enhancement (Task 9) test cases | 2007-07-05 → 2007-08-29 (+55d) | 2007-07-11 → 2007-09-06 (+57d) | 5d → 7d |  |  | resources Eugene → QA |
| 172 | Execute all test cases | 2007-07-12 → 2007-09-07 (+57d) | 2007-07-18 → 2007-09-17 (+61d) | 5d → 7d |  |  | resources none → QA |
| 173 | **Support User Acceptance Test** | 2007-07-05 → 2007-08-28 (+54d) | 2007-07-25 → 2007-09-17 (+54d) |  | 1d → 2d |  |  |
| 174 | UAT Testing | 2007-07-05 → 2007-08-28 (+54d) | 2007-07-25 → 2007-09-17 (+54d) |  | 1d → 2d | 164 → 150 |  |
| 175 | Deliverable: Test Results | 2007-07-26 → 2007-09-18 (+54d) | 2007-07-26 → 2007-09-18 (+54d) |  | 2d → 4d | Perform Reggression, Performance Testing, and Resolve Defects → 173 |  |
| 176 | **Documentation** | 2007-07-04 → 2007-08-28 (+55d) | 2007-07-26 → 2007-09-19 (+55d) |  |  |  |  |
| 177 | Update Requirements | 2007-07-04 → 2007-08-28 (+55d) | 2007-07-17 → 2007-09-10 (+55d) |  |  |  | resources none → Harsha |
| 178 | Deliverable: Requirements | 2007-07-18 → 2007-09-11 (+55d) | 2007-07-18 → 2007-09-11 (+55d) |  |  |  | resources none → Harsha |
| 179 | Update Users Guide | 2007-07-04 → 2007-08-28 (+55d) | 2007-07-17 → 2007-09-10 (+55d) |  |  |  | resources none → Wendy; Ye |
| 180 | Deliverable: Users Guide | 2007-07-18 → 2007-09-11 (+55d) | 2007-07-18 → 2007-09-11 (+55d) |  |  |  | resources none → Wendy; Ye |
| 181 | Update Design Document | 2007-07-04 → 2007-08-28 (+55d) | 2007-07-17 → 2007-09-10 (+55d) |  |  |  | resources none → Eugene |
| 182 | Deliverable: Design Document | 2007-07-18 → 2007-09-11 (+55d) | 2007-07-18 → 2007-09-11 (+55d) |  |  |  | resources none → Eugene |
| 183 | Update Installation Guide | 2007-07-04 → 2007-08-28 (+55d) | 2007-07-17 → 2007-09-10 (+55d) |  |  |  | resources none → Nick |
| 184 | Deliverable: Installation Guide | 2007-07-18 → 2007-09-11 (+55d) | 2007-07-18 → 2007-09-11 (+55d) |  |  |  | resources none → Nick |
| 185 | Update Readme | 2007-07-19 → 2007-09-12 (+55d) | 2007-07-19 → 2007-09-12 (+55d) |  | 7d → 8d |  | resources none → Harsha; Ki-Sung; Wendy; Ye; Eugene |
| 186 | Update Release Note | 2007-07-19 → 2007-09-12 (+55d) | 2007-07-19 → 2007-09-12 (+55d) |  |  |  | resources none → Nick |
| 187 | Update Press Release | 2007-07-20 → 2007-09-13 (+55d) | 2007-07-20 → 2007-09-13 (+55d) |  |  |  | resources none → Harsha; Ki-Sung; Wendy; Ye; Eugene |
| 188 | Update the Website content | 2007-07-23 → 2007-09-14 (+53d) | 2007-07-23 → 2007-09-14 (+53d) |  |  |  | resources none → Harsha; Ki-Sung; Wendy; Ye; Eugene |
| 189 | Update Mapping Tool Help System Text | 2007-07-24 → 2007-09-17 (+55d) | 2007-07-24 → 2007-09-17 (+55d) |  |  |  | resources none → Harsha; Ki-Sung; Wendy; Ye; Eugene |
| 190 | Prepare final download package | 2007-07-25 → 2007-09-18 (+55d) | 2007-07-25 → 2007-09-18 (+55d) |  |  |  | resources none → Harsha; Ki-Sung; Wendy; Ye; Eugene |
| 191 | Deliverable: Packaged Iteration | 2007-07-26 → 2007-09-19 (+55d) | 2007-07-26 → 2007-09-19 (+55d) |  |  |  | resources none → Harsha; Ki-Sung; Wendy; Ye; Eugene |
| 192 | Deploy to Production | 2007-07-27 → 2007-09-20 (+55d) | 2007-07-27 → 2007-09-21 (+56d) | 1d → 2d |  |  | resources none → Harsha; Ki-Sung; Wendy; Ye; Eugene |
| 193 | Deliverable: Production System | 2007-07-30 → 2007-09-24 (+56d) | 2007-07-30 → 2007-09-24 (+56d) |  |  |  | resources none → Harsha; Ki-Sung; Wendy; Ye; Eugene |

## Version 3 (saved 2007-09-11)

Note of the change: Updated project plan

Last finish 2007-09-24 → 2007-09-28 (+4d). Complete tasks 32 → 82.

Added:

| ID | Task | Duration | Start | Finish | Predecessors | Resources |
| --- | --- | --- | --- | --- | --- | --- |
| 160 | Regression testing for bug fixes | 10d | 2007-09-04 A | 2007-09-20 | 159 | Harsha; Ki-Sung; Wendy; Ye; Eugene |
| 175 | First Draft Revision and Help system generation | 5d | 2007-09-17 | 2007-09-21 | 166 |  |
| 176 | Dev Team Revision - 2nd Round | 2d | 2007-09-24 | 2007-09-25 | 175 |  |
| 177 | Final Draft Ready | 1d | 2007-09-26 | 2007-09-26 | 176 |  |
| 178 | Deploy to Staging | 1d? | 2007-09-27 | 2007-09-27 | 162 |  |

Removed: 161 Dependent Products Dev Regression Test Complete; 162 Dependent Products QA Regression Complete; 163 Deploy to Staging Server, Test, and Resolve Defects; 164 Deploy to Staging server; 165 Execute csv/database to SDTM transformation service enhancement (Task 1) test cases; 166 Execute csv to HL7 v3 transformation service enhancement (Task 2) test cases; 167 Execute model mapping service enhancement (Task 4) test cases; 168 Execute HL7 v2 to HL7 v3 transformation service enhancement (Task 3) test cases; 169 Execute vocabulary mapping service (Task 6) test cases; 170 Execute caAdapter Web Services (Task 7) test cases; 171 Execute HL7 v3 to csv transformation service enhancement (Task 9) test cases; 172 Execute all test cases; 173 Support User Acceptance Test; 174 UAT Testing; 175 Deliverable: Test Results; 189 Update Mapping Tool Help System Text; 190 Prepare final download package; 191 Deliverable: Packaged Iteration

Changed:

| ID | Task | Start | Finish | Duration | Complete | Total float | Other |
| --- | --- | --- | --- | --- | --- | --- | --- |
| 77 | **caAdapter V4.0 tasks** |  | 2007-09-24 → 2007-09-28 (+4d) | 163d? → 167d? | 27% → 88% |  |  |
| 78 | **Iteration 1 - caAdapter mapping tool set (w/o MMS)** |  | 2007-09-24 → 2007-09-28 (+4d) | 163d? → 167d? | 27% → 88% |  |  |
| 86 | **Inception** |  | 2007-04-03 A |  | 94% → 100% | 124d → none |  |
| 87 | Requirement gathering and analysis |  | 2007-03-12 A |  | 95% → 100% | 14.25d → none |  |
| 88 | Draft use cases for csv/database to SDTM transformation service enhancement (Task 1) |  | 2007-04-02 A |  | 95% → 100% | 125d → none |  |
| 89 | Draft use cases for csv to HL7 v3 transformation service enhancement (Task 2) |  | 2007-04-02 A |  | 95% → 100% | 0d → none |  |
| 90 | Draft use cases for HL7 v2 to HL7 v3 transformation service enhancement (Task 3) |  | 2007-04-02 A |  | 95% → 100% | 125d → none |  |
| 91 | Draft use cases for vocabulary mapping service (Task 6) |  | 2007-04-02 A |  | 95% → 100% | 125d → none |  |
| 92 | Draft use cases caAdapter Web Services (Task 7) |  | 2007-04-02 A |  | 95% → 100% | 125d → none |  |
| 93 | Draft use cases forHL7 v3 to csv transformation service enhancement (Task 9) |  | 2007-04-02 A |  | 95% → 100% | 19.4d → none |  |
| 94 | Deliverable: Use Cases | 2007-04-03 A | 2007-04-03 A |  | 0% → 100% | 19.4d → none |  |
| 95 | **Elaboration** |  | 2007-05-10 A |  | 71% → 100% | 97d → none |  |
| 96 | Initial design document for csv/database to SDTM transformation service enhancement (Task 1) |  | 2007-04-24 A |  | 80% → 100% | 109d → none |  |
| 97 | Initial design document for csv to HL7 v3 transformation service enhancement (Task 2) |  | 2007-04-24 A |  | 80% → 100% | 109d → none |  |
| 98 | Initial design document for HL7 v2 to HL7 v3 transformation service enhancement (Task 3) |  | 2007-04-24 A |  | 80% → 100% | 109d → none |  |
| 99 | Initial design document for vocabulary mapping service (Task 6) |  | 2007-04-24 A |  | 80% → 100% | 109d → none |  |
| 100 | Initial design document caAdapter Web Services (Task 7) |  | 2007-04-24 A |  | 80% → 100% | 109d → none |  |
| 101 | Initial design document forHL7 v3 to csv transformation service enhancement (Task 9) |  | 2007-04-24 A |  | 80% → 100% | 7.4d → none |  |
| 102 | Deliverable: Initial Design Doc |  | 2007-04-25 A |  | 80% → 100% | 6.6d → none |  |
| 103 | Design Review | 2007-04-26 A | 2007-05-02 A |  | 0% → 100% | 6.6d → none |  |
| 104 | Design enhancement | 2007-05-03 A | 2007-05-09 A |  | 0% → 100% | 6.6d → none |  |
| 105 | Deliverable: Design Doc | 2007-05-10 A | 2007-05-10 A |  | 0% → 100% | 6.6d → none |  |
| 106 | **QA Draft Test Plan and Test Cases** | 2007-05-11 A |  |  | 0% → 90% | 65d → 69d |  |
| 107 | Draft Test Plan and Test Cases | 2007-05-11 A |  |  | 0% → 90% | 65d → 80.3d |  |
| 108 | Deliverable: Initial System Test Plan | 2007-06-01 A |  |  | 0% → 90% | 65d → 79.4d |  |
| 109 | Test Plan and Test Cases Enhancement | 2007-06-04 A |  |  | 0% → 90% | 65d → 65.9d |  |
| 110 | Deliverable: System Test Plan | 2007-06-25 A |  |  | 0% → 90% |  |  |
| 111 | **Construction** | 2007-05-11 A | 2007-07-17 A |  | 0% → 100% | 6.6d → none |  |
| 112 | **csv/database to SDTM transformation service enhancement (Task 1) development** | 2007-05-11 A | 2007-07-05 A |  | 0% → 100% | 6.6d → none |  |
| 113 | Database/CTOM object model to SDTM mapping (task 1(a)) | 2007-05-11 A | 2007-05-24 A |  | 0% → 100% | 6.6d → none |  |
| 114 | Query Builder (task 1(a)) | 2007-05-25 A | 2007-06-07 A |  | 0% → 100% | 6.6d → none |  |
| 115 | SDTM API (task 1( c )) | 2007-06-08 A | 2007-06-21 A |  | 0% → 100% | 6.6d → none |  |
| 116 | SDTM web services (task 1(d)) | 2007-06-22 A | 2007-07-05 A |  | 0% → 100% | 6.6d → none |  |
| 117 | **csv to HL7 v3 transformation service enhancement (Task 2) development** | 2007-05-11 A | 2007-07-05 A |  | 0% → 100% | 14d → none |  |
| 118 | HL7 v3 Datatype parser (task 2(a)) | 2007-05-11 A | 2007-05-24 A |  | 0% → 100% | 14d → none |  |
| 119 | HL7 v3 Mif parser (task 2(a)) | 2007-05-25 A | 2007-06-07 A |  | 0% → 100% | 14d → none |  |
| 120 | csv to HL7 v3 transformation service enhancement (task 2(a)) | 2007-06-08 A | 2007-06-21 A |  | 0% → 100% | 14d → none |  |
| 121 | csv to HL7 v3 UI enhancement | 2007-06-22 A | 2007-07-05 A |  | 0% → 100% | 14d → none |  |
| 122 | **HL7 v2 to HL7 v3 transformation service enhancement (Task 3) development** | 2007-05-11 A | 2007-06-21 A |  | 0% → 100% | 14d → none |  |
| 123 | HL7 v2 H2S Meta data parser | 2007-05-11 A | 2007-05-24 A |  | 0% → 100% | 14d → none |  |
| 124 | HL7 v2 H2S to HL7 v3 transformer | 2007-05-25 A | 2007-06-07 A |  | 0% → 100% | 14d → none |  |
| 125 | HL7 v2 H2S Mapping Interface | 2007-06-08 A | 2007-06-21 A |  | 0% → 100% | 14d → none |  |
| 126 | vocabulary mapping service (Task 6) development | 2007-06-22 A | 2007-07-05 A |  | 0% → 100% | 14d → none |  |
| 127 | **HL7 v3 to csv transformation service enhancement (Task 9) development** | 2007-05-11 A | 2007-07-05 A |  | 0% → 100% | 14d → none |  |
| 128 | HL7 v3 message parser | 2007-05-11 A | 2007-05-29 A |  | 0% → 100% | 14d → none |  |
| 129 | HL7 v3 message to csv transformer | 2007-05-30 A | 2007-06-15 A |  | 0% → 100% | 14d → none |  |
| 130 | HL7 v3 to csv tranformation report | 2007-06-18 A | 2007-07-05 A |  | 0% → 100% | 14d → none |  |
| 131 | caAdapter product packaging and intial installation testing | 2007-07-06 A | 2007-07-10 A |  | 0% → 100% | 6.6d → none |  |
| 132 | caAdapter Internal integration Testing | 2007-07-10 A | 2007-07-17 A |  | 0% → 100% | 6.6d → none |  |
| 133 | Cross-Product Scope Complete | 2007-06-01 A | 2007-06-01 A |  | 0% → 100% | 38d → none |  |
| 134 | Cross-Product Scope Design Reviews Complete/Approved | 2007-06-25 A | 2007-06-25 A |  | 0% → 100% | 22d → none |  |
| 135 | Cross-Product Scope Freeze | 2007-07-16 A | 2007-07-16 A |  | 0% → 100% | 7d → none |  |
| 136 | **Transition** | 2007-07-09 A | 2007-09-18 → 2007-09-21 (+3d) | 52d? → 54.6d | 0% → 78% | 0d → 5.4d |  |
| 137 | **Deploy To QA Server - Integration Testing, Test, and Resolve Defects** | 2007-07-09 A | 2007-08-06 A |  | 0% → 100% | 0d → none |  |
| 138 | Deploy to QA server for integration testing | 2007-07-17 A | 2007-07-18 A |  | 0% → 100% | 6.6d → none |  |
| 139 | Execute csv/database to SDTM transformation service enhancement (Task 1) test cases | 2007-07-18 A | 2007-07-27 A |  | 0% → 100% | 6.6d → none |  |
| 140 | Execute csv to HL7 v3 transformation service enhancement (Task 2) test cases | 2007-07-18 A | 2007-07-27 A |  | 0% → 100% | 6.6d → none |  |
| 141 | Execute HL7 v2 to HL7 v3 transformation service enhancement (Task 3) test cases | 2007-07-18 A | 2007-07-27 A |  | 0% → 100% | 6.6d → none |  |
| 142 | Execute vocabulary mapping service (Task 6) test cases | 2007-07-18 A | 2007-07-27 A |  | 0% → 100% | 6.6d → none |  |
| 143 | Execute caAdapter Web Services (Task 7) test cases | 2007-07-18 A | 2007-07-27 A |  | 0% → 100% | 6.6d → none |  |
| 144 | Execute HL7 v3 to csv transformation service enhancement (Task 9) test cases | 2007-07-18 A | 2007-07-27 A |  | 0% → 100% | 6.6d → none |  |
| 145 | **model mapping service enhancement (Task 4) development** | 2007-07-09 A | 2007-07-27 A |  | 0% → 100% | 0d → none |  |
| 146 | Intellegent mapping (task 4 -c) | 2007-07-09 A | 2007-07-13 A |  | 0% → 100% | 0d → none |  |
| 147 | Java Web Start | 2007-07-16 A | 2007-07-23 A |  | 0% → 100% | 0d → none |  |
| 148 | Execute model mapping service enhancement (Task 4) test cases | 2007-07-24 A | 2007-07-27 A |  | 0% → 100% | 0d → none |  |
| 149 | Execute all test cases | 2007-07-30 A | 2007-08-06 A |  | 0% → 100% | 0d → none |  |
| 150 | **QA Testingr- System testing, Test, and Resolve Defects** | 2007-08-07 A | 2007-08-27 → 2007-09-21 (+25d) | 15d? → 33.6d | 0% → 67% | 0d → 5.4d | was named Deploy To QA Server- System testing, Test, and Resolve Defects |
| 151 | Deploy to QA server for System testing | 2007-08-07 A | 2007-08-07 A |  | 0% → 100% | 0d → none |  |
| 152 | Execute csv/database to SDTM transformation service enhancement (Task 1) test cases | 2007-08-08 A | 2007-08-16 → 2007-08-28 (+12d) | 7d → 15d | 0% → 70% | 7d → 23d |  |
| 153 | Execute csv to HL7 v3 transformation service enhancement (Task 2) test cases | 2007-08-08 A | 2007-08-16 → 2007-08-28 (+12d) | 7d → 15d | 0% → 70% | 7d → 23d |  |

| ID | Task | Start | Finish | Duration | Complete | Total float | Predecessors | Other |
| --- | --- | --- | --- | --- | --- | --- | --- | --- |
| 154 | Execute model mapping service enhancement (Task 4) test cases | 2007-08-08 A | 2007-08-16 → 2007-08-28 (+12d) | 7d → 15d | 0% → 70% | 7d → 23d |  |  |
| 155 | Execute HL7 v2 to HL7 v3 transformation service enhancement (Task 3) test cases | 2007-08-08 A | 2007-08-16 → 2007-08-28 (+12d) | 7d → 15d | 0% → 70% | 7d → 23d |  |  |
| 156 | Execute vocabulary mapping service (Task 6) test cases | 2007-08-08 A | 2007-08-16 → 2007-08-28 (+12d) | 7d → 15d | 0% → 70% | 7d → 23d |  |  |
| 157 | Execute caAdapter Web Services (Task 7) test cases | 2007-08-08 A | 2007-08-16 → 2007-08-28 (+12d) | 7d → 15d | 0% → 70% | 7d → 23d |  |  |
| 158 | Execute HL7 v3 to csv transformation service enhancement (Task 9) test cases | 2007-08-08 A | 2007-08-16 → 2007-08-28 (+12d) | 7d → 15d | 0% → 70% | 0d → 12.5d |  |  |
| 159 | Execute all test cases | 2007-08-17 A | 2007-08-24 → 2007-09-04 (+11d) | 6d → 10d | 0% → 75% | 0d → 10.4d |  |  |
| 161 | Deliverable: QA Test Results | 2007-08-27 → 2007-09-20 (+24d) | 2007-08-27 → 2007-09-21 (+25d) |  |  | 0d → 5.4d | 159 → 160 |  |
| 162 | **Documentation** | 2007-08-28 → 2007-09-03 (+6d) | 2007-09-19 → 2007-09-26 (+7d) | 17d → 18d |  |  |  |  |
| 163 | Update Requirements | 2007-08-28 → 2007-09-17 (+20d) | 2007-09-10 → 2007-09-17 (+7d) | 10d → 1d |  | 4d → 7d | 150 → 166 |  |
| 164 | Deliverable: Requirements | 2007-09-11 → 2007-09-17 (+6d) | 2007-09-11 → 2007-09-17 (+6d) |  |  | 4d → 7d | 163 → 166 |  |
| 165 | Update Users Guide | 2007-08-28 → 2007-09-03 (+6d) | 2007-09-10 → 2007-09-14 (+4d) |  |  | 4d → 8d | 150 → none | constraint none → finish no earlier than 2007-09-14 |
| 166 | Deliverable: Users Guide | 2007-09-11 → 2007-09-14 (+3d) | 2007-09-11 → 2007-09-14 (+3d) |  |  | 4d → 0d | 165 → none | constraint start no earlier than 2005-04-08 → start no earlier than 2007-09-14 |
| 167 | Update Design Document | 2007-08-28 → 2007-09-17 (+20d) | 2007-09-10 → 2007-09-17 (+7d) | 10d → 1d |  | 4d → 7d | 150 → 166 |  |
| 168 | Deliverable: Design Document | 2007-09-11 → 2007-09-17 (+6d) | 2007-09-11 → 2007-09-17 (+6d) |  |  | 4d → 7d | 167 → 166 |  |
| 169 | Update Installation Guide | 2007-08-28 → 2007-09-17 (+20d) | 2007-09-10 → 2007-09-18 (+8d) | 10d → 2d |  | 0d → 6d | 150 → 166 |  |
| 170 | Deliverable: Installation Guide | 2007-09-11 → 2007-09-17 (+6d) | 2007-09-11 → 2007-09-17 (+6d) |  |  | 0d → 3d | 169 → 166 |  |
| 171 | Update Readme | 2007-09-12 → 2007-09-18 (+6d) | 2007-09-12 → 2007-09-18 (+6d) |  |  | 8d → 6d | 166 → 170 |  |
| 172 | Update Release Note | 2007-09-12 → 2007-09-18 (+6d) | 2007-09-12 → 2007-09-18 (+6d) |  |  | 0d → 6d |  |  |
| 173 | Update Press Release | 2007-09-13 → 2007-09-18 (+5d) | 2007-09-13 → 2007-09-18 (+5d) |  |  | 0d → 3d | 172 → 170 |  |
| 174 | Update the Website content | 2007-09-14 → 2007-09-19 (+5d) | 2007-09-14 → 2007-09-21 (+7d) | 1d → 3d |  | 0d → 3d |  |  |
| 179 | Deploy to Production | 2007-09-20 → 2007-09-28 (+8d) | 2007-09-21 → 2007-09-28 (+7d) | 2d → 1d |  |  | Support User Acceptance Test, Deploy to Staging Server, Test, and Resolve Defects, Deliverable: Packaged Iteration → 178 |  |
| 180 | Deliverable: Production System | 2007-09-24 → 2007-09-28 (+4d) | 2007-09-24 → 2007-09-28 (+4d) |  |  |  | 179 → 178 |  |

## Version 4 (saved 2007-10-02)

Note of the change: Updated 02-OCT-07

Last finish 2007-09-28 → 2007-10-04 (+6d).

Added:

| ID | Task | Duration | Start | Finish | Constraint | Resources |
| --- | --- | --- | --- | --- | --- | --- |
| 181 | Retest the 9/28 cut of the system to determine the new timeline for release. | 4d? | 2007-10-01 | 2007-10-04 | finish no earlier than 2007-10-04 | Eugene; Charles |

Changed:

| ID | Task | Start | Finish | Duration | Complete | Total float |
| --- | --- | --- | --- | --- | --- | --- |
| 77 | **caAdapter V4.0 tasks** |  | 2007-09-28 → 2007-10-04 (+6d) | 167d? → 171d? | 88% → 93% |  |
| 78 | **Iteration 1 - caAdapter mapping tool set (w/o MMS)** |  |  |  | 88% → 93% | 0d → 4d |
| 136 | **Transition** |  |  |  | 78% → 84% | 5.4d → 9.4d |
| 150 | **QA Testingr- System testing, Test, and Resolve Defects** |  |  |  | 67% → 75% | 5.4d → 9.4d |
| 152 | Execute csv/database to SDTM transformation service enhancement (Task 1) test cases |  |  |  | 70% → 80% |  |
| 153 | Execute csv to HL7 v3 transformation service enhancement (Task 2) test cases |  |  |  | 70% → 80% |  |
| 154 | Execute model mapping service enhancement (Task 4) test cases |  |  |  | 70% → 80% |  |
| 155 | Execute HL7 v2 to HL7 v3 transformation service enhancement (Task 3) test cases |  |  |  | 70% → 80% |  |
| 156 | Execute vocabulary mapping service (Task 6) test cases |  |  |  | 70% → 80% |  |
| 157 | Execute caAdapter Web Services (Task 7) test cases |  |  |  | 70% → 80% |  |
| 158 | Execute HL7 v3 to csv transformation service enhancement (Task 9) test cases |  |  |  | 70% → 80% |  |
| 162 | **Documentation** | 2007-09-03 A |  |  | 0% → 82% | 0d → 4d |
| 163 | Update Requirements | 2007-09-17 A |  |  | 0% → 90% | 7d → 11d |
| 164 | Deliverable: Requirements | 2007-09-17 A |  |  | 0% → 90% | 7d → 11d |
| 165 | Update Users Guide | 2007-09-03 A |  |  | 0% → 90% | 8d → 12d |
| 166 | Deliverable: Users Guide | 2007-09-14 A |  |  | 0% → 90% | 0d → 10.4d |
| 167 | Update Design Document | 2007-09-17 A |  |  | 0% → 90% | 7d → 11d |
| 168 | Deliverable: Design Document | 2007-09-17 A |  |  | 0% → 90% | 7d → 11d |
| 169 | Update Installation Guide | 2007-09-17 A |  |  | 0% → 90% | 6d → 10d |
| 170 | Deliverable: Installation Guide | 2007-09-17 A |  |  | 0% → 90% | 3d → 10d |
| 173 | Update Press Release | 2007-09-18 A |  |  | 0% → 90% | 3d → 9.7d |
| 174 | Update the Website content | 2007-09-19 A |  |  | 0% → 90% | 3d → 7d |
| 175 | First Draft Revision and Help system generation | 2007-09-17 A |  |  | 0% → 80% | 0d → 6.4d |
| 176 | Dev Team Revision - 2nd Round | 2007-09-24 A |  |  | 0% → 80% | 0d → 4.8d |
| 177 | Final Draft Ready | 2007-09-26 A |  |  | 0% → 80% | 0d → 4d |
