# HL7_SDK_plan_3_23

How a schedule from MS Project changed from version to version. A marks actual dates.

## Version 1 (saved 2007-10-18, file caAdapter Project Plan V3.3-V4.0.mpp)

Note of the change: 18-OCT-07 Update

| ID | WBS | Task | Duration | Start | Finish | Predecessors | Complete | Total float | Constraint |
| --- | --- | --- | --- | --- | --- | --- | --- | --- | --- |
| 1 | 1 | **Perform Project Management Activities** | 17d | 2007-01-16 A | 2007-02-07 |  | 31% | 182d |  |
| 2 |  | Draft Scope Document | 5d | 2007-01-16 | 2007-01-22 |  |  | 170d | start no earlier than 2007-01-16 |
| 3 |  | Deliverable: Scope Document | 1d | 2007-01-23 | 2007-01-23 | 2 |  | 170d | start no earlier than 2005-06-14 |
| 4 |  | Draft Initial Project Plan | 5d | 2007-01-24 | 2007-01-30 | 3 |  | 172d |  |
| 5 |  | Deliverable: Project Plan | 1d | 2007-01-31 | 2007-01-31 | 4 |  | 172d |  |
| 6 |  | Review Scope Document | 1d | 2007-01-24 | 2007-01-24 | 3 |  | 170d |  |
| 7 |  | Draft System Requirment Document | 5d | 2007-01-25 | 2007-01-31 | 6 |  | 170d |  |
| 8 |  | Deliverable: System Requirment Document | 1d | 2007-02-01 | 2007-02-01 | 7 |  | 170d |  |
| 9 |  | Revise and submit project plan to Gforge | 1d | 2007-02-02 | 2007-02-02 | 8 |  | 170d |  |
| 10 | 1.9 | **caBIG Annual Meeting** | 17d | 2007-01-16 A | 2007-02-07 A |  | 100% |  |  |
| 11 |  | Poster | 2d | 2007-01-16 A | 2007-01-17 A |  | 100% |  | start no earlier than 2007-01-16 |
| 12 |  | Tech Demo | 2d | 2007-01-18 A | 2007-01-19 A | 11 | 100% |  | start no earlier than 2007-01-16 |
| 13 |  | Hack-a-Thon | 2d | 2007-01-22 A | 2007-01-23 A | 12 | 100% |  | start no earlier than 2007-01-16 |
| 14 |  | caBIG annual meeting | 3d | 2007-02-05 A | 2007-02-07 A | 13 | 100% |  | start no earlier than 2007-01-16 |
| 15 | 2 | **caAdapter V3.2.0.1 tasks** | 59d | 2007-02-08 A | 2007-05-01 A |  | 100% |  |  |
| 16 | 2.1 | **Inception** | 19d | 2007-02-08 A | 2007-03-06 A |  | 100% |  |  |
| 17 |  | Requirement gathering and analysis | 10d | 2007-02-08 A | 2007-02-21 A |  | 100% |  | start no earlier than 2007-02-08 |
| 18 |  | Draft use cases for model mapping service enhancement (Task 4) | 8d | 2007-02-22 A | 2007-03-05 A | 17 | 100% |  | start no earlier than 2007-02-22 |
| 19 |  | Deliverable: Use Cases | 1d | 2007-03-06 A | 2007-03-06 A | 18 | 100% |  | finish no earlier than 2006-07-04 |
| 20 | 2.2 | **Elaboration** | 17d | 2007-03-07 A | 2007-03-29 A |  | 100% |  |  |
| 21 |  | Draft design document for model mapping service enhancement (Task 4) | 5d | 2007-03-07 A | 2007-03-13 A | 16 | 100% |  | start no earlier than 2007-02-27 |
| 22 |  | Deliverable: Design Doc | 1d | 2007-03-14 A | 2007-03-14 A | 21 | 100% |  |  |
| 23 |  | Draft Test Plan and Test Cases | 10d | 2007-03-15 A | 2007-03-28 A | 22 | 100% |  |  |
| 24 |  | Deliverable: System Test Plan | 1d | 2007-03-29 A | 2007-03-29 A | 23 | 100% |  |  |
| 25 | 2.3 | **model mapping service enhancement (Task 4) development** | 16d | 2007-03-15 A | 2007-04-05 A |  | 100% |  |  |
| 26 |  | Retrieval of tag values from .xmi files (task 4(d)) | 10d | 2007-03-15 A | 2007-03-28 A | 22 | 100% |  |  |
| 27 |  | UI enhancement for MMS (task 4(d)) | 3d | 2007-03-29 A | 2007-04-02 A | 26 | 100% |  |  |
| 28 |  | System integration testing (task 4(d)) | 3d | 2007-04-03 A | 2007-04-05 A | 27 | 100% |  |  |
| 29 | 2.4 | **Transition** | 6d | 2007-04-06 A | 2007-04-13 A |  | 100% |  |  |
| 30 |  | QA System testing - Model Mapping Service | 3d | 2007-04-06 A | 2007-04-10 A | 25 | 100% |  |  |
| 31 |  | Staging System testing | 3d | 2007-04-11 A | 2007-04-13 A | 30 | 100% |  |  |
| 32 | 2.5 | **Documentation** | 12d | 2007-04-16 A | 2007-05-01 A |  | 100% |  |  |
| 33 |  | Update Requirements | 1d | 2007-04-16 A | 2007-04-16 A | 31 | 100% |  |  |
| 34 |  | Deliverable: Requirements | 1d | 2007-04-17 A | 2007-04-17 A | 33 | 100% |  | start no earlier than 2005-04-08 |
| 35 |  | Update Users Guide | 2d | 2007-04-18 A | 2007-04-19 A | 34 | 100% |  |  |
| 36 |  | Deliverable: Users Guide | 1d | 2007-04-20 A | 2007-04-20 A | 35 | 100% |  | start no earlier than 2005-04-08 |
| 37 |  | Update Design Document | 1d | 2007-04-23 A | 2007-04-23 A | 36 | 100% |  |  |
| 38 |  | Deliverable: Design Document | 1d | 2007-04-24 A | 2007-04-24 A | 37 | 100% |  | start no earlier than 2005-04-08 |
| 39 |  | Update Installation Guide | 1d | 2007-04-25 A | 2007-04-25 A | 38 | 100% |  |  |
| 40 |  | Deliverable: Installation Guide | 1d | 2007-04-26 A | 2007-04-26 A | 39 | 100% |  | start no earlier than 2005-04-08 |
| 41 |  | Update Readme, Release Note, Website, Help | 1d | 2007-04-27 A | 2007-04-27 A | 40 | 100% |  | start no earlier than 2005-12-19 |
| 42 |  | Prepare final download package | 1d | 2007-04-30 A | 2007-04-30 A |  | 100% |  |  |
| 43 |  | Deliverable: Packaged Iteration | 1d | 2007-05-01 A | 2007-05-01 A | 42 | 100% |  |  |
| 44 | 3 | **caAdapter V3.2.0.2 tasks** | 48d | 2007-05-02 | 2007-07-06 |  |  | 75d |  |
| 45 | 3.1 | **Inception** | 11d | 2007-05-02 | 2007-05-16 |  |  | 75d |  |
| 46 |  | Requirement gathering and analysis | 5d | 2007-05-02 | 2007-05-08 | 15 |  | 60d | start no earlier than 2007-02-08 |
| 47 |  | Draft use cases for model mapping service enhancement (Task 4) | 5d | 2007-05-09 | 2007-05-15 | 46 |  | 60d | start no earlier than 2007-02-22 |
| 48 |  | Deliverable: Use Cases | 1d | 2007-05-16 | 2007-05-16 | 47 |  | 60d | finish no earlier than 2006-07-04 |
| 49 | 3.2 | **Elaboration** | 23d | 2007-05-17 | 2007-06-18 |  |  | 75d |  |
| 50 |  | Draft design document for model mapping service enhancement (Task 4) | 10d | 2007-05-17 | 2007-05-30 | 45 |  | 60d | start no earlier than 2007-02-27 |
| 51 |  | Deliverable: Design Doc | 1d | 2007-05-31 | 2007-05-31 | 50 |  | 60d |  |
| 52 |  | Draft Test Plan and Test Cases | 10d | 2007-06-01 | 2007-06-14 | 51 |  | 75d |  |
| 53 |  | Deliverable: System Test Plan | 1d | 2007-06-15 | 2007-06-15 | 52 |  | 75d |  |
| 54 | 3.2.5 | **model mapping service enhancement (Task 4) development** | 12d | 2007-06-01 | 2007-06-18 |  |  | 75d |  |
| 55 |  | XML meta loader (task 4(f)) | 3d | 2007-06-01 | 2007-06-05 | 51 |  | 60d |  |
| 56 |  | Object to Object mapping (task 4(f)) | 7d | 2007-06-06 | 2007-06-14 | 55 |  | 60d |  |
| 57 |  | System integration testing (task 4(d)) | 2d | 2007-06-15 | 2007-06-18 | 56 |  | 60d |  |
| 58 | 3.3 | **Transition** | 5d | 2007-06-19 | 2007-06-25 |  |  | 75d |  |
| 59 |  | QA System testing - Model Mapping Service | 3d | 2007-06-19 | 2007-06-21 | 54 |  | 60d |  |
| 60 |  | Staging System testing | 2d | 2007-06-22 | 2007-06-25 | 59 |  | 60d |  |
| 61 | 3.4 | **Documentation** | 9d | 2007-06-26 | 2007-07-06 |  |  | 75d |  |
| 62 |  | Update Requirements | 0.5d | 2007-06-26 | 2007-06-26 | 60 |  | 60d |  |
| 63 |  | Deliverable: Requirements | 0.5d | 2007-06-26 | 2007-06-26 | 62 |  | 60d | start no earlier than 2005-04-08 |
| 64 |  | Update Users Guide | 2d | 2007-06-27 | 2007-06-28 | 63 |  | 60d |  |
| 65 |  | Deliverable: Users Guide | 0.5d | 2007-06-29 | 2007-06-29 | 64 |  | 60d | start no earlier than 2005-04-08 |
| 66 |  | Update Design Document | 0.5d | 2007-06-29 | 2007-06-29 | 65 |  | 60d |  |
| 67 |  | Deliverable: Design Document | 0.5d | 2007-07-02 | 2007-07-02 | 66 |  | 60d | start no earlier than 2005-04-08 |
| 68 |  | Update Installation Guide | 0.5d | 2007-07-02 | 2007-07-02 | 67 |  | 60d |  |
| 69 |  | Deliverable: Installation Guide | 0.5d | 2007-07-03 | 2007-07-03 | 68 |  | 60d | start no earlier than 2005-04-08 |
| 70 |  | Update Readme | 0.5d | 2007-07-03 | 2007-07-03 | 69 |  | 60d | start no earlier than 2005-12-19 |

| ID | WBS | Task | Duration | Start | Finish | Predecessors | Complete | Total float | Constraint |
| --- | --- | --- | --- | --- | --- | --- | --- | --- | --- |
| 71 |  | Update Release Note | 0.5d | 2007-07-04 | 2007-07-04 | 70 |  | 60d | start no earlier than 2005-12-19 |
| 72 |  | Update Press Release | 0.5d | 2007-07-04 | 2007-07-04 | 71 |  | 60d | start no earlier than 2005-12-19 |
| 73 |  | Update the Website content | 0.5d | 2007-07-05 | 2007-07-05 | 72 |  | 60d |  |
| 74 |  | Update Mapping Tool Help System Text | 0.5d | 2007-07-05 | 2007-07-05 | 73 |  | 60d |  |
| 75 |  | Prepare final download package | 0.5d | 2007-07-06 | 2007-07-06 | 74 |  | 60d |  |
| 76 |  | Deliverable: Packaged Iteration | 0.5d | 2007-07-06 | 2007-07-06 | 75 |  | 60d |  |
| 77 | 4 | **caAdapter V4.0 tasks** | 182d? | 2007-02-08 A | 2007-10-19 |  | 91% | 0d |  |
| 78 | 4.1 | **Iteration 1 - caAdapter mapping tool set (w/o MMS)** | 167d? | 2007-02-08 A | 2007-09-28 |  | 93% | 15d |  |
| 79 | 4.1.1 | **caAdapter code base enhancement (Task 8)** | 8d | 2007-02-08 A | 2007-02-19 A |  | 100% |  |  |
| 80 |  | caAdapter code base enhancement analysis | 1d | 2007-02-08 A | 2007-02-08 A |  | 100% |  | start no earlier than 2007-02-08 |
| 81 |  | caAdapter code base enhancement design | 1d | 2007-02-09 A | 2007-02-09 A | 80 | 100% |  | start no earlier than 2007-01-16 |
| 82 |  | caAdapter code base enhancement review | 1d | 2007-02-12 A | 2007-02-12 A | 81 | 100% |  | start no earlier than 2007-01-16 |
| 83 | 4.1.1.4 | **caAdapter code base enhancement implementation** | 5d | 2007-02-13 A | 2007-02-19 A |  | 100% |  |  |
| 84 |  | caAdapter code base enhancement UI implementation | 2d | 2007-02-13 A | 2007-02-14 A | 82 | 100% |  | start no earlier than 2007-01-16 |
| 85 |  | caAdapter code base enhancement - service layer implementation | 3d | 2007-02-15 A | 2007-02-19 A | 84 | 100% |  | start no earlier than 2007-01-16 |
| 86 | 4.1.2 | **Inception** | 31d | 2007-02-20 A | 2007-04-03 A |  | 100% |  |  |
| 87 |  | Requirement gathering and analysis | 15d | 2007-02-20 A | 2007-03-12 A | 85 | 100% |  | start no earlier than 2007-02-08 |
| 88 |  | Draft use cases for csv/database to SDTM transformation service enhancement (Task 1) | 15d | 2007-03-13 A | 2007-04-02 A | 87 | 100% |  | start no earlier than 2007-02-22 |
| 89 |  | Draft use cases for csv to HL7 v3 transformation service enhancement (Task 2) | 15d | 2007-03-13 A | 2007-04-02 A | 87 | 100% |  | start no earlier than 2007-02-22 |
| 90 |  | Draft use cases for HL7 v2 to HL7 v3 transformation service enhancement (Task 3) | 15d | 2007-03-13 A | 2007-04-02 A | 87 | 100% |  | start no earlier than 2007-02-22 |
| 91 |  | Draft use cases for vocabulary mapping service (Task 6) | 15d | 2007-03-13 A | 2007-04-02 A | 87 | 100% |  | start no earlier than 2007-02-22 |
| 92 |  | Draft use cases caAdapter Web Services (Task 7) | 15d | 2007-03-13 A | 2007-04-02 A | 87 | 100% |  | start no earlier than 2007-02-22 |
| 93 |  | Draft use cases forHL7 v3 to csv transformation service enhancement (Task 9) | 15d | 2007-03-13 A | 2007-04-02 A | 87 | 100% |  | start no earlier than 2007-02-22 |
| 94 |  | Deliverable: Use Cases | 1d | 2007-04-03 A | 2007-04-03 A | 93 | 100% |  | finish no earlier than 2006-07-04 |
| 95 | 4.1.3 | **Elaboration** | 27d | 2007-04-04 A | 2007-05-10 A |  | 100% |  |  |
| 96 |  | Initial design document for csv/database to SDTM transformation service enhancement (Task 1) | 15d | 2007-04-04 A | 2007-04-24 A | 94 | 100% |  | start no earlier than 2007-02-27 |
| 97 |  | Initial design document for csv to HL7 v3 transformation service enhancement (Task 2) | 15d | 2007-04-04 A | 2007-04-24 A | 94 | 100% |  | start no earlier than 2007-02-27 |
| 98 |  | Initial design document for HL7 v2 to HL7 v3 transformation service enhancement (Task 3) | 15d | 2007-04-04 A | 2007-04-24 A | 94 | 100% |  | start no earlier than 2007-02-27 |
| 99 |  | Initial design document for vocabulary mapping service (Task 6) | 15d | 2007-04-04 A | 2007-04-24 A | 94 | 100% |  | start no earlier than 2007-02-27 |
| 100 |  | Initial design document caAdapter Web Services (Task 7) | 15d | 2007-04-04 A | 2007-04-24 A | 94 | 100% |  | start no earlier than 2007-03-19 |
| 101 |  | Initial design document forHL7 v3 to csv transformation service enhancement (Task 9) | 15d | 2007-04-04 A | 2007-04-24 A | 94 | 100% |  | start no earlier than 2007-03-19 |
| 102 |  | Deliverable: Initial Design Doc | 1d | 2007-04-25 A | 2007-04-25 A | 101 | 100% |  |  |
| 103 |  | Design Review | 5d | 2007-04-26 A | 2007-05-02 A | 102 | 100% |  |  |
| 104 |  | Design enhancement | 5d | 2007-05-03 A | 2007-05-09 A | 103 | 100% |  |  |
| 105 |  | Deliverable: Design Doc | 1d | 2007-05-10 A | 2007-05-10 A | 104 | 100% |  |  |
| 106 | 4.1.4 | **QA Draft Test Plan and Test Cases** | 32d | 2007-05-11 A | 2007-06-25 |  | 90% | 84d |  |
| 107 |  | Draft Test Plan and Test Cases | 15d | 2007-05-11 A | 2007-05-31 | 105 | 90% | 84.3d |  |
| 108 |  | Deliverable: Initial System Test Plan | 1d | 2007-06-01 A | 2007-06-01 | 107 | 90% | 83.4d |  |
| 109 |  | Test Plan and Test Cases Enhancement | 15d | 2007-06-04 A | 2007-06-22 | 108 | 90% | 69.9d |  |
| 110 |  | Deliverable: System Test Plan | 1d | 2007-06-25 A | 2007-06-25 | 109 | 90% | 69d |  |
| 111 | 4.1.5 | **Construction** | 47.4d? | 2007-05-11 A | 2007-07-17 A |  | 100% |  |  |
| 112 | 4.1.5.1 | **csv/database to SDTM transformation service enhancement (Task 1) development** | 40d | 2007-05-11 A | 2007-07-05 A |  | 100% |  |  |
| 113 |  | Database/CTOM object model to SDTM mapping (task 1(a)) | 10d | 2007-05-11 A | 2007-05-24 A | 105 | 100% |  |  |
| 114 |  | Query Builder (task 1(a)) | 10d | 2007-05-25 A | 2007-06-07 A | 113 | 100% |  |  |
| 115 |  | SDTM API (task 1( c )) | 10d | 2007-06-08 A | 2007-06-21 A | 114 | 100% |  |  |
| 116 |  | SDTM web services (task 1(d)) | 10d | 2007-06-22 A | 2007-07-05 A | 115 | 100% |  |  |
| 117 | 4.1.5.2 | **csv to HL7 v3 transformation service enhancement (Task 2) development** | 40d | 2007-05-11 A | 2007-07-05 A |  | 100% |  |  |
| 118 |  | HL7 v3 Datatype parser (task 2(a)) | 10d | 2007-05-11 A | 2007-05-24 A | 105 | 100% |  |  |
| 119 |  | HL7 v3 Mif parser (task 2(a)) | 10d | 2007-05-25 A | 2007-06-07 A | 118 | 100% |  |  |
| 120 |  | csv to HL7 v3 transformation service enhancement (task 2(a)) | 10d | 2007-06-08 A | 2007-06-21 A | 119 | 100% |  |  |
| 121 |  | csv to HL7 v3 UI enhancement | 10d | 2007-06-22 A | 2007-07-05 A | 120 | 100% |  |  |
| 122 | 4.1.5.3 | **HL7 v2 to HL7 v3 transformation service enhancement (Task 3) development** | 30d | 2007-05-11 A | 2007-06-21 A |  | 100% |  |  |
| 123 |  | HL7 v2 H2S Meta data parser | 10d | 2007-05-11 A | 2007-05-24 A | 105 | 100% |  | start no earlier than 2007-02-27 |
| 124 |  | HL7 v2 H2S to HL7 v3 transformer | 10d | 2007-05-25 A | 2007-06-07 A | 123 | 100% |  | start no earlier than 2007-02-27 |
| 125 |  | HL7 v2 H2S Mapping Interface | 10d | 2007-06-08 A | 2007-06-21 A | 124 | 100% |  | start no earlier than 2007-02-27 |
| 126 |  | vocabulary mapping service (Task 6) development | 10d | 2007-06-22 A | 2007-07-05 A | 125 | 100% |  | start no earlier than 2007-02-27 |
| 127 | 4.1.5.5 | **HL7 v3 to csv transformation service enhancement (Task 9) development** | 40d | 2007-05-11 A | 2007-07-05 A |  | 100% |  |  |
| 128 |  | HL7 v3 message parser | 13d | 2007-05-11 A | 2007-05-29 A | 105 | 100% |  |  |
| 129 |  | HL7 v3 message to csv transformer | 13d | 2007-05-30 A | 2007-06-15 A | 128 | 100% |  |  |
| 130 |  | HL7 v3 to csv tranformation report | 14d | 2007-06-18 A | 2007-07-05 A | 129 | 100% |  |  |
| 131 |  | caAdapter product packaging and intial installation testing | 2.4d | 2007-07-06 A | 2007-07-10 A | 112 | 100% |  |  |
| 132 |  | caAdapter Internal integration Testing | 5d | 2007-07-10 A | 2007-07-17 A | 131 | 100% |  |  |
| 133 |  | Cross-Product Scope Complete | 1d? | 2007-06-01 A | 2007-06-01 A |  | 100% |  | start no earlier than 2007-06-01 |
| 134 |  | Cross-Product Scope Design Reviews Complete/Approved | 1d? | 2007-06-25 A | 2007-06-25 A |  | 100% |  | start no earlier than 2007-06-25 |
| 135 |  | Cross-Product Scope Freeze | 1d? | 2007-07-16 A | 2007-07-16 A |  | 100% |  | start no earlier than 2007-07-16 |
| 136 | 2.1.5 | **Transition** | 54.6d | 2007-07-09 A | 2007-09-21 |  | 84% | 20.4d |  |
| 137 | 2.1.5.1 | **Deploy To QA Server - Integration Testing, Test, and Resolve Defects** | 21d | 2007-07-09 A | 2007-08-06 A |  | 100% |  |  |
| 138 |  | Deploy to QA server for integration testing | 1d | 2007-07-17 A | 2007-07-18 A | 111 | 100% |  |  |
| 139 |  | Execute csv/database to SDTM transformation service enhancement (Task 1) test cases | 7d | 2007-07-18 A | 2007-07-27 A | 138 | 100% |  | start no earlier than 2007-02-27 |
| 140 |  | Execute csv to HL7 v3 transformation service enhancement (Task 2) test cases | 7d | 2007-07-18 A | 2007-07-27 A | 138 | 100% |  | start no earlier than 2007-02-27 |

| ID | WBS | Task | Duration | Start | Finish | Predecessors | Complete | Total float | Constraint |
| --- | --- | --- | --- | --- | --- | --- | --- | --- | --- |
| 141 |  | Execute HL7 v2 to HL7 v3 transformation service enhancement (Task 3) test cases | 7d | 2007-07-18 A | 2007-07-27 A | 138 | 100% |  | start no earlier than 2007-02-27 |
| 142 |  | Execute vocabulary mapping service (Task 6) test cases | 7d | 2007-07-18 A | 2007-07-27 A | 138 | 100% |  |  |
| 143 |  | Execute caAdapter Web Services (Task 7) test cases | 7d | 2007-07-18 A | 2007-07-27 A | 138 | 100% |  | start no earlier than 2007-02-27 |
| 144 |  | Execute HL7 v3 to csv transformation service enhancement (Task 9) test cases | 7d | 2007-07-18 A | 2007-07-27 A | 138 | 100% |  | start no earlier than 2007-02-27 |
| 145 | 4.1.6.1.8 | **model mapping service enhancement (Task 4) development** | 15d | 2007-07-09 A | 2007-07-27 A |  | 100% |  |  |
| 146 |  | Intellegent mapping (task 4 -c) | 5d | 2007-07-09 A | 2007-07-13 A | 44 | 100% |  |  |
| 147 |  | Java Web Start | 6d | 2007-07-16 A | 2007-07-23 A | 146 | 100% |  |  |
| 148 |  | Execute model mapping service enhancement (Task 4) test cases | 4d | 2007-07-24 A | 2007-07-27 A | 147 | 100% |  | start no earlier than 2007-02-27 |
| 149 |  | Execute all test cases | 6d | 2007-07-30 A | 2007-08-06 A | 145 | 100% |  |  |
| 150 | 2.1.5.1 | **QA Testingr- System testing, Test, and Resolve Defects** | 33.6d | 2007-08-07 A | 2007-09-21 |  | 75% | 20.4d |  |
| 151 |  | Deploy to QA server for System testing | 1d | 2007-08-07 A | 2007-08-07 A | 137 | 100% |  |  |
| 152 |  | Execute csv/database to SDTM transformation service enhancement (Task 1) test cases | 15d | 2007-08-08 A | 2007-08-28 | 151 | 80% | 23d | start no earlier than 2007-02-27 |
| 153 |  | Execute csv to HL7 v3 transformation service enhancement (Task 2) test cases | 15d | 2007-08-08 A | 2007-08-28 | 151 | 80% | 23d | start no earlier than 2007-02-27 |
| 154 |  | Execute model mapping service enhancement (Task 4) test cases | 15d | 2007-08-08 A | 2007-08-28 | 151 | 80% | 23d |  |
| 155 |  | Execute HL7 v2 to HL7 v3 transformation service enhancement (Task 3) test cases | 15d | 2007-08-08 A | 2007-08-28 | 151 | 80% | 23d | start no earlier than 2007-02-27 |
| 156 |  | Execute vocabulary mapping service (Task 6) test cases | 15d | 2007-08-08 A | 2007-08-28 | 151 | 80% | 23d | start no earlier than 2007-02-27 |
| 157 |  | Execute caAdapter Web Services (Task 7) test cases | 15d | 2007-08-08 A | 2007-08-28 | 151 | 80% | 23d | start no earlier than 2007-02-27 |
| 158 |  | Execute HL7 v3 to csv transformation service enhancement (Task 9) test cases | 15d | 2007-08-08 A | 2007-08-28 | 151 | 80% | 12.5d | start no earlier than 2007-02-27 |
| 159 |  | Execute all test cases | 10d | 2007-08-17 A | 2007-09-04 | 158 | 75% | 10.4d |  |
| 160 |  | Regression testing for bug fixes | 10d | 2007-09-04 A | 2007-09-20 | 159 | 30% | 5.4d |  |
| 161 |  | Deliverable: QA Test Results | 1d | 2007-09-20 | 2007-09-21 | 160 |  | 5.4d | start no earlier than 2005-04-08 |
| 162 | 4.1.7 | **Documentation** | 18d | 2007-09-03 A | 2007-09-26 |  | 82% | 15d |  |
| 163 |  | Update Requirements | 1d | 2007-09-17 A | 2007-09-17 | 166 | 90% | 11d |  |
| 164 |  | Deliverable: Requirements | 1d | 2007-09-17 A | 2007-09-17 | 166 | 90% | 11d | start no earlier than 2005-04-08 |
| 165 |  | Update Users Guide | 10d | 2007-09-03 A | 2007-09-14 |  | 90% | 12d | finish no earlier than 2007-09-14 |
| 166 |  | Deliverable: Users Guide | 1d | 2007-09-14 A | 2007-09-14 |  | 90% | 10.4d | start no earlier than 2007-09-14 |
| 167 |  | Update Design Document | 1d | 2007-09-17 A | 2007-09-17 | 166 | 90% | 11d |  |
| 168 |  | Deliverable: Design Document | 1d | 2007-09-17 A | 2007-09-17 | 166 | 90% | 11d | start no earlier than 2005-04-08 |
| 169 |  | Update Installation Guide | 2d | 2007-09-17 A | 2007-09-18 | 166 | 90% | 10d |  |
| 170 |  | Deliverable: Installation Guide | 1d | 2007-09-17 A | 2007-09-17 | 166 | 90% | 10d | start no earlier than 2005-04-08 |
| 171 |  | Update Readme | 1d | 2007-09-18 | 2007-09-18 | 170 |  | 10d | start no earlier than 2005-12-19 |
| 172 |  | Update Release Note | 1d | 2007-09-18 | 2007-09-18 | 170 |  | 10d | start no earlier than 2005-12-19 |
| 173 |  | Update Press Release | 1d | 2007-09-18 A | 2007-09-18 | 170 | 90% | 9.7d | start no earlier than 2005-12-19 |
| 174 |  | Update the Website content | 3d | 2007-09-19 A | 2007-09-21 | 173 | 90% | 7d |  |
| 175 |  | First Draft Revision and Help system generation | 5d | 2007-09-17 A | 2007-09-21 | 166 | 80% | 6.4d |  |
| 176 |  | Dev Team Revision - 2nd Round | 2d | 2007-09-24 A | 2007-09-25 | 175 | 80% | 4.8d |  |
| 177 |  | Final Draft Ready | 1d | 2007-09-26 A | 2007-09-26 | 176 | 80% | 4d |  |
| 178 |  | Deploy to Staging | 1d? | 2007-09-27 | 2007-09-27 | 162 |  | 4d |  |
| 179 |  | Deploy to Production | 1d | 2007-09-28 | 2007-09-28 | 178 |  | 4d |  |
| 180 |  | Deliverable: Production System | 1d | 2007-09-28 | 2007-09-28 | 178 |  | 4d | start no earlier than 2005-04-08 |
| 181 |  | Retest the application determine the new timeline for release. | 15d? | 2007-10-01 | 2007-10-19 |  |  | 0d | finish no earlier than 2007-10-19 |

## Version 2 (saved 2007-10-30, file caAdapter Project Plan V3.3-V4.0.mpp)

Note of the change: 30-OCT-07 updates

Last finish 2007-10-19 → 2007-11-14 (+26d). Complete tasks 82 → 89.

Added:

| ID | Task | Duration | Start | Finish | Predecessors | Constraint | Resources |
| --- | --- | --- | --- | --- | --- | --- | --- |
| 159 | **Fix Bugs** | 47d? | 2007-08-29 | 2007-11-01 | 158 |  | Nick; Eugene; Harsha |
| 160 | Phase I (Misc Bugs) | 30d? | 2007-08-29 | 2007-10-09 |  |  | Eugene; Nick; Harsha |
| 161 | Phase II (HL7 specific, UI, GForge, Memory) | 18d? | 2007-10-09 | 2007-11-01 |  | start no earlier than 2007-10-09 | Eugene; Nick; Harsha |
| 162 | Review and update Website | 6d? | 2007-10-25 | 2007-11-01 |  | start no earlier than 2007-10-25 | Charles |

Removed: 159 Execute all test cases; 181 Retest the application determine the new timeline for release.

Changed:

| ID | Task | Start | Finish | Duration | Complete | Total float | Predecessors | Other |
| --- | --- | --- | --- | --- | --- | --- | --- | --- |
| 77 | **caAdapter V4.0 tasks** |  | 2007-10-19 → 2007-11-14 (+26d) | 182d? → 200d? | 91% → 90% |  |  |  |
| 78 | **Iteration 1 - caAdapter mapping tool set (w/o MMS)** |  | 2007-09-28 → 2007-11-14 (+47d) | 167d? → 200d? | 93% → 90% | 15d → 0d |  |  |
| 136 | **Transition** |  | 2007-09-21 → 2007-11-08 (+48d) | 54.6d → 89d? | 84% → 75% | 20.4d → 4d |  |  |
| 150 | **QA Testing- System testing, Test, and Resolve Defects** |  | 2007-09-21 → 2007-11-08 (+48d) | 33.6d → 68d? | 75% → 65% | 20.4d → 4d |  | was named QA Testingr- System testing, Test, and Resolve Defects |
| 152 | Execute csv/database to SDTM transformation service enhancement (Task 1) test cases |  | 2007-08-28 A |  | 80% → 100% | 23d → none |  |  |
| 153 | Execute csv to HL7 v3 transformation service enhancement (Task 2) test cases |  | 2007-08-28 A |  | 80% → 100% | 23d → none |  |  |
| 154 | Execute model mapping service enhancement (Task 4) test cases |  | 2007-08-28 A |  | 80% → 100% | 23d → none |  |  |
| 155 | Execute HL7 v2 to HL7 v3 transformation service enhancement (Task 3) test cases |  | 2007-08-28 A |  | 80% → 100% | 23d → none |  |  |
| 156 | Execute vocabulary mapping service (Task 6) test cases |  | 2007-08-28 A |  | 80% → 100% | 23d → none |  |  |
| 157 | Execute caAdapter Web Services (Task 7) test cases |  | 2007-08-28 A |  | 80% → 100% | 23d → none |  |  |
| 158 | Execute HL7 v3 to csv transformation service enhancement (Task 9) test cases |  | 2007-08-28 A |  | 80% → 100% | 12.5d → none |  |  |
| 163 | Regression testing for bug fixes | 2007-09-04 A → 2007-11-05 (+62d) | 2007-09-20 → 2007-11-07 (+48d) | 10d → 3d | 30% → 0% | 5.4d → 3d | Execute all test cases → 160, 161, 162 | constraint none → finish no earlier than 2007-11-07; resources Harsha; Ki-Sung; Wendy; Ye; Eugene → Ki-Sung; Eugene; QA; Charles; Nick |
| 164 | Deliverable: QA Test Results | 2007-09-20 → 2007-11-08 (+49d) | 2007-09-21 → 2007-11-08 (+48d) |  |  | 5.4d → 4d |  |  |
| 177 | Update the Website content |  |  |  |  | 7d → 36d |  | resources Harsha; Ki-Sung; Wendy; Ye; Eugene → Harsha; Ki-Sung; Ye; Eugene; Charles |
| 181 | Deploy to Staging | 2007-09-27 → 2007-11-09 (+43d) | 2007-09-27 → 2007-11-09 (+43d) | 1d? → 1d |  | 4d → 2d | 165 → 165, 163 | constraint none → start no earlier than 2007-11-09; resources none → System; Eugene |
| 182 | Deploy to Production | 2007-09-28 → 2007-11-14 (+47d) | 2007-09-28 → 2007-11-14 (+47d) |  |  | 4d → 0d |  | constraint none → finish no earlier than 2007-11-14; resources Harsha; Ki-Sung; Wendy; Ye; Eugene → Eugene; System |
| 183 | Deliverable: Production System | 2007-09-28 → 2007-11-14 (+47d) | 2007-09-28 → 2007-11-14 (+47d) |  |  | 4d → 0d |  | constraint start no earlier than 2005-04-08 → start no earlier than 2007-11-14 |

## Version 3 (saved 2007-11-07, file caAdapter Project Plan V3.3-V4.0.mpp)

Note of the change: minor edits and formats prior to release

Last finish stays 2007-11-14. Complete tasks 89 → 91.

Changed:

| ID | Task | Start | Finish | Complete | Total float |
| --- | --- | --- | --- | --- | --- |
| 77 | **caAdapter V4.0 tasks** |  |  | 90% → 98% |  |
| 78 | **Iteration 1 - caAdapter mapping tool set (w/o MMS)** |  |  | 90% → 98% |  |
| 136 | **Transition** |  |  | 75% → 98% |  |
| 150 | **QA Testing- System testing, Test, and Resolve Defects** |  |  | 65% → 98% |  |
| 159 | **Fix Bugs** | 2007-08-29 A |  | 0% → 96% | 4d → 6d |
| 160 | Phase I (Misc Bugs) | 2007-08-29 A | 2007-10-09 A | 0% → 100% | 21d → none |
| 161 | Phase II (HL7 specific, UI, GForge, Memory) | 2007-10-09 A | 2007-11-01 A | 0% → 100% | 4d → none |
| 162 | Review and update Website | 2007-10-25 A |  | 0% → 67% | 4d → 6d |
| 163 | Regression testing for bug fixes | 2007-11-05 A |  | 0% → 67% |  |

## Version 4 (saved 2007-11-20, file caAdapter Project Plan V3.3-V4.0.mpp)

Note of the change: *** empty log message ***

Last finish 2007-11-14 → 2007-11-27 (+13d). Complete tasks 91 → 94.

Changed:

| ID | Task | Start | Finish | Duration | Complete | Total float | Other |
| --- | --- | --- | --- | --- | --- | --- | --- |
| 77 | **caAdapter V4.0 tasks** |  | 2007-11-14 → 2007-11-27 (+13d) | 200d? → 209d? |  |  |  |
| 78 | **Iteration 1 - caAdapter mapping tool set (w/o MMS)** |  | 2007-11-14 → 2007-11-27 (+13d) | 200d? → 209d? |  |  |  |
| 136 | **Transition** |  |  |  | 98% → 99% | 4d → 13d |  |
| 150 | **QA Testing- System testing, Test, and Resolve Defects** |  |  |  | 98% → 99% | 4d → 13d |  |
| 159 | **Fix Bugs** |  | 2007-11-01 A |  | 96% → 100% | 6d → none |  |
| 162 | Review and update Website |  | 2007-11-01 A |  | 67% → 100% | 6d → none |  |
| 181 | Deploy to Staging | 2007-11-09 A | 2007-11-09 A |  | 0% → 100% | 2d → none |  |
| 182 | Deploy to Production | 2007-11-14 A | 2007-11-14 A |  | 0% → 100% | 0d → none |  |
| 183 | Deliverable: Production System | 2007-11-14 → 2007-11-27 (+13d) | 2007-11-14 → 2007-11-27 (+13d) |  |  |  | constraint start no earlier than 2007-11-14 → start no earlier than 2007-11-27 |

## Version 5 (saved 2007-11-29, file caAdapter Project Plan V3.3-V4.0.mpp)

Note of the change: *** empty log message ***

Last finish 2007-11-27 → 2008-01-16 (+50d).

Added:

| ID | Task | Duration | Start | Finish | Predecessors | Constraint | Resources |
| --- | --- | --- | --- | --- | --- | --- | --- |
| 185 | **caAdapter - CSV-to-XMI Module Prototype Tasks** | 36d? | 2007-11-28 | 2008-01-16 |  |  |  |
| 186 | **1st Iteration** | 36d? | 2007-11-28 | 2008-01-16 |  |  |  |
| 187 | Internal project kickoff | 1d? | 2007-11-28 | 2007-11-28 |  | start no earlier than 2007-11-28 | CY; EW; NS |
| 188 | Development Week 1 | 5d | 2007-11-28 | 2007-12-04 |  | start no earlier than 2007-11-28 | EW; NS |
| 189 | Deliverable - Internal: Ability to load a CSV and an XMI (DB) structures in the mapping tool | 0.5d? | 2007-12-05 | 2007-12-05 | 188 |  | EW; CY |
| 190 | Development Week 2 | 5d | 2007-12-05 | 2007-12-12 | 189 |  | EW/NS |
| 191 | Deliverable - Prototype Completed | 0.5d? | 2007-12-12 | 2007-12-12 | 190 |  | EW; CY |
| 192 | Review with caTREN Team | 1d? | 2007-12-14 | 2007-12-14 |  | start no earlier than 2007-12-14 | Team |
| 193 | Update prototype | 5d | 2007-12-17 | 2007-12-21 | 192 |  | NS; EW |
| 194 | Deliverable - 1st Iteration of module (v 4.0 - CSV-to-XMI 0.1) delivered to QA | 0.5d? | 2008-01-03 | 2008-01-03 |  | start no earlier than 2008-01-03 | EW; CY |
| 195 | Support QA Test | 4d | 2008-01-03 | 2008-01-08 |  | start no earlier than 2008-01-03 | NS; EW |
| 196 | Support Staging and Production Deployments | 5d | 2008-01-10 | 2008-01-16 |  | start no earlier than 2008-01-10 | NS; EW |
| 197 | Deliverable - 1st Iteration of module (v4.0 - CSV-to-XMI 0.1) is in production | 0.5d? | 2008-01-16 | 2008-01-16 |  | start no earlier than 2008-01-16 | EW; CY |
| 198 | **2nd Iteration** | 1d? | 2008-01-16 | 2008-01-16 |  |  |  |
| 199 | TBD | 1d? | 2008-01-16 | 2008-01-16 |  | start no earlier than 2008-01-16 |  |

## Version 6 (saved 2007-11-30, file caAdapter Project Plan V3.3-V4.0.mpp)

Note of the change: *** empty log message ***

Last finish stays 2008-01-16.

Changed:

| ID | Task | Other |
| --- | --- | --- |
| 185 | **caAdapter - TDMS Prototype Tasks** | was named caAdapter - CSV-to-XMI Module Prototype Tasks |
| 194 | Deliverable - 1st Iteration of module (v 4.0 - TDMS 0.1) delivered to QA | was named Deliverable - 1st Iteration of module (v 4.0 - CSV-to-XMI 0.1) delivered to QA |
| 197 | Deliverable - 1st Iteration of module (v4.0 - TDMS 0.1) is in production | was named Deliverable - 1st Iteration of module (v4.0 - CSV-to-XMI 0.1) is in production |

## Version 7 (saved 2008-01-04, file caAdapter Project Plan 20071205.mpp)

Note of the change: *** empty log message ***

Last finish 2008-01-16 → 2008-03-21 (+65d).

Added:

| ID | Task | Duration | Start | Finish | Predecessors | Constraint |
| --- | --- | --- | --- | --- | --- | --- |
| 199 | **Inception** | 15d? | 2008-01-07 | 2008-01-25 |  |  |
| 201 | Develop Desing Document | 6d | 2008-01-14 | 2008-01-21 | 200 | start no earlier than 2008-01-14 |
| 202 | Design Review | 3d | 2008-01-22 | 2008-01-24 | 201 | start no earlier than 2008-01-22 |
| 203 | Deliverable - Use Case Document | 1d? | 2008-01-25 | 2008-01-25 | 202 | start no earlier than 2008-01-25 |
| 204 | Deliverable - Desing Document | 1d | 2008-01-25 | 2008-01-25 | 203FF | start no earlier than 2008-01-25 |
| 205 | **QA Test Plan and Test Cases** | 274d | 2007-01-16 | 2008-02-01 |  |  |
| 206 | Draft Test Plan /Test Cases | 5d | 2008-01-28 | 2008-02-01 |  | start no earlier than 2008-01-28 |
| 207 | Deliverable: Draft Test Plan | 1d | 2008-02-01 | 2008-02-01 | 206FF | start no earlier than 2008-01-25 |
| 208 | Enhance Test Plan and Test Cases | 10d | 2007-01-16 | 2007-01-29 |  |  |
| 209 | Deliverable - Final Test Plan | 1d | 2007-01-30 | 2007-01-30 | 208 |  |
| 210 | **Construction** | 25d | 2008-01-28 | 2008-02-29 |  |  |
| 211 | 1st Constuction Phase | 5d | 2008-01-28 | 2008-02-01 |  | start no earlier than 2008-01-28 |
| 212 | Deliverable - Internal Checkpoint 1 | 1d | 2008-02-01 | 2008-02-01 | 211FF | start no earlier than 2008-02-01 |
| 213 | 2nd Construction Phase | 10d | 2008-02-04 | 2008-02-15 | 212 | start no earlier than 2008-02-04 |
| 214 | Deliverable - Internal Checkpoint 2 | 1d | 2008-02-15 | 2008-02-15 | 213FF | start no earlier than 2008-02-15 |
| 215 | 3rd Construction Phase | 6d | 2008-02-18 | 2008-02-25 | 214 | start no earlier than 2008-02-18 |
| 216 | Internal Testing | 3d | 2008-02-26 | 2008-02-28 | 215 | start no earlier than 2008-02-26 |
| 217 | Deliverable - 2nd Iteration Comleted | 1d | 2008-02-29 | 2008-02-29 | 216 | start no earlier than 2008-02-29 |
| 218 | **Transition** | 15d | 2008-03-03 | 2008-03-21 |  |  |
| 219 | **Deploy To QA Server- System testing** | 5d | 2008-03-03 | 2008-03-07 |  |  |
| 220 | Deploy to QA server for System testing | 2d | 2008-03-03 | 2008-03-04 |  | start no earlier than 2008-03-03 |
| 221 | Execute all test cases | 2d | 2008-03-05 | 2008-03-06 | 220 | start no earlier than 2008-03-05 |
| 222 | Deliverable: QA Test Results | 1d | 2008-03-07 | 2008-03-07 | 221 | start no earlier than 2008-03-07 |
| 223 | **Deploy to Staging Server** | 5d | 2008-03-10 | 2008-03-14 |  |  |
| 224 | Deploy to Staging server | 2d | 2008-03-10 | 2008-03-11 | 222 | start no earlier than 2008-03-10 |
| 225 | Execute all test cases | 3d | 2008-03-12 | 2008-03-14 | 224 |  |
| 226 | **Support User Acceptance Test** | 5d | 2008-03-17 | 2008-03-21 |  |  |
| 227 | UAT Testing | 4d | 2008-03-17 | 2008-03-20 | 225 | start no earlier than 2008-03-17 |
| 228 | Deliverable: UAT Test Results | 1d | 2008-03-21 | 2008-03-21 | 227 | start no earlier than 2008-03-20 |
| 229 | **Documentation** | 10d? | 2008-03-10 | 2008-03-21 |  |  |
| 230 | Update the Use Case Document | 3d | 2008-03-10 | 2008-03-12 |  | start no earlier than 2008-03-10 |
| 231 | Update Design Document | 3d | 2008-03-13 | 2008-03-17 |  | start no earlier than 2008-03-13 |
| 232 | Develop the Users Guid Section for the TDMS Module | 3d | 2008-03-18 | 2008-03-20 |  | start no earlier than 2008-03-18 |
| 233 | Deliverable - Use Case, Design, and Users Guide Documents | 1d? | 2008-03-21 | 2008-03-21 |  | start no earlier than 2008-03-21 |
| 234 | Deliverable - 2nd Iteration TDMS Production Module | 1d? | 2008-03-21 | 2008-03-21 | 228FF | finish no earlier than 2008-03-21 |

Changed:

| ID | Task | Start | Finish | Duration | Total float | Predecessors | Other |
| --- | --- | --- | --- | --- | --- | --- | --- |
| 185 | **caAdapter - TDMS Module Tasks** | 2007-11-28 → 2007-01-16 (-316d) | 2008-01-16 → 2008-03-21 (+65d) | 36d? → 309d? |  |  | was named caAdapter - TDMS Prototype Tasks |
| 196 | Support Staging and Production Deployments |  |  |  | 0d → 47d | none → 195 |  |
| 197 | Deliverable - 1st Iteration of module (v4.0 - TDMS 0.1) is in production |  |  | 0.5d? → 1d | 0.5d → 47d | none → 196FF |  |
| 198 | **2nd Iteration** | 2008-01-16 → 2007-01-16 (-365d) | 2008-01-16 → 2008-03-21 (+65d) | 1d? → 309d? |  |  |  |
| 200 | Develop Use Cases Document | 2008-01-16 → 2008-01-07 (-9d) | 2008-01-16 → 2008-01-11 (-5d) | 1d? → 5d | 0d → 40d |  | was named TBD; constraint start no earlier than 2008-01-16 → start no earlier than 2008-01-07 |

## Version 8 (saved 2008-01-22, file caAdapter Project Plan 20071205.mpp)

Note of the change: *** empty log message ***

Last finish 2008-03-21 → 2008-12-12 (+266d).

Added:

| ID | Task | Duration | Start | Finish | Predecessors | Constraint | Resources |
| --- | --- | --- | --- | --- | --- | --- | --- |
| 236 | **caAdapter - GME Module Tasks** | 109d? | 2008-01-15 | 2008-06-13 |  |  |  |
| 237 | **1st Iteration** | 39d? | 2008-01-15 | 2008-03-07 |  |  |  |
| 238 | Internal - resumption of activities - kickoff | 1d? | 2008-01-15 | 2008-01-15 |  | finish no earlier than 2008-01-15 | Team |
| 239 | Finalize Use Case document | 1d? | 2008-01-15 | 2008-01-15 |  | start no earlier than 2008-01-15 | CY |
| 240 | Develop design Document | 4d? | 2008-01-23 | 2008-01-28 | 239 | start no earlier than 2008-01-23 | EW |
| 241 | Deliverable - Design Document | 1d? | 2008-01-28 | 2008-01-28 | 240FF | start no earlier than 2008-01-28 |  |
| 242 | Research xsd parsers - reuse vs build | 4d? | 2008-01-15 | 2008-01-18 |  | start no earlier than 2008-01-15 | EW |
| 243 | Finalize decision on xsd parser | 1d? | 2008-01-25 | 2008-01-25 | 242 | start no earlier than 2008-01-25 | Team |
| 244 | Development Week 1 | 5d? | 2008-01-28 | 2008-02-01 | 243 |  | EW; NS |
| 245 | Deliverable - Internal: Ability to load an xsd and an xmi files in the mapping tool | 1d? | 2008-02-01 | 2008-02-01 | 244FF | start no earlier than 2008-02-01 |  |
| 246 | Development Weeks 2 & 3 | 10d | 2008-02-04 | 2008-02-15 | 245 | finish no earlier than 2008-02-15 | EW; NS |
| 247 | Deliverable - Meet w/GME team. Show ability to map from XSD to XMI elements | 1d? | 2008-02-15 | 2008-02-15 | 246FF | start no earlier than 2008-02-15 |  |
| 248 | Development and Testing Weeks 4 & 5 | 10d | 2008-02-18 | 2008-02-29 | 247 |  | EW; NS |
| 249 | Develop Users Guide | 5d | 2008-02-18 | 2008-02-22 |  | start no earlier than 2008-02-18 | CY |
| 250 | Deliverable - System Delivered to Q/A | 1d | 2008-02-29 | 2008-02-29 | 248FF, 249 | start no earlier than 2008-02-29 |  |
| 251 | Support QA Test | 5d | 2008-03-03 | 2008-03-07 | 250 | finish no earlier than 2008-03-07 | EW; NS |
| 252 | Deliverable - System ready for Integration Testing with GME team | 1d? | 2008-03-07 | 2008-03-07 | 251FF | start no earlier than 2008-03-07 |  |
| 253 | **2nd Iteration** | 70d? | 2008-03-10 | 2008-06-13 |  |  |  |
| 254 | Tasks are TBD | 70d? | 2008-03-10 | 2008-06-13 |  | start no earlier than 2008-03-10 |  |
| 256 | **caAdapter - MMS Module Enhancements** | 103d? | 2007-11-28 | 2008-04-18 |  |  |  |
| 257 | Tasks TBD | 103d? | 2007-11-28 | 2008-04-18 |  | start no earlier than 2007-11-28 |  |
| 259 | **caAdapter - UCUM SDK Development** | 195d? | 2008-03-17 | 2008-12-12 |  |  |  |
| 260 | 1st Iteration | 65d? | 2008-03-17 | 2008-06-13 |  | start no earlier than 2008-03-17 |  |
| 261 | 2nd Iteration | 55d? | 2008-06-02 | 2008-08-15 |  | start no earlier than 2008-06-02 |  |
| 262 | 3rd Iteration | 95d? | 2008-08-04 | 2008-12-12 |  | start no earlier than 2008-08-04 |  |
| 264 | **caAdapter - RDS Module Enhancements** | 90d? | 2008-04-14 | 2008-08-15 |  |  |  |
| 265 | Tasks TBD | 90d? | 2008-04-14 | 2008-08-15 |  | start no earlier than 2008-04-14 |  |
| 267 | **caAdapter - HL7 v3 Map. / Transform. Enhancements** | 110d? | 2008-06-16 | 2008-11-14 |  |  |  |
| 268 | Tasks TBD | 110d? | 2008-06-16 | 2008-11-14 |  | start no earlier than 2008-06-15 |  |
| 270 | **caAdapter - HL7 v3 eDCI Message Implementation** | 155d? | 2008-05-12 | 2008-12-12 |  |  |  |
| 271 | Tasks TBD | 155d? | 2008-05-12 | 2008-12-12 |  | start no earlier than 2008-05-12 |  |

Changed:

| ID | Task | Total float | Other |
| --- | --- | --- | --- |
| 7 | Draft System Requirement Document | 212d → 355d | was named Draft System Requirment Document |
| 8 | Deliverable: System Requirement Document | 212d → 355d | was named Deliverable: System Requirment Document |
| 118 | HL7 v3 Data type parser (task 2(a)) |  | was named HL7 v3 Datatype parser (task 2(a)) |
| 119 | HL7 v3 MIF parser (task 2(a)) |  | was named HL7 v3 Mif parser (task 2(a)) |
| 130 | HL7 v3 to csv transformation report |  | was named HL7 v3 to csv tranformation report |
| 131 | caAdapter product packaging and initial installation testing |  | was named caAdapter product packaging and intial installation testing |
| 146 | Intelligent mapping (task 4 -c) |  | was named Intellegent mapping (task 4 -c) |
| 192 | Review with caTREND Team | 18d → 255d | was named Review with caTREN Team |
| 201 | Develop Design Document | 40d → 230d | was named Develop Desing Document |
| 204 | Deliverable - Design Document | 40d → 230d | was named Deliverable - Desing Document |
| 211 | 1st Construction Phase | 35d → 205d | was named 1st Constuction Phase |
| 217 | Deliverable - 2nd Iteration Completed | 20d → 205d | was named Deliverable - 2nd Iteration Comleted |
| 232 | Develop the Users Guide Section for the TDMS Module | 1d → 191d | was named Develop the Users Guid Section for the TDMS Module |
